Schedule from MS Project, 2006-12-18 to 2007-05-21, status date 2007-01-04, costs in ￥, A marks actual dates.

## Calendars

- 标准: Mon-Fri 08:00-12:00, 13:00-17:00; Sat-Sun off. Exceptions (off unless hours are given): 2006-12-30 to 2006-12-31 08:00-12:00, 13:00-17:00, 2007-01-01 to 2007-01-03, 2007-02-16, 2007-02-19 to 2007-02-23, 2007-02-25 08:00-12:00, 13:00-17:00.

## Resources

| Resource | Group | Rate | Cost per use |
| --- | --- | --- | --- |
| 韩海东 | 开发主管 | 1.5 | 1.5 |
| 韩纪伟 | 高级程序员 | 1 | 1 |
| 汤成 | 系统分析员 | 1.5 | 1.5 |
| 何林青 | 高级程序员 | 1 | 1 |
| 奚嘉敏 | 界面工程师 | 0.7 | 0.7 |
| 滕斌 | 测试员 | 0.7 | 0.7 |
| 李翔 | 程序员 | 0.7 | 0.7 |
| 待定 | 高级程序员 | 1 | 1 |
| 文档管理员 |  | 0.7 | 0.7 |

## Schedule

| ID | WBS | Task | Duration | Start | Finish | Predecessors | Complete | Remaining | Baseline start | Baseline finish | Baseline duration | Total slack | Free slack | Resources | Work | Actual work | Cost | Baseline cost | Actual cost |
| --- | --- | --- | --- | --- | --- | --- | --- | --- | --- | --- | --- | --- | --- | --- | --- | --- | --- | --- | --- |
| 1 | 1 | **一卡通产品开发计划** | 104.53d? | 2006-12-18 A | 2007-05-21 |  |  | 104.37d? | 2006-12-18 | 2007-05-09 | 102.99d? | 0d |  |  | 5726.57h | 3h | 6,259.4 | 6,016.6 | 6 |
| 2 | 1.1 | **项目管理活动** | 101.49d? | 2006-12-18 A | 2007-05-16 |  | 1% | 100.11d? | 2007-01-31 | 2007-05-09 | 70.96d? | 2.92d |  |  | 583h | 3h | 824.8 | 824.2 | 6 |
| 3 | 1.1.1 | 工作计划维护 | 19.38d? | 2007-01-04 A | 2007-03-14 |  | 5% | 18.38d? | 2007-01-31 | 2007-03-07 | 18.75d? | 48.46d |  | 韩海东 | 150h | 3h | 226.5 | 226.5 | 6 |
| 4 | 1.1.2 | 周客户项目例会 | 7.5d | 2007-04-24 | 2007-05-03 |  |  |  | 2007-04-12 | 2007-04-23 | 7.5d | 11.67d |  | 韩海东 | 60h |  | 91.5 | 91.5 |  |
| 5 | 1.1.3 | 周项目组内部例会 | 1.25d | 2007-05-15 | 2007-05-16 |  |  |  | 2007-05-08 | 2007-05-09 | 1.25d | 2.92d |  | 韩海东 | 10h |  | 16.5 | 16.5 |  |
| 6 | 1.1.4 | 月度述职报告会 | 3.5d | 2006-12-18 | 2006-12-21 |  |  |  | 2007-05-03 | 2007-05-08 | 3.5d | 100.9d |  | 韩海东 [140%] | 28h |  | 44.1 | 43.5 |  |
| 7 | 1.1.5 | 工作周报 | 7.5d | 2007-05-03 | 2007-05-15 |  |  |  | 2007-04-23 | 2007-05-03 | 7.5d | 4.17d |  | 韩海东 | 60h |  | 91.5 | 91.5 |  |
| 8 | 1.1.6 | 工作协调 | 25d? | 2007-03-16 | 2007-04-24 |  |  |  | 2007-03-07 | 2007-04-12 | 25d? | 19.17d |  | 韩海东 | 200h |  | 301.5 | 301.5 |  |
| 9 | 1.1.7 | 配置管理 | 9.38d? | 2007-03-23 | 2007-04-05 |  |  |  | 2007-03-15 | 2007-03-28 | 9.38d? | 31.93d |  | 文档管理员 | 75h |  | 53.2 | 53.2 |  |
| 10 | 1.2 | **项目开发活动** | 104.53d? | 2006-12-18 | 2007-05-21 |  |  |  | 2006-12-18 | 2007-05-09 | 102.03d? | 0d |  |  | 4665.57h |  | 5,065 | 4,818.6 |  |
| 11 | 1.2.1 | **产品配套的完善** | 63.1d? | 2006-12-18 | 2007-03-23 |  |  |  | 2006-12-18 | 2007-03-15 | 63.1d? | 41.31d |  |  | 424h |  | 303.1 | 303.1 |  |
| 12 | 1.2.1.1 | **完善产品开发流程** | 13d? | 2007-03-06 | 2007-03-23 |  |  |  | 2007-02-26 | 2007-03-15 | 13d? | 41.31d |  |  | 104h |  | 76.3 | 76.3 |  |
| 13 | 1.2.1.1.1 | 版本定义和发布流程 | 2d? | 2007-03-13 | 2007-03-15 |  |  |  | 2007-03-05 | 2007-03-07 | 2d? | 47.31d |  | 文档管理员 | 16h |  | 11.9 | 11.9 |  |
| 14 | 1.2.1.1.2 | 产品的需求跟踪方法和流程-客户化、产品需求 | 2d? | 2007-03-15 | 2007-03-19 |  |  |  | 2007-03-07 | 2007-03-09 | 2d? | 45.31d |  | 文档管理员 | 16h |  | 11.9 | 11.9 |  |
| 15 | 1.2.1.1.3 | 定义changelog规范和流程 | 2d? | 2007-03-19 | 2007-03-21 |  |  |  | 2007-03-09 | 2007-03-13 | 2d? | 43.31d |  | 文档管理员 | 16h |  | 11.9 | 11.9 |  |
| 16 | 1.2.1.1.4 | 制定系统上线检查表-checklist | 5d? | 2007-03-06 | 2007-03-13 |  |  |  | 2007-02-26 | 2007-03-05 | 5d? | 49.31d |  | 文档管理员 | 40h |  | 28.7 | 28.7 |  |
| 17 | 1.2.1.1.5 | 制定设备签收维修变更的流程 | 2d? | 2007-03-21 | 2007-03-23 |  |  |  | 2007-03-13 | 2007-03-15 | 2d? | 41.31d |  | 文档管理员 | 16h |  | 11.9 | 11.9 |  |
| 18 | 1.2.1.2 | **完善产品配套文档** | 50.1d? | 2006-12-18 | 2007-03-06 |  |  |  | 2006-12-18 | 2007-02-26 | 50.1d? | 54.31d |  |  | 320h |  | 226.8 | 226.8 |  |
| 19 | 1.2.1.2.1 | 完善产品使用手册 | 10d? | 2006-12-18 | 2006-12-30 |  |  |  | 2006-12-18 | 2007-01-01 | 10d? | 94.4d |  | 文档管理员 | 80h |  | 56.7 | 56.7 |  |
| 20 | 1.2.1.2.2 | 完善产品安装维护手册 | 10d? | 2007-01-10 | 2007-01-24 |  |  |  | 2007-01-09 | 2007-01-23 | 10d? | 77.97d |  | 文档管理员 | 80h |  | 56.7 | 56.7 |  |
| 21 | 1.2.1.2.3 | 完善各种产品开发文档 | 10d? | 2007-01-30 | 2007-02-13 |  |  |  | 2007-01-29 | 2007-02-12 | 10d? | 64.31d |  | 文档管理员 | 80h |  | 56.7 | 56.7 |  |
| 22 | 1.2.1.2.4 | 完善各种产品实施文档 | 10d? | 2007-02-13 | 2007-03-06 |  |  |  | 2007-02-12 | 2007-02-26 | 10d? | 54.31d |  | 文档管理员 | 80h |  | 56.7 | 56.7 |  |
| 23 | 1.2.2 | **新系统对接** | 91.93d? | 2006-12-31 | 2007-05-18 |  |  |  | 2007-01-02 | 2007-05-04 | 87.6d? | 1d |  |  | 600h |  | 657.9 | 657.9 |  |
| 24 | 1.2.2.1 | **13、水控管理系统对接** | 91.93d? | 2006-12-31 | 2007-05-18 |  |  |  | 2007-01-02 | 2007-05-04 | 87.6d? | 1d |  |  | 136h |  | 164.4 | 164.4 |  |
| 25 | 1.2.2.1.1 | **三九水控的对接** | 91.93d? | 2006-12-31 | 2007-05-18 |  |  |  | 2007-01-02 | 2007-04-17 | 74.93d? | 1d |  |  | 96h |  | 102.9 | 102.9 |  |
| 26 | 1.2.2.1.1.1 | **脱机模式的对接** | 47.26d? | 2006-12-31 | 2007-03-16 |  |  |  | 2007-01-02 | 2007-03-08 | 47.26d? | 1d | 0d |  | 56h |  | 47.1 | 47.1 |  |
| 27 | 1.2.2.1.1.1.1 | 写卡动态库的修改 | 2d? | 2006-12-31 | 2007-01-05 | 83 |  |  | 2007-01-02 | 2007-01-04 | 2d? | 43.26d | 0d | 李翔 | 16h |  | 11.9 | 11.9 |  |
| 28 | 1.2.2.1.1.1.2 | 钱包的转帐 | 1d? | 2007-01-05 | 2007-01-08 | 27 |  |  | 2007-01-04 | 2007-01-05 | 1d? | 43.26d | 0d | 李翔 | 8h |  | 6.3 | 6.3 |  |
| 29 | 1.2.2.1.1.1.3 | 流水的采集 | 2d? | 2007-03-14 | 2007-03-16 |  |  |  | 2007-03-06 | 2007-03-08 | 2d? | 1d |  | 韩纪伟 | 16h |  | 17 | 17 |  |
| 30 | 1.2.2.1.1.1.4 | 帐务的处理 | 2d? | 2007-01-08 | 2007-01-10 | 28 |  |  | 2007-01-05 | 2007-01-09 | 2d? | 43.26d | 0d | 李翔 | 16h |  | 11.9 | 11.9 |  |

| ID | WBS | Task | Duration | Start | Finish | Predecessors | Baseline start | Baseline finish | Baseline duration | Total slack | Free slack | Constraint | Resources | Work | Cost | Baseline cost |
| --- | --- | --- | --- | --- | --- | --- | --- | --- | --- | --- | --- | --- | --- | --- | --- | --- |
| 31 | 1.2.2.1.1.2 | **联机模式的对接** | 44.67d? | 2007-03-16 | 2007-05-18 | 26 | 2007-03-21 | 2007-04-17 | 19.33d? | 1d |  |  |  | 40h | 55.8 | 55.8 |
| 32 | 1.2.2.1.1.2.1 | 对于自增长编号的规范0开始or1开始 | 1d? | 2007-03-16 | 2007-03-19 |  | 2007-03-21 | 2007-03-28 | 1d? | 1d | 0d |  | 汤成 | 8h | 13.5 | 13.5 |
| 33 | 1.2.2.1.1.2.2 | 硬件支持 | 1d? | 2007-03-19 | 2007-04-10 | 32 | 2007-03-28 | 2007-03-29 | 1d? | 1d | 0d |  | 汤成 | 8h | 13.5 | 13.5 |
| 34 | 1.2.2.1.1.2.3 | 充值扣款选择钱包 | 1d? | 2007-05-15 | 2007-05-16 | 33 | 2007-04-12 | 2007-04-13 | 1d? | 1d | 0d |  | 韩纪伟 | 8h | 9 | 9 |
| 35 | 1.2.2.1.1.2.4 | 发卡选择打开几个钱包 | 1d? | 2007-05-16 | 2007-05-17 | 34 | 2007-04-13 | 2007-04-16 | 1d? | 1d | 0d |  | 李翔 | 8h | 6.3 | 6.3 |
| 36 | 1.2.2.1.1.2.5 | 改造卡号和钱包号查找帐户的功能 | 1d? | 2007-05-17 | 2007-05-18 | 35 | 2007-04-16 | 2007-04-17 | 1d? | 1d |  |  | 汤成 | 8h | 13.5 | 13.5 |
| 37 | 1.2.2.1.2 | 凯路水控的对接 | 5d? | 2007-05-04 | 2007-05-15 |  | 2007-04-27 | 2007-05-04 | 5d? | 4.33d |  |  | 汤成 | 40h | 61.5 | 61.5 |
| 38 | 1.2.2.2 | **11、门禁管理系统对接** | 57.26d? | 2007-01-12 | 2007-04-10 |  | 2007-01-11 | 2007-04-20 | 71.1d? | 24.17d | 6.15d |  |  | 120h | 183 | 183 |
| 39 | 1.2.2.2.1 | 汉军门禁的对接 | 5d? | 2007-01-12 | 2007-01-19 | 142, 62 | 2007-01-11 | 2007-01-18 | 5d? | 24.17d | 0d |  | 汤成 | 40h | 61.5 | 61.5 |
| 40 | 1.2.2.2.2 | 酬勤门禁的对接 | 10d? | 2007-03-16 | 2007-04-10 | 41FS+1d | 2007-04-03 | 2007-04-20 | 10d? | 29.17d |  |  | 汤成 | 80h | 121.5 | 121.5 |
| 41 | 1.2.2.3 | 12、通道管理系统对接 | 10d? | 2007-02-27 | 2007-03-15 | 39 | 2007-02-19 | 2007-03-07 | 10d? | 29.17d | 0d |  | 汤成 | 80h | 121.5 | 121.5 |
| 42 | 1.2.2.4 | 51、机房收费系统对接 | 3d? | 2007-02-07 | 2007-02-12 | 126 | 2007-02-06 | 2007-02-09 | 3d? | 54.71d | 0d |  | 李翔 | 24h | 17.5 | 17.5 |
| 43 | 1.2.2.5 | 52、自助复印系统对接 | 5d? | 2007-03-22 | 2007-03-29 |  | 2007-03-09 | 2007-03-16 | 5d? | 37.21d | 0d |  | 李翔 | 40h | 28.7 | 28.7 |
| 44 | 1.2.2.6 | 53、自助洗衣系统对接 | 5d? | 2007-03-29 | 2007-04-05 |  | 2007-03-16 | 2007-03-27 | 5d? | 31.3d | 0d |  | 李翔 | 40h | 28.7 | 28.7 |
| 45 | 1.2.2.7 | 54、自助照相系统对接 | 5d? | 2007-04-05 | 2007-04-12 |  | 2007-03-27 | 2007-04-03 | 5d? | 27.21d | 0d |  | 李翔 | 40h | 28.7 | 28.7 |
| 46 | 1.2.2.8 | 55、电子寄存柜系统对接 | 5d? | 2007-04-12 | 2007-04-20 |  | 2007-04-03 | 2007-04-10 | 5d? | 20.88d | 0d |  | 李翔 | 40h | 28.7 | 28.7 |
| 47 | 1.2.2.9 | 指纹考勤的支持 | 10d? | 2007-03-08 | 2007-03-22 |  | 2007-02-23 | 2007-03-09 | 10d? | 42.21d | 0d | start no earlier than 2006-12-25 | 李翔 | 80h | 56.7 | 56.7 |
| 48 | 1.2.3 | **现有系统的完善** | 104.53d? | 2006-12-18 | 2007-05-21 |  | 2006-12-18 | 2007-05-09 | 102.03d? | 0d |  |  |  | 2882.33h | 3,287.73 | 3,287.73 |
| 49 | 1.2.3.1 | **美工设计** | 9d? | 2007-01-04 | 2007-01-16 |  | 2007-01-01 | 2007-01-11 | 9d? | 83.53d |  |  |  | 72h | 52.5 | 52.5 |
| 50 | 1.2.3.1.1 | 新版的卡面设计 | 3d? | 2007-01-04 | 2007-01-08 |  | 2007-01-01 | 2007-01-03 | 3d? | 83.53d | 0d | start no earlier than 2007-01-01 | 奚嘉敏 | 24h | 17.5 | 17.5 |
| 51 | 1.2.3.1.2 | c/s架构程序的美工设计 | 3d? | 2007-01-09 | 2007-01-11 | 50 | 2007-01-04 | 2007-01-08 | 3d? | 83.53d | 0d |  | 奚嘉敏 | 24h | 17.5 | 17.5 |
| 52 | 1.2.3.1.3 | c/s架构的安装封面 | 3d? | 2007-01-12 | 2007-01-16 | 51 | 2007-01-09 | 2007-01-11 | 3d? | 83.53d |  |  | 奚嘉敏 | 24h | 17.5 | 17.5 |
| 53 | 1.2.3.2 | **01、拍照打卡系统完善** | 20d? | 2007-01-15 | 2007-02-12 |  | 2007-01-12 | 2007-02-09 | 20d? | 16.76d | 0d |  |  | 160h | 162 | 162 |
| 54 | 1.2.3.2.1 | 拍照系统改版 | 10d? | 2007-01-15 | 2007-01-29 | 63 | 2007-01-12 | 2007-01-26 | 10d? | 16.76d | 0d | start no earlier than 2007-01-01 | 韩纪伟 | 80h | 81 | 81 |
| 55 | 1.2.3.2.2 | 卡片打印系统改版 | 10d? | 2007-01-29 | 2007-02-12 | 54 | 2007-01-26 | 2007-02-09 | 10d? | 16.76d |  |  | 韩纪伟 | 80h | 81 | 81 |

| ID | WBS | Task | Type | Duration | Start | Finish | Predecessors | Baseline start | Baseline finish | Baseline duration | Total slack | Free slack | Constraint | Resources | Work | Cost | Baseline cost |
| --- | --- | --- | --- | --- | --- | --- | --- | --- | --- | --- | --- | --- | --- | --- | --- | --- | --- |
| 56 | 1.2.3.3 | **04、会议签到管理系统** |  | 34.02d? | 2007-01-05 | 2007-03-01 |  | 2007-01-04 | 2007-03-01 | 40.02d? | 35.93d |  |  |  | 120h | 122 | 122 |
| 57 | 1.2.3.3.1 | 实现脱机会议签到 |  | 15d? | 2007-01-05 | 2007-01-26 | 66 | 2007-01-04 | 2007-01-25 | 15d? | 35.93d | 0d | start no earlier than 2007-01-01 | 何林青 | 120h | 121 | 121 |
| 58 | 1.2.3.3.2 | 整合海事大学的需求 | milestone | 0d? | 2007-03-01 | 2007-03-01 |  | 2007-03-01 | 2007-03-01 | 0d? | 57.4d |  | start no earlier than 2007-03-01 | 何林青 |  | 1 | 1 |
| 59 | 1.2.3.4 | **11、门禁管理系统完善** |  | 63.86d? | 2006-12-18 | 2007-03-23 |  | 2006-12-18 | 2007-04-24 | 91.7d? | 20.86d |  |  |  | 320h | 414.5 | 414.5 |
| 60 | 1.2.3.4.1 | 总体设计 |  | 3.33d? | 2006-12-18 | 2006-12-21 |  | 2006-12-18 | 2006-12-21 | 3.33d? | 20.86d | 0d | start no earlier than 2006-12-18 | 韩海东; 韩纪伟; 汤成 | 80h | 110.67 | 110.67 |
| 61 | 1.2.3.4.2 | 通道机的对接设计 |  | 1.67d? | 2006-12-21 | 2006-12-22 | 60 | 2006-12-21 | 2006-12-22 | 1.67d? | 20.86d | 1.6d |  | 韩海东; 韩纪伟; 汤成 | 29.33h | 44 | 44 |
| 62 | 1.2.3.4.3 | 开关门状态的监控 |  | 1.5d? | 2006-12-26 | 2006-12-28 | 61, 77 | 2006-12-26 | 2006-12-28 | 1.5d? | 24.17d | 0d |  | 汤成; 何林青 | 24h | 32.5 | 32.5 |
| 63 | 1.2.3.4.4 | 前台界面功能整改 |  | 10d? | 2006-12-29 | 2007-01-15 | 61, 76 | 2006-12-29 | 2007-01-12 | 10d? | 16.76d | 0d |  | 韩纪伟 | 80h | 81 | 81 |
| 64 | 1.2.3.4.5 | 重复卡检查报警-监控 |  | 3d? | 2006-12-28 | 2006-12-31 | 62 | 2006-12-28 | 2007-01-02 | 3d? | 35.93d | 0d |  | 何林青 | 24h | 25 | 25 |
| 65 | 1.2.3.4.6 | 门未关报警-监控 |  | 1d? | 2006-12-31 | 2007-01-04 | 64 | 2007-01-02 | 2007-01-03 | 1d? | 35.93d | 0d |  | 何林青 | 8h | 9 | 9 |
| 66 | 1.2.3.4.7 | 外力破坏报警-监控 |  | 1d? | 2007-01-04 | 2007-01-05 | 65 | 2007-01-03 | 2007-01-04 | 1d? | 35.93d | 0d |  | 何林青 | 8h | 9 | 9 |
| 67 | 1.2.3.4.8 | 时间段排程设计 |  | 0.67d? | 2006-12-21 | 2006-12-21 | 60 | 2006-12-21 | 2006-12-21 | 0.67d? | 39d | 0d |  | 韩纪伟; 汤成 | 10.67h | 15.83 | 15.83 |
| 68 | 1.2.3.4.9 | 刷卡、密码双重认证 |  | 1d? | 2007-03-16 | 2007-03-20 | 67 | 2007-03-07 | 2007-03-09 | 1d? | 40.67d | 0d |  | 韩纪伟; 汤成 | 8h | 12.5 | 12.5 |
| 69 | 1.2.3.4.10 | 指纹、虹膜多重认证 |  | 0.5d? | 2007-03-20 | 2007-03-21 | 68 | 2007-03-09 | 2007-03-13 | 1d? | 40.67d | 0d |  | 韩纪伟; 汤成 | 8h | 12.5 | 12.5 |
| 70 | 1.2.3.4.11 | 反潜回功能的设计 |  | 0.5d? | 2007-03-21 | 2007-03-21 | 69 | 2007-03-30 | 2007-04-12 | 1d? | 40.67d | 0d |  | 韩纪伟; 汤成 | 8h | 12.5 | 12.5 |
| 71 | 1.2.3.4.12 | 路线功能的设计 |  | 0.5d? | 2007-03-21 | 2007-03-22 | 70 | 2007-04-13 | 2007-04-20 | 1d? | 40.67d | 0d |  | 韩纪伟; 汤成 | 8h | 12.5 | 12.5 |
| 72 | 1.2.3.4.13 | 区域功能的设计 |  | 0.5d? | 2007-03-22 | 2007-03-22 | 71 | 2007-04-20 | 2007-04-23 | 1d? | 40.67d | 0d |  | 韩纪伟; 汤成 | 8h | 12.5 | 12.5 |
| 73 | 1.2.3.4.14 | 主副卡的设计 |  | 0.5d? | 2007-03-22 | 2007-03-23 | 72 | 2007-04-23 | 2007-04-24 | 0.5d? | 40.67d | 0d |  | 韩纪伟; 汤成 | 8h | 12.5 | 12.5 |
| 74 | 1.2.3.4.15 | 胁迫码的设计 |  | 0.5d? | 2007-03-23 | 2007-03-23 | 73 | 2007-04-24 | 2007-04-24 | 0.5d? | 40.67d |  |  | 韩纪伟; 汤成 | 8h | 12.5 | 12.5 |
| 75 | 1.2.3.5 | **02、综合管理系统完善** |  | 104.4d? | 2006-12-18 | 2007-05-21 |  | 2006-12-18 | 2007-05-09 | 102.03d? | 0d |  |  |  | 1078.33h | 1,335.53 | 1,697.53 |
| 76 | 1.2.3.5.1 | 业务重新命名 |  | 2.5d? | 2006-12-26 | 2006-12-29 | 77 | 2006-12-26 | 2006-12-29 | 2.5d? | 16.76d | 0d | start no earlier than 2006-12-25 | 韩海东; 韩纪伟 | 40h | 52.5 | 52.5 |
| 77 | 1.2.3.5.2 | 业务分支合并 |  | 1.6d? | 2006-12-25 | 2006-12-26 |  | 2006-12-25 | 2006-12-26 | 1.6d? | 16.76d | 0d | start no earlier than 2006-12-25 | 韩纪伟; 汤成; 何林青; 李翔; 韩海东 | 64h | 78.66 | 78.66 |
| 78 | 1.2.3.5.3 | **drtp、gcc、bcc+bu的升级** |  | 1.67d? | 2007-05-02 | 2007-05-04 |  | 2007-03-30 | 2007-04-03 | 1.67d? | 11.33d |  |  |  | 8h | 13.8 | 13.8 |
| 79 | 1.2.3.5.3.1 | bcc+bu架构的升级 |  | 0.83d? | 2007-05-02 | 2007-05-03 |  | 2007-03-30 | 2007-04-02 | 0.83d? | 12.17d |  |  | 汤成 [60%] | 4h | 6.9 | 6.9 |
| 80 | 1.2.3.5.3.2 | 多个bcc的改造 |  | 0.83d? | 2007-05-03 | 2007-05-04 |  | 2007-04-02 | 2007-04-03 | 0.83d? | 11.33d |  |  | 汤成 [60%] | 4h | 6.9 | 6.9 |
| 81 | 1.2.3.5.4 | 照片库和客户表的整合完善 |  | 1d? | 2007-04-11 | 2007-04-12 | 108 | 2007-03-14 | 2007-03-15 | 1d? | 0d |  |  | 韩海东; 汤成; 韩纪伟 | 24h | 36 | 36 |
| 82 | 1.2.3.5.5 | 增加结算科目的划拨业务 |  | 1d? | 2007-04-12 | 2007-04-13 | 81 | 2007-03-15 | 2007-03-16 | 1d? | 0d |  |  | 韩纪伟; 汤成 | 16h | 22.5 | 22.5 |
| 83 | 1.2.3.5.6 | 写卡失败机制的完善-借用字段 |  | 5d? | 2006-12-26 | 2006-12-31 | 77 | 2006-12-26 | 2007-01-02 | 5d? | 43.26d | 0d |  | 李翔 | 40h | 28.7 | 28.7 |
| 84 | 1.2.3.5.7 | 修改直接取帐户表部门、名字的问题 |  | 1.5d? | 2007-04-13 | 2007-04-17 | 82 | 2007-03-16 | 2007-03-19 | 1.5d? | 0d |  |  | 韩纪伟; 汤成 | 24h | 32.5 | 32.5 |

| ID | WBS | Task | Type | Duration | Start | Finish | Predecessors | Baseline start | Baseline finish | Baseline duration | Total slack | Free slack | Constraint | Resources | Work | Cost | Baseline cost |
| --- | --- | --- | --- | --- | --- | --- | --- | --- | --- | --- | --- | --- | --- | --- | --- | --- | --- |
| 85 | 1.2.3.5.8 | **设备参数的更改记录** |  | 1.33d? | 2007-04-17 | 2007-04-18 | 84 | 2007-03-19 | 2007-03-21 | 1.33d? | 0d |  |  |  | 32h | 46.93 | 46.93 |
| 86 | 1.2.3.5.8.1 | 搭伙费比例 |  | 0.33d? | 2007-04-17 | 2007-04-17 |  | 2007-03-19 | 2007-03-20 | 0.33d? | 0d |  |  | 汤成; 李翔; 韩纪伟 | 8h | 11.73 | 11.73 |
| 87 | 1.2.3.5.8.2 | 单次、累积大额参数 |  | 0.33d? | 2007-04-17 | 2007-04-18 | 86 | 2007-03-20 | 2007-03-20 | 0.33d? | 0d |  |  | 韩纪伟; 汤成; 李翔 | 8h | 11.73 | 11.73 |
| 88 | 1.2.3.5.8.3 | 卡权限控制参数 |  | 0.33d? | 2007-04-18 | 2007-04-18 | 87 | 2007-03-20 | 2007-03-20 | 0.33d? | 0d |  |  | 韩纪伟; 汤成; 李翔 | 8h | 11.73 | 11.73 |
| 89 | 1.2.3.5.8.4 | 设备更换的考虑 |  | 0.33d? | 2007-04-18 | 2007-04-18 | 88 | 2007-03-20 | 2007-03-21 | 0.33d? | 0d |  |  | 韩纪伟; 汤成; 李翔 | 8h | 11.73 | 11.73 |
| 90 | 1.2.3.5.9 | 补办校园卡的收费选项、容易出错 |  | 0.83d? | 2007-04-18 | 2007-04-19 | 85 | 2007-03-21 | 2007-03-22 | 0.83d? | 0d |  |  | 韩纪伟 [60%] | 4h | 4.6 | 4.6 |
| 91 | 1.2.3.5.10 | 商户结构调整的生效问题 |  | 2d? | 2006-12-29 | 2006-12-31 | 76 | 2006-12-29 | 2007-01-02 | 2d? | 81.43d | 0d | start no earlier than 2006-12-25 | 韩海东 | 16h | 25.5 | 25.5 |
| 92 | 1.2.3.5.11 | 设备商户的分配的不同时间段判断有问题 |  | 2d? | 2007-01-19 | 2007-01-23 | 39 | 2007-01-18 | 2007-01-22 | 2d? | 68.93d | 0d |  | 汤成 | 16h | 25.5 | 25.5 |
| 93 | 1.2.3.5.12 | 数据库的备份方案 |  | 2.5d? | 2007-01-23 | 2007-01-25 | 92 | 2007-01-22 | 2007-01-24 | 2.5d? | 68.93d | 0d |  | 韩海东; 汤成 | 40h | 63 | 63 |
| 94 | 1.2.3.5.13 | 增加新生卡类别，区别正式卡 |  | 1d? | 2007-04-19 | 2007-04-20 | 90 | 2007-03-22 | 2007-03-23 | 1d? | 0d |  |  | 汤成; 韩纪伟 | 16h | 22.5 | 22.5 |
| 95 | 1.2.3.5.14 | 新生换卡的3000状态的完善 |  | 2d? | 2007-01-25 | 2007-01-29 | 93 | 2007-01-24 | 2007-01-26 | 2d? | 68.93d | 0d |  | 汤成 | 16h | 25.5 | 25.5 |
| 96 | 1.2.3.5.15 | 补助功能的查询和下发错误的处理 |  | 1d? | 2007-04-20 | 2007-04-23 | 94 | 2007-03-23 | 2007-03-26 | 1d? | 0d |  |  | 韩纪伟; 汤成 | 16h | 22.5 | 22.5 |
| 97 | 1.2.3.5.16 | 授权卡的改造和业务调整 |  | 5d? | 2007-01-10 | 2007-01-17 | 30 | 2007-01-09 | 2007-01-16 | 5d? | 54.83d | 0d |  | 李翔 | 40h | 28.7 | 28.7 |
| 98 | 1.2.3.5.17 | 卡片密钥体系的设计 | milestone | 0d? | 2007-01-17 | 2007-01-17 | 97 | 2007-01-16 | 2007-01-16 | 0d? | 54.83d | 0d |  | 李翔 |  | 0.7 | 0.7 |
| 99 | 1.2.3.5.18 | **报表的完善** |  | 8d? | 2007-02-12 | 2007-03-01 | 53 | 2007-02-09 | 2007-02-21 | 8d? | 16.76d | 0d |  |  | 96h | 119 | 119 |
| 100 | 1.2.3.5.18.1 | 增加餐次报表和设置功能 |  | 2.5d? | 2007-02-12 | 2007-02-14 |  | 2007-02-09 | 2007-02-13 | 2.5d? | 16.76d | 0d |  | 韩海东; 韩纪伟 | 40h | 52.5 | 52.5 |
| 101 | 1.2.3.5.18.2 | 完善资产负债表-修改科目 |  | 1.5d? | 2007-02-14 | 2007-02-25 | 100 | 2007-02-13 | 2007-02-15 | 1.5d? | 16.76d | 0d |  | 韩海东; 韩纪伟 | 24h | 32.5 | 32.5 |
| 102 | 1.2.3.5.18.3 | 报表格式的统一修改 |  | 2d? | 2007-02-25 | 2007-02-27 | 101 | 2007-02-15 | 2007-02-19 | 2d? | 16.76d | 0d |  | 韩纪伟 | 16h | 17 | 17 |
| 103 | 1.2.3.5.18.4 | 支持不同种类的打印机 |  | 2d? | 2007-02-27 | 2007-03-01 | 102 | 2007-02-19 | 2007-02-21 | 2d? | 16.76d |  |  | 韩纪伟 | 16h | 17 | 17 |
| 104 | 1.2.3.5.19 | **帐务模块的调整** |  | 3d? | 2007-04-23 | 2007-04-26 | 96 | 2007-03-26 | 2007-03-29 | 3d? | 0d |  |  |  | 36h | 45.4 | 45.4 |
| 105 | 1.2.3.5.19.1 | 前台配置界面 |  | 3d? | 2007-04-23 | 2007-04-26 |  | 2007-03-26 | 2007-03-29 | 3d? | 0d |  |  | 韩纪伟 | 24h | 25 | 25 |
| 106 | 1.2.3.5.19.2 | 后台支持配置的增删改查 |  | 0.83d? | 2007-04-23 | 2007-04-24 |  | 2007-03-26 | 2007-03-26 | 0.83d? | 1.17d | 0d |  | 汤成 [60%] | 4h | 6.9 | 6.9 |
| 107 | 1.2.3.5.19.3 | 后台搭伙费部分改造 |  | 1d? | 2007-04-24 | 2007-04-25 | 106 | 2007-03-26 | 2007-03-27 | 1d? | 1.17d |  |  | 汤成 | 8h | 13.5 | 13.5 |
| 108 | 1.2.3.5.20 | **科目和交易类型的设置** |  | 29.76d? | 2007-03-01 | 2007-04-11 | 99 | 2007-02-21 | 2007-03-14 | 15.26d? | 0d |  |  |  | 72h | 108.33 | 108.33 |
| 109 | 1.2.3.5.20.1 | 后台支持交易代码和科目的是否可用状态 |  | 1d? | 2007-04-10 | 2007-04-11 |  | 2007-03-13 | 2007-03-14 | 1d? | 0d |  |  | 汤成 | 8h | 13.5 | 13.5 |
| 110 | 1.2.3.5.20.2 | 增加二级科目的设置 |  | 1.67d? | 2007-03-01 | 2007-03-02 |  | 2007-02-21 | 2007-02-22 | 1.67d? | 28.1d |  |  | 汤成; 韩海东; 韩纪伟 | 40h | 57.33 | 57.33 |
| 111 | 1.2.3.5.20.3 | 多数业务的调整 |  | 3d? | 2007-03-15 | 2007-04-03 |  | 2007-03-07 | 2007-03-12 | 3d? | 6.5d |  |  | 汤成 | 24h | 37.5 | 37.5 |

| ID | WBS | Task | Type | Duration | Start | Finish | Predecessors | Baseline start | Baseline finish | Baseline duration | Total slack | Free slack | Constraint | Resources | Work | Cost | Baseline cost |
| --- | --- | --- | --- | --- | --- | --- | --- | --- | --- | --- | --- | --- | --- | --- | --- | --- | --- |
| 112 | 1.2.3.5.21 | **前台动态显示字段** |  | 8d? | 2007-04-26 | 2007-05-08 | 104 | 2007-03-29 | 2007-04-10 | 8d? | 0d |  |  |  | 80h | 85.8 | 85.8 |
| 113 | 1.2.3.5.21.1 | 查询界面的改造 |  | 3d? | 2007-04-26 | 2007-05-01 |  | 2007-03-29 | 2007-04-03 | 3d? | 0d |  |  | 韩纪伟 | 24h | 25 | 25 |
| 114 | 1.2.3.5.21.2 | 增加维护界面 |  | 5d? | 2007-05-01 | 2007-05-08 | 113 | 2007-04-03 | 2007-04-10 | 5d? | 0d |  |  | 韩纪伟 | 40h | 41 | 41 |
| 115 | 1.2.3.5.21.3 | 检查接口，入库 |  | 1d? | 2007-04-26 | 2007-04-27 |  | 2007-03-29 | 2007-03-30 | 1d? | 7d |  |  | 文档管理员 | 8h | 6.3 | 6.3 |
| 116 | 1.2.3.5.21.4 | 增加4个后台功能 |  | 1d? | 2007-04-26 | 2007-04-27 |  | 2007-03-29 | 2007-03-30 | 1d? | 7d |  |  | 汤成 | 8h | 13.5 | 13.5 |
| 117 | 1.2.3.5.22 | **非业务交易的日志保存和查看** |  | 5d? | 2007-05-08 | 2007-05-15 | 112 | 2007-04-10 | 2007-04-17 | 5d? | 0d |  |  |  | 72h | 72.7 | 72.7 |
| 118 | 1.2.3.5.22.1 | 检查接口，入库 |  | 5d? | 2007-05-08 | 2007-05-15 |  | 2007-04-10 | 2007-04-17 | 5d? | 0d |  |  | 文档管理员 | 40h | 28.7 | 28.7 |
| 119 | 1.2.3.5.22.2 | 在bu入口保存buffer |  | 1d? | 2007-05-08 | 2007-05-09 |  | 2007-04-10 | 2007-04-11 | 1d? | 3d | 0d |  | 汤成 | 8h | 13.5 | 13.5 |
| 120 | 1.2.3.5.22.3 | 前台显示内容 |  | 2d? | 2007-05-08 | 2007-05-10 |  | 2007-04-10 | 2007-04-12 | 2d? | 3d |  |  | 韩纪伟 | 16h | 17 | 17 |
| 121 | 1.2.3.5.22.4 | 后台解析内容 |  | 1d? | 2007-05-09 | 2007-05-10 | 119 | 2007-04-11 | 2007-04-12 | 1d? | 3d |  |  | 汤成 | 8h | 13.5 | 13.5 |
| 122 | 1.2.3.5.23 | 增加操作员号和工作站号 |  | 0.5d? | 2007-05-15 | 2007-05-16 | 117 | 2007-04-17 | 2007-04-23 | 1d? | 0d |  |  | 汤成; 韩纪伟 | 8h | 12.5 | 12.5 |
| 123 | 1.2.3.5.24 | **定时任务的管理** |  | 0d? | 2007-05-16 | 2007-05-16 | 122 | 2007-04-23 | 2007-04-23 | 0d? | 0d |  |  |  |  | 2.5 | 2.5 |
| 124 | 1.2.3.5.24.1 | 前台增加修改查询界面 | milestone | 0d? | 2007-05-16 | 2007-05-16 |  | 2007-04-23 | 2007-04-23 | 0d? | 0d |  |  | 韩纪伟 |  | 1 | 1 |
| 125 | 1.2.3.5.24.2 | 后台增加读取和修改contab的功能 | milestone | 0d? | 2007-05-16 | 2007-05-16 |  | 2007-04-23 | 2007-04-23 | 0d? | 3.5d |  |  | 汤成 |  | 1.5 | 1.5 |
| 126 | 1.2.3.5.25 | syslog的统一 |  | 10d? | 2007-01-24 | 2007-02-07 | 98 | 2007-01-23 | 2007-02-06 | 10d? | 54.71d | 0d |  | 李翔 | 80h | 56.7 | 56.7 |
| 127 | 1.2.3.5.26 | 时钟同步方案 |  | 1d? | 2007-01-29 | 2007-01-30 | 95 | 2007-01-26 | 2007-01-29 | 1d? | 68.93d | 0d |  | 汤成 | 8h | 13.5 | 13.5 |
| 128 | 1.2.3.5.27 | 自动化升级 |  | 5d? | 2006-12-18 | 2006-12-25 |  | 2006-12-18 | 2006-12-25 | 5d? | 99.4d |  |  | 待定 | 40h | 41 | 41 |
| 129 | 1.2.3.5.28 | **系统安装** |  | 2d? | 2007-01-30 | 2007-02-01 | 127 | 2007-01-29 | 2007-01-31 | 2d? | 68.93d |  |  |  | 16h | 26.5 | 26.5 |
| 130 | 1.2.3.5.28.1 | b/s*.war部署 | milestone | 0d? | 2007-01-30 | 2007-01-30 |  | 2007-01-29 | 2007-01-29 | 0d? | 73.93d |  |  | 何林青 |  | 1 | 1 |
| 131 | 1.2.3.5.28.2 | 后台的安装.o和.bnd |  | 2d? | 2007-01-30 | 2007-02-01 |  | 2007-01-29 | 2007-01-31 | 2d? | 68.93d | 0d |  | 汤成 | 16h | 25.5 | 25.5 |
| 132 | 1.2.3.5.29 | **blk的完善** |  | 3d? | 2007-02-01 | 2007-02-06 | 131 | 2007-01-31 | 2007-02-05 | 3d? | 68.93d |  |  |  | 24h | 39 | 39 |
| 133 | 1.2.3.5.29.1 | 提高可配置性 | milestone | 0d? | 2007-02-01 | 2007-02-01 |  | 2007-01-31 | 2007-01-31 | 0d? | 68.93d | 0d |  | 汤成 |  | 1.5 | 1.5 |
| 134 | 1.2.3.5.29.2 | 解决cpu占用率的问题 |  | 3d? | 2007-02-01 | 2007-02-06 | 133 | 2007-01-31 | 2007-02-05 | 3d? | 68.93d | 0d |  | 汤成 | 24h | 37.5 | 37.5 |
| 135 | 1.2.3.5.30 | 前台的所有的错误提示统一风格 |  | 5d? | 2006-12-31 | 2007-01-10 |  | 2007-01-02 | 2007-01-09 | 5d? | 87.97d |  |  | 待定 | 40h | 41 | 41 |
| 136 | 1.2.3.5.31 | 多帐户结算的修改 |  | 3d? | 2006-12-31 | 2007-01-08 | 91 | 2007-01-02 | 2007-01-05 | 3d? | 81.43d | 0d |  | 韩海东 | 24h | 37.5 | 37.5 |
| 137 | 1.2.3.5.32 | 卡库不平和个人账户不平的调整 |  | 3d? | 2007-01-08 | 2007-01-11 | 136 | 2007-01-05 | 2007-01-10 | 3d? | 81.43d | 0d |  | 韩海东 | 24h | 37.5 | 37.5 |
| 138 | 1.2.3.5.33 | 查询数据的筛选-控制操作权限 |  | 3.5d? | 2007-05-16 | 2007-05-21 | 124 | 2007-04-24 | 2007-05-09 | 5d? | 0d |  |  | 韩纪伟; 汤成 | 40h | 52.5 | 52.5 |
| 139 | 1.2.3.5.34 | 卡片使用张数的统计 | milestone | 0d? | 2007-01-11 | 2007-01-11 | 137 | 2007-01-10 | 2007-01-10 | 0d? | 81.43d | 0d |  | 韩海东 |  | 1.5 | 1.5 |
| 140 | 1.2.3.5.35 | 完善独立核算和非独立核算的机制 |  | 0.79d? | 2007-03-16 | 2007-03-20 |  | 2007-02-01 | 2007-02-02 | 0.79d? | 44.17d |  | start no earlier than 2007-02-01 | 韩海东 | 6.33h | 11 | 11 |
| 141 | 1.2.3.5.36 | 对接的v23设备中途拔卡的处理 | milestone | 0d? | 2007-02-06 | 2007-02-06 | 134 | 2007-02-05 | 2007-02-05 | 0d? | 68.93d |  |  | 汤成 |  | 1.5 | 1.5 |
| 142 | 1.2.3.6 | 16、通用网关系统的完善 |  | 10d? | 2006-12-28 | 2007-01-12 | 62 | 2006-12-28 | 2007-01-11 | 10d? | 24.17d | 0d |  | 汤成 | 80h | 121.5 | 121.5 |

| ID | WBS | Task | Type | Duration | Start | Finish | Predecessors | Baseline start | Baseline finish | Baseline duration | Total slack | Free slack | Resources | Work | Cost | Baseline cost |
| --- | --- | --- | --- | --- | --- | --- | --- | --- | --- | --- | --- | --- | --- | --- | --- | --- |
| 143 | 1.2.3.7 | **06、银行圈存系统完善** |  | 32.72d? | 2007-01-11 | 2007-03-05 |  | 2007-01-10 | 2007-02-23 | 32.72d? | 54.71d | 39.9d |  | 128h | 131.7 | 131.7 |
| 144 | 1.2.3.7.1 | 圈存机的业务监控-心跳 |  | 1d? | 2007-01-11 | 2007-01-12 | 139 | 2007-01-10 | 2007-01-11 | 1d? | 81.43d | 0d | 韩海东 | 8h | 13.5 | 13.5 |
| 145 | 1.2.3.7.2 | 银行通讯接口和自身业务的分离 |  | 5d? | 2007-01-12 | 2007-01-19 | 144 | 2007-01-11 | 2007-01-18 | 5d? | 81.43d |  | 韩海东 | 40h | 61.5 | 61.5 |
| 146 | 1.2.3.7.3 | 结构的调整 |  | 10d? | 2007-02-12 | 2007-03-05 | 42 | 2007-02-09 | 2007-02-23 | 10d? | 54.71d |  | 李翔 | 80h | 56.7 | 56.7 |
| 147 | 1.2.3.8 | **05、监控管理系统完善** |  | 27.5d? | 2007-01-26 | 2007-03-13 | 57 | 2007-01-25 | 2007-03-05 | 27.5d? | 35.93d | 0d |  | 220h | 236 | 236 |
| 148 | 1.2.3.8.1 | **现有业务的整改** |  | 9.5d? | 2007-01-26 | 2007-02-08 |  | 2007-01-25 | 2007-02-07 | 9.5d? | 35.93d | 0d |  | 76h | 83 | 83 |
| 149 | 1.2.3.8.1.1 | 数据字典的改造 |  | 1d? | 2007-01-26 | 2007-01-29 |  | 2007-01-25 | 2007-01-26 | 1d? | 35.93d | 0d | 何林青 | 8h | 9 | 9 |
| 150 | 1.2.3.8.1.2 | gis操作的易用性改造（提示/点击进入等） |  | 2d? | 2007-01-29 | 2007-01-31 | 149 | 2007-01-26 | 2007-01-30 | 2d? | 35.93d | 0d | 何林青 | 16h | 17 | 17 |
| 151 | 1.2.3.8.1.3 | 系统菜单专业化/布局合理化 |  | 1d? | 2007-01-31 | 2007-02-01 | 150 | 2007-01-30 | 2007-01-31 | 1d? | 35.93d | 0d | 何林青 | 8h | 9 | 9 |
| 152 | 1.2.3.8.1.4 | 图例位置合理化 |  | 1d? | 2007-02-01 | 2007-02-02 | 151 | 2007-01-31 | 2007-02-01 | 1d? | 35.93d | 0d | 何林青 | 8h | 9 | 9 |
| 153 | 1.2.3.8.1.5 | 图例用的图片优化 |  | 0.5d? | 2007-02-02 | 2007-02-02 | 152 | 2007-02-01 | 2007-02-01 | 0.5d? | 35.93d | 0d | 何林青 | 4h | 5 | 5 |
| 154 | 1.2.3.8.1.6 | 前台增加系统监控日志展现 |  | 2d? | 2007-02-02 | 2007-02-06 | 153 | 2007-02-01 | 2007-02-05 | 2d? | 35.93d | 0d | 何林青 | 16h | 17 | 17 |
| 155 | 1.2.3.8.1.7 | 丢数采集业务的完善-存在缺陷 |  | 2d? | 2007-02-06 | 2007-02-08 | 154 | 2007-02-05 | 2007-02-07 | 2d? | 35.93d |  | 何林青 | 16h | 17 | 17 |
| 156 | 1.2.3.8.2 | **系统输出功能增强** |  | 13d? | 2007-02-08 | 2007-03-06 | 148 | 2007-02-07 | 2007-02-26 | 13d? | 35.93d |  |  | 104h | 108 | 108 |
| 157 | 1.2.3.8.2.1 | **增加分析报表** |  | 13d? | 2007-02-08 | 2007-03-06 |  | 2007-02-07 | 2007-02-26 | 13d? | 35.93d | 0d |  | 104h | 107 | 107 |
| 158 | 1.2.3.8.2.1.1 | 设备状态变化报表 |  | 5d? | 2007-02-08 | 2007-02-15 |  | 2007-02-07 | 2007-02-14 | 5d? | 35.93d | 0d | 何林青 | 40h | 41 | 41 |
| 159 | 1.2.3.8.2.1.2 | 流水异常统计 |  | 5d? | 2007-02-15 | 2007-03-01 | 158 | 2007-02-14 | 2007-02-21 | 5d? | 35.93d | 0d | 何林青 | 40h | 41 | 41 |
| 160 | 1.2.3.8.2.1.3 | 其他可能的报表 |  | 3d? | 2007-03-01 | 2007-03-06 | 159 | 2007-02-21 | 2007-02-26 | 3d? | 35.93d |  | 何林青 | 24h | 25 | 25 |
| 161 | 1.2.3.8.2.2 | 增加查询结果印功能 | milestone | 0d? | 2007-03-06 | 2007-03-06 | 157 | 2007-02-26 | 2007-02-26 | 0d? | 35.93d | 0d | 何林青 |  | 1 | 1 |
| 162 | 1.2.3.8.3 | **新增业务** |  | 5d? | 2007-03-06 | 2007-03-13 | 161 | 2007-02-26 | 2007-03-05 | 5d? | 35.93d | 10.12d |  | 40h | 45 | 45 |
| 163 | 1.2.3.8.3.1 | 增加对服务器的监控 | milestone | 0d? | 2007-03-06 | 2007-03-06 |  | 2007-02-26 | 2007-02-26 | 0d? | 35.93d | 0d | 何林青 |  | 1 | 1 |
| 164 | 1.2.3.8.3.2 | 增加对数据库的监控 | milestone | 0d? | 2007-03-06 | 2007-03-06 | 163 | 2007-02-26 | 2007-02-26 | 0d? | 35.93d | 0d | 何林青 |  | 1 | 1 |
| 165 | 1.2.3.8.3.3 | 增加对软件/服务端口的监控 | milestone | 0d? | 2007-03-06 | 2007-03-06 | 164 | 2007-02-26 | 2007-02-26 | 0d? | 35.93d | 0d | 何林青 |  | 1 | 1 |
| 166 | 1.2.3.8.3.4 | 增加对通讯平台的监控 | milestone | 0d? | 2007-03-06 | 2007-03-06 | 165 | 2007-02-26 | 2007-02-26 | 0d? | 35.93d | 0d | 何林青 |  | 1 | 1 |
| 167 | 1.2.3.8.3.5 | 对接系统的监控-图书馆 |  | 5d? | 2007-03-06 | 2007-03-13 | 166 | 2007-02-26 | 2007-03-05 | 5d? | 35.93d |  | 何林青 | 40h | 41 | 41 |

| ID | WBS | Task | Duration | Start | Finish | Predecessors | Baseline start | Baseline finish | Baseline duration | Total slack | Free slack | Constraint | Resources | Work | Cost | Baseline cost |
| --- | --- | --- | --- | --- | --- | --- | --- | --- | --- | --- | --- | --- | --- | --- | --- | --- |
| 168 | 1.2.3.9 | **10、多媒体查询系统改版** | 60d? | 2007-01-16 | 2007-04-17 |  | 2007-01-15 | 2007-04-09 | 60d? | 24.31d | 3.78d |  |  | 480h | 482 | 482 |
| 169 | 1.2.3.9.1 | 展示部分 | 30d? | 2007-01-16 | 2007-03-06 |  | 2007-01-15 | 2007-02-26 | 30d? | 54.31d |  |  | 待定 | 240h | 241 | 241 |
| 170 | 1.2.3.9.2 | 维护部分 | 30d? | 2007-03-06 | 2007-04-17 |  | 2007-02-26 | 2007-04-09 | 30d? | 24.31d |  |  | 待定 | 240h | 241 | 241 |
| 171 | 1.2.3.10 | **08、领导查询系统完善** | 2d? | 2007-03-29 | 2007-04-02 |  | 2007-03-12 | 2007-03-14 | 2d? | 35.17d | 0d |  |  | 16h | 18 | 18 |
| 172 | 1.2.3.10.1 | 经费本充值次数 | 1d? | 2007-03-29 | 2007-03-30 |  | 2007-03-12 | 2007-03-13 | 1d? | 35.17d | 0d | start no earlier than 2006-12-25 | 韩纪伟 | 8h | 9 | 9 |
| 173 | 1.2.3.10.2 | 增加个人、设备的明细记录查询 | 1d? | 2007-03-30 | 2007-04-02 | 172 | 2007-03-13 | 2007-03-14 | 1d? | 35.17d |  |  | 韩纪伟 | 8h | 9 | 9 |
| 174 | 1.2.3.11 | **09、综合查询系统完善** | 6d? | 2007-03-27 | 2007-04-04 | 162 | 2007-03-12 | 2007-03-20 | 6d? | 22.8d | 0d |  |  | 48h | 50 | 50 |
| 175 | 1.2.3.11.1 | 展现现代教育中心上机流水 | 3d? | 2007-03-27 | 2007-03-30 |  | 2007-03-12 | 2007-03-15 | 3d? | 25.8d |  |  | 何林青 | 24h | 25 | 25 |
| 176 | 1.2.3.11.2 | 展现光华楼门禁流水 | 3d? | 2007-03-30 | 2007-04-04 |  | 2007-03-15 | 2007-03-20 | 3d? | 22.8d |  |  | 何林青 | 24h | 25 | 25 |
| 177 | 1.2.3.12 | 07、考勤管理系统完善 | 10d? | 2007-04-02 | 2007-05-15 |  | 2007-04-16 | 2007-05-04 | 10d? | 4.5d | 0d | start no earlier than 2006-12-25 | 韩纪伟 | 80h | 81 | 81 |
| 178 | 1.2.3.13 | webservice通用接口 | 10d? | 2007-04-04 | 2007-04-18 | 174 | 2007-03-20 | 2007-04-03 | 10d? | 22.8d |  |  | 何林青 | 80h | 81 | 81 |
| 179 | 1.2.4 | **上线系统维护和变更** | 59.17d? | 2006-12-19 | 2007-03-20 |  | 2006-12-19 | 2007-03-12 | 59.17d? | 43.8d |  |  |  | 439.24h | 477.91 | 477.91 |
| 180 | 1.2.4.1 | 复旦大学 | 17.14d? | 2006-12-19 | 2007-03-09 |  | 2006-12-19 | 2007-03-01 | 17.14d? | 51.48d |  |  | 韩海东; 韩纪伟; 汤成; 何林青; 李翔; 待定; 文档管理员 | 160h | 176.54 | 176.54 |
| 181 | 1.2.4.2 | 上海大学 | 10d? | 2007-01-10 | 2007-03-19 |  | 2007-01-09 | 2007-03-09 | 10d? | 45.38d |  |  | 汤成; 何林青; 李翔; 待定; 文档管理员 | 80h | 83.3 | 83.3 |
| 182 | 1.2.4.3 | 泰州大学 | 9.9d? | 2007-01-12 | 2007-03-20 |  | 2007-01-11 | 2007-03-12 | 9.9d? | 43.8d |  |  | 韩纪伟; 汤成; 何林青; 李翔; 待定; 文档管理员 | 79.24h | 83.81 | 83.81 |
| 183 | 1.2.4.4 | 理工大学 | 14.41d? | 2006-12-22 | 2007-03-15 |  | 2006-12-22 | 2007-03-07 | 14.41d? | 47.38d |  |  | 韩海东; 韩纪伟; 汤成; 何林青; 李翔; 待定; 文档管理员 | 120h | 134.26 | 134.26 |
| 184 | 1.2.5 | **系统培训** | 54.78d? | 2007-02-07 | 2007-05-02 |  |  |  |  | 13d |  |  |  | 240h | 246.4 |  |
| 185 | 1.2.5.1 | 一卡通结算相关培训 | 5d? | 2007-03-05 | 2007-03-16 |  |  |  |  | 45.96d |  | start no earlier than 2007-02-01 | 韩海东; 李翔 | 40h | 46.2 |  |
| 186 | 1.2.5.2 | 一卡通web应用培训 | 8d? | 2007-03-19 | 2007-03-29 |  |  |  |  | 37.17d |  | start no earlier than 2007-02-01 | 韩纪伟; 何林青 | 80h | 82 |  |
| 187 | 1.2.5.3 | 一卡通产品体系架构培训 | 5d? | 2007-04-18 | 2007-05-02 |  |  |  |  | 13d |  | start no earlier than 2007-02-01 | 汤成 | 40h | 61.5 |  |
| 188 | 1.2.5.4 | 一卡通卡务业务相关培训 | 10d? | 2007-02-07 | 2007-03-02 |  |  |  |  | 55.78d |  | start no earlier than 2007-02-01 | 滕斌 | 80h | 56.7 |  |
| 189 | 1.2.6 | 其他 | 8.57d? | 2006-12-18 | 2007-03-06 |  | 2006-12-18 | 2007-02-26 | 8.57d? | 54.33d |  |  | 韩海东; 韩纪伟; 汤成; 何林青; 李翔; 待定; 文档管理员 | 80h | 91.97 | 91.97 |
| 190 | 1.3 | **项目测试活动** | 79.7d? | 2006-12-18 | 2007-04-16 |  | 2006-12-18 | 2007-04-18 | 87.03d? | 24.71d |  |  |  | 478h | 369.6 | 373.8 |
| 191 | 1.3.1 | **新对接系统测试** | 55.57d? | 2007-01-22 | 2007-04-16 |  | 2007-02-06 | 2007-04-09 | 43.68d? | 24.71d |  |  |  | 108h | 86.1 | 90.3 |
| 192 | 1.3.1.1 | **水控系统** | 36.62d? | 2007-01-23 | 2007-03-21 | 24SS | 2007-02-21 | 2007-02-28 | 5.25d? | 42.65d |  |  |  | 30h | 23.8 | 23.8 |
| 193 | 1.3.1.1.1 | 业务熟悉 | 0.5d? | 2007-03-21 | 2007-03-21 |  | 2007-02-27 | 2007-02-28 | 0.5d? | 42.65d |  |  | 滕斌 | 4h | 3.5 | 3.5 |
| 194 | 1.3.1.1.2 | 测试工作 | 2d? | 2007-03-16 | 2007-03-20 |  | 2007-02-21 | 2007-02-23 | 2d? | 44.4d |  |  | 滕斌 | 16h | 11.9 | 11.9 |
| 195 | 1.3.1.1.3 | 验证缺陷修改 | 0.5d? | 2007-01-23 | 2007-01-23 |  | 2007-02-28 | 2007-02-28 | 0.5d? | 77.53d | 26.57d |  | 滕斌 | 4h | 3.5 | 3.5 |
| 196 | 1.3.1.1.4 | 回归测试 | 0.75d? | 2007-03-20 | 2007-03-21 |  | 2007-02-23 | 2007-02-26 | 0.75d? | 43.15d |  |  | 滕斌 | 6h | 4.9 | 4.9 |

| ID | WBS | Task | Duration | Start | Finish | Predecessors | Baseline start | Baseline finish | Baseline duration | Total slack | Free slack | Resources | Work | Cost | Baseline cost |
| --- | --- | --- | --- | --- | --- | --- | --- | --- | --- | --- | --- | --- | --- | --- | --- |
| 197 | 1.3.1.2 | **门禁系统** | 32.75d? | 2007-01-22 | 2007-03-14 | 38SS | 2007-02-12 | 2007-02-19 | 5d? | 47.53d |  |  | 40h | 30.8 | 30.8 |
| 198 | 1.3.1.2.1 | 业务熟悉 | 1d? | 2007-01-22 | 2007-01-23 |  | 2007-02-14 | 2007-02-15 | 1d? | 78.03d | 27.07d | 滕斌 | 8h | 6.3 | 6.3 |
| 199 | 1.3.1.2.2 | 测试工作 | 2.5d? | 2007-03-08 | 2007-03-13 |  | 2007-02-12 | 2007-02-14 | 2.5d? | 49.03d |  | 滕斌 | 20h | 14.7 | 14.7 |
| 200 | 1.3.1.2.3 | 验证缺陷修改 | 0.5d? | 2007-03-14 | 2007-03-14 |  | 2007-02-16 | 2007-02-19 | 0.5d? | 47.53d |  | 滕斌 | 4h | 3.5 | 3.5 |
| 201 | 1.3.1.2.4 | 回归测试 | 1d? | 2007-03-13 | 2007-03-14 |  | 2007-02-15 | 2007-02-16 | 1d? | 48.03d |  | 滕斌 | 8h | 6.3 | 6.3 |
| 202 | 1.3.1.3 | 机房软件的对接测试 | 1d? | 2007-02-07 | 2007-02-08 | 42SS | 2007-02-06 | 2007-02-07 | 1d? | 66.71d |  | 滕斌 | 8h | 6.3 | 6.3 |
| 203 | 1.3.1.4 | 通道机的对接测试 | 1d? | 2007-02-27 | 2007-02-28 | 41SS | 2007-02-19 | 2007-02-20 | 1d? | 57.83d |  | 滕斌 | 8h | 6.3 | 6.3 |
| 204 | 1.3.1.5 | 自助复印测试 | 0.5d? | 2007-03-26 | 2007-03-26 | 43SS | 2007-03-13 | 2007-03-14 | 0.5d? | 39.71d |  | 滕斌 | 4h | 3.5 | 3.5 |
| 205 | 1.3.1.6 | 自助洗衣测试 | 0.5d? | 2007-04-02 | 2007-04-06 | 44SS+3h | 2007-03-23 | 2007-03-23 | 0.5d? | 31.21d |  | 滕斌 | 4h | 3.5 | 3.5 |
| 206 | 1.3.1.7 | 自助照相测试 | 1d? | 2007-04-09 | 2007-04-10 | 45SS | 2007-04-02 | 2007-04-02 | 1d? | 29.21d |  | 滕斌 | 8h | 6.3 | 6.3 |
| 207 | 1.3.1.8 | 电子寄存柜测试 | 0.5d? | 2007-04-16 | 2007-04-16 | 46SS | 2007-04-09 | 2007-04-09 | 0.5d? | 24.71d |  | 滕斌 | 4h | 3.5 | 3.5 |
| 208 | 1.3.1.9 | 指纹考勤的支持测试 | 0.25d? | 2007-03-09 | 2007-03-09 | 47SS+1d, 198FS+1d, 195FS+1d | 2007-02-26 | 2007-02-27 | 1d? | 50.96d |  | 滕斌 | 2h | 2.1 | 6.3 |
| 209 | 1.3.2 | **现有系统的测试工作** | 73.72d? | 2006-12-18 | 2007-04-06 |  | 2006-12-18 | 2007-04-18 | 87.03d? | 30.68d |  |  | 370h | 283.5 | 283.5 |
| 210 | 1.3.2.1 | **拍照打卡** | 11d? | 2007-01-23 | 2007-02-07 | 53SS | 2007-01-19 | 2007-01-23 | 2.75d? | 67.78d |  |  | 10h | 9.8 | 9.8 |
| 211 | 1.3.2.1.1 | 业务熟悉 | 0.25d? | 2007-01-23 | 2007-01-23 |  | 2007-01-19 | 2007-01-19 | 0.25d? | 68d | 0d | 滕斌 | 2h | 2.1 | 2.1 |
| 212 | 1.3.2.1.2 | 测试工作 | 0.5d? | 2007-01-25 | 2007-01-25 | 211 | 2007-01-22 | 2007-01-22 | 0.5d? | 67.9d | 0d | 滕斌 | 4h | 3.5 | 3.5 |
| 213 | 1.3.2.1.3 | 验证缺陷修改 | 0.25d? | 2007-01-25 | 2007-01-25 | 212 | 2007-01-23 | 2007-01-23 | 0.25d? | 67.78d | 0d | 滕斌 | 2h | 2.1 | 2.1 |
| 214 | 1.3.2.1.4 | 回归测试 | 0.25d? | 2007-01-26 | 2007-02-07 | 213 | 2007-01-23 | 2007-01-23 | 0.25d? | 67.78d |  | 滕斌 | 2h | 2.1 | 2.1 |
| 215 | 1.3.2.2 | **前后台业务** | 52.62d? | 2006-12-18 | 2007-03-08 | 75SS | 2006-12-18 | 2007-02-12 | 40.25d? | 48.88d |  |  | 224h | 161.7 | 161.7 |
| 216 | 1.3.2.2.1 | 熟悉业务改动以及新增功能 | 4d? | 2006-12-18 | 2006-12-22 |  | 2006-12-18 | 2006-12-21 | 4d? | 48.88d | 0d | 滕斌 | 32h | 23.1 | 23.1 |
| 217 | 1.3.2.2.2 | 各个测试模块功能、业务罗列 | 3d? | 2006-12-22 | 2006-12-27 | 216 | 2006-12-22 | 2006-12-26 | 3d? | 48.88d | 0d | 滕斌 | 24h | 17.5 | 17.5 |
| 218 | 1.3.2.2.3 | 部分模块制定测试方法 | 2d? | 2006-12-27 | 2006-12-29 | 217 | 2006-12-27 | 2006-12-28 | 2d? | 48.88d | 0d | 滕斌 | 16h | 11.9 | 11.9 |
| 219 | 1.3.2.2.4 | 修改部分测试用例 | 3d? | 2006-12-29 | 2007-01-04 | 218 | 2006-12-29 | 2007-01-02 | 3d? | 48.88d | 0d | 滕斌 | 24h | 17.5 | 17.5 |
| 220 | 1.3.2.2.5 | 测试工作 | 10d? | 2007-01-04 | 2007-01-18 | 219 | 2007-01-03 | 2007-01-16 | 10d? | 48.88d | 0d | 滕斌 | 80h | 56.7 | 56.7 |
| 221 | 1.3.2.2.6 | 验证缺陷修改 | 2d? | 2007-01-18 | 2007-01-22 | 220 | 2007-01-17 | 2007-01-18 | 2d? | 48.88d | 0d | 滕斌 | 16h | 11.9 | 11.9 |
| 222 | 1.3.2.2.7 | 回归测试 | 4d? | 2007-03-02 | 2007-03-08 | 221 | 2007-01-23 | 2007-02-12 | 4d? | 51.78d |  | 滕斌 | 32h | 23.1 | 23.1 |

| ID | WBS | Task | Duration | Start | Finish | Predecessors | Baseline start | Baseline finish | Baseline duration | Total slack | Free slack | Resources | Work | Cost | Baseline cost |
| --- | --- | --- | --- | --- | --- | --- | --- | --- | --- | --- | --- | --- | --- | --- | --- |
| 223 | 1.3.2.3 | **圈存完善测试** | 1.12d? | 2007-03-15 | 2007-03-16 | 143SS | 2007-02-19 | 2007-02-21 | 2.12d? | 46.4d |  |  | 9h | 9.1 | 9.1 |
| 224 | 1.3.2.3.1 | 业务熟悉 | 0.25d? | 2007-03-15 | 2007-03-15 |  | 2007-02-20 | 2007-02-20 | 0.25d? | 46.78d |  | 滕斌 | 2h | 2.1 | 2.1 |
| 225 | 1.3.2.3.2 | 测试工作 | 0.5d? | 2007-03-15 | 2007-03-15 |  | 2007-02-19 | 2007-02-20 | 0.5d? | 47.03d |  | 滕斌 | 4h | 3.5 | 3.5 |
| 226 | 1.3.2.3.3 | 缺陷跟踪 | 0.12d? | 2007-03-16 | 2007-03-16 |  | 2007-02-21 | 2007-02-21 | 0.12d? | 46.4d |  | 滕斌 | 1h | 1.4 | 1.4 |
| 227 | 1.3.2.3.4 | 回归测试 | 0.25d? | 2007-03-15 | 2007-03-15 |  | 2007-02-21 | 2007-02-21 | 0.25d? | 46.53d |  | 滕斌 | 2h | 2.1 | 2.1 |
| 228 | 1.3.2.4 | **监控系统** | 8.5d? | 2007-01-26 | 2007-02-07 | 147SS | 2007-01-25 | 2007-02-06 | 8.5d? | 67.93d |  |  | 68h | 51.1 | 51.1 |
| 229 | 1.3.2.4.1 | 新业务熟悉 | 0.5d? | 2007-01-26 | 2007-01-26 |  | 2007-01-25 | 2007-01-25 | 0.5d? | 67.93d | 0d | 滕斌 | 4h | 3.5 | 3.5 |
| 230 | 1.3.2.4.2 | 修改现有的部分测试用例 | 1.5d? | 2007-01-26 | 2007-01-30 | 229 | 2007-01-25 | 2007-01-29 | 1.5d? | 67.93d | 0d | 滕斌 | 12h | 9.1 | 9.1 |
| 231 | 1.3.2.4.3 | 测试工作 | 4d? | 2007-01-30 | 2007-02-05 | 230 | 2007-01-29 | 2007-02-02 | 4d? | 67.93d | 0d | 滕斌 | 32h | 23.1 | 23.1 |
| 232 | 1.3.2.4.4 | 缺陷跟踪 | 0.5d? | 2007-02-05 | 2007-02-05 | 231 | 2007-02-02 | 2007-02-02 | 0.5d? | 67.93d | 0d | 滕斌 | 4h | 3.5 | 3.5 |
| 233 | 1.3.2.4.5 | 回归测试 | 2d? | 2007-02-05 | 2007-02-07 | 232 | 2007-02-02 | 2007-02-06 | 2d? | 67.93d |  | 滕斌 | 16h | 11.9 | 11.9 |
| 234 | 1.3.2.5 | **多媒体查询系统** | 36.62d? | 2007-01-22 | 2007-03-20 | 168SS | 2007-01-19 | 2007-02-23 | 25.62d? | 39.75d |  |  | 16h | 14 | 14 |
| 235 | 1.3.2.5.1 | 业务熟悉 | 0.25d? | 2007-01-22 | 2007-01-22 |  | 2007-01-19 | 2007-01-19 | 0.25d? | 39.75d | 0d | 滕斌 | 2h | 2.1 | 2.1 |
| 236 | 1.3.2.5.2 | 测试工作 | 1d? | 2007-01-24 | 2007-01-24 | 235 | 2007-01-19 | 2007-01-22 | 1d? | 39d | 0d | 滕斌 | 8h | 6.3 | 6.3 |
| 237 | 1.3.2.5.3 | 缺陷跟踪 | 0.25d? | 2007-01-25 | 2007-01-25 | 236 | 2007-01-23 | 2007-01-23 | 0.25d? | 38.9d | 0d | 滕斌 | 2h | 2.1 | 2.1 |
| 238 | 1.3.2.5.4 | 回归测试 | 0.5d? | 2007-03-20 | 2007-03-20 | 237 | 2007-02-23 | 2007-02-23 | 0.5d? | 43.9d |  | 滕斌 | 4h | 3.5 | 3.5 |
| 239 | 1.3.2.6 | **领导查询** | 1.25d? | 2007-03-29 | 2007-03-30 | 171SS | 2007-03-12 | 2007-03-13 | 1.25d? | 35.92d |  |  | 10h | 10.5 | 10.5 |
| 240 | 1.3.2.6.1 | 熟悉新业务 | 0.12d? | 2007-03-29 | 2007-03-29 |  | 2007-03-12 | 2007-03-12 | 0.12d? | 35.92d | 0d | 滕斌 | 1h | 1.4 | 1.4 |
| 241 | 1.3.2.6.2 | 修改部分测试用例 | 0.25d? | 2007-03-29 | 2007-03-29 | 240 | 2007-03-12 | 2007-03-12 | 0.25d? | 35.92d | 0d | 滕斌 | 2h | 2.1 | 2.1 |
| 242 | 1.3.2.6.3 | 测试工作 | 0.5d? | 2007-03-29 | 2007-03-30 | 241 | 2007-03-12 | 2007-03-13 | 0.5d? | 35.92d | 0d | 滕斌 | 4h | 3.5 | 3.5 |
| 243 | 1.3.2.6.4 | 缺陷跟踪 | 0.12d? | 2007-03-30 | 2007-03-30 | 242 | 2007-03-13 | 2007-03-13 | 0.12d? | 35.92d | 0d | 滕斌 | 1h | 1.4 | 1.4 |
| 244 | 1.3.2.6.5 | 回归测试 | 0.25d? | 2007-03-30 | 2007-03-30 | 243 | 2007-03-13 | 2007-03-13 | 0.25d? | 35.92d |  | 滕斌 | 2h | 2.1 | 2.1 |
| 245 | 1.3.2.7 | **综合查询** | 2.12d? | 2007-04-04 | 2007-04-06 | 174 | 2007-03-20 | 2007-03-22 | 2.12d? | 30.68d |  |  | 17h | 15.4 | 15.4 |
| 246 | 1.3.2.7.1 | 熟悉新业务 | 0.25d? | 2007-04-04 | 2007-04-04 |  | 2007-03-20 | 2007-03-20 | 0.25d? | 30.68d | 0d | 滕斌 | 2h | 2.1 | 2.1 |
| 247 | 1.3.2.7.2 | 修改部分测试用例 | 0.5d? | 2007-04-04 | 2007-04-05 | 246 | 2007-03-20 | 2007-03-21 | 0.5d? | 30.68d | 0d | 滕斌 | 4h | 3.5 | 3.5 |
| 248 | 1.3.2.7.3 | 测试工作 | 0.75d? | 2007-04-05 | 2007-04-06 | 247 | 2007-03-21 | 2007-03-22 | 0.75d? | 30.68d | 0d | 滕斌 | 6h | 4.9 | 4.9 |
| 249 | 1.3.2.7.4 | 缺陷跟踪 | 0.25d? | 2007-04-06 | 2007-04-06 | 248 | 2007-03-22 | 2007-03-22 | 0.25d? | 30.68d | 0d | 滕斌 | 2h | 2.1 | 2.1 |
| 250 | 1.3.2.7.5 | 回归测试 | 0.38d? | 2007-04-06 | 2007-04-06 | 249 | 2007-03-22 | 2007-03-22 | 0.38d? | 30.68d |  | 滕斌 | 3h | 2.8 | 2.8 |
| 251 | 1.3.2.8 | 考勤的功能测试 | 2d? | 2007-04-02 | 2007-04-04 | 177SS | 2007-04-16 | 2007-04-18 | 2d? | 33.17d |  | 滕斌 | 16h | 11.9 | 11.9 |
