Schedule from MS Project, 2006-12-18 to 2007-07-10, status date 2007-07-08, costs in ￥, A marks actual dates.

## Calendars

- 标准: Mon-Fri 08:00-12:00, 13:00-17:00; Sat-Sun off. Exceptions (off unless hours are given): 2006-12-30 to 2006-12-31 08:00-12:00, 13:00-17:00, 2007-01-01 to 2007-01-03, 2007-02-16, 2007-02-19 to 2007-02-23, 2007-02-25 08:00-12:00, 13:00-17:00.

## Resources

| Resource | Group | Rate | Cost per use |
| --- | --- | --- | --- |
| 韩海东 | 开发主管 | 1.5 | 1.5 |
| 韩纪伟 | 高级程序员 | 1 | 1 |
| 汤成 | 系统分析员 | 1.5 | 1.5 |
| 何林青 | 高级程序员 | 1 | 1 |
| 奚嘉敏 | 界面工程师 | 0.7 | 0.7 |
| 滕斌 | 测试员 | 0.7 | 0.7 |
| 李翔 | 程序员 | 0.7 | 0.7 |
| 闻剑 | 高级程序员 | 1 | 1 |
| 范露玫 | 文档员 | 0.7 | 0.7 |
| 赵浪 | 测试员 | 1 |  |
| 王家欢 | 测试员 | 0.7 |  |
| 郭莉莉 | 测试员 | 0.7 |  |

## Schedule

| ID | WBS | Task | Type | Duration | Start | Finish | Predecessors | Complete | Baseline start | Baseline finish | Baseline duration | Constraint | Resources | Work | Actual work | Cost | Baseline cost | Actual cost |
| --- | --- | --- | --- | --- | --- | --- | --- | --- | --- | --- | --- | --- | --- | --- | --- | --- | --- | --- |
| 1 | 1 | **一卡通产品开发计划** |  | 141d? | 2006-12-18 A | 2007-07-10 A |  | 100% | 2006-12-18 | 2007-05-21 | 104.53d? |  |  | 7444.83h | 7444.83h | 7,819.35 | 6,259.4 | 7,819.35 |
| 2 | 1.1 | **项目管理活动** |  | 126d? | 2006-12-18 A | 2007-06-19 A |  | 100% | 2006-12-18 | 2007-05-16 | 101.49d? |  |  | 581h | 581h | 808.42 | 824.8 | 808.42 |
| 3 | 1.1.1 | 工作计划维护 |  | 37d? | 2006-12-19 A | 2007-04-11 A |  | 100% | 2007-01-04 | 2007-03-14 | 19.38d? |  | 韩海东 [118.8%]; 滕斌 | 183h | 183h | 219.38 | 226.5 | 219.38 |
| 4 | 1.1.2 | 周客户项目例会 |  | 125d | 2006-12-19 A | 2007-06-19 A |  | 100% | 2007-04-24 | 2007-05-03 | 7.5d |  | 韩海东 [50%] | 56h | 56h | 84.75 | 91.5 | 84.75 |
| 5 | 1.1.3 | 周项目组内部例会 |  | 1d | 2007-03-29 A | 2007-03-29 A |  | 100% | 2007-05-15 | 2007-05-16 | 1.25d |  | 韩海东 [37.5%] | 3h | 3h | 5.06 | 16.5 | 5.06 |
| 6 | 1.1.4 | 月度述职报告会 |  | 104d | 2007-01-04 A | 2007-06-05 A |  | 100% | 2006-12-18 | 2006-12-21 | 3.5d |  | 韩海东 [75%] | 34.5h | 34.5h | 52.88 | 44.1 | 52.88 |
| 7 | 1.1.5 | 工作周报 |  | 86d | 2007-01-29 A | 2007-06-05 A |  | 100% | 2007-05-03 | 2007-05-15 | 7.5d |  | 韩海东 [37.5%] | 27.5h | 27.5h | 41.81 | 91.5 | 41.81 |
| 8 | 1.1.6 | 工作协调 |  | 62.92d? | 2006-12-18 A | 2007-06-11 A |  | 100% | 2007-03-16 | 2007-04-24 | 25d? |  | 韩海东 [106.2%] | 249.5h | 249.5h | 375.84 | 301.5 | 375.84 |
| 9 | 1.1.7 | 配置管理 |  | 9d? | 2006-12-18 A | 2007-04-25 A |  | 100% | 2007-03-23 | 2007-04-05 | 9.38d? |  | 范露玫; 韩纪伟 [50%] | 27.5h | 27.5h | 28.7 | 53.2 | 28.7 |
| 10 | 1.2 | **项目开发活动** |  | 141d? | 2006-12-18 A | 2007-07-10 A |  | 100% | 2006-12-18 | 2007-05-21 | 104.53d? |  |  | 5650.83h | 5650.83h | 6,051.19 | 5,065 | 6,051.19 |
| 11 | 1.2.1 | **产品配套的完善** |  | 116.88d? | 2007-01-22 A | 2007-07-10 A |  | 100% | 2006-12-18 | 2007-03-23 | 63.1d? |  |  | 731h | 731h | 556.66 | 303.1 | 556.66 |
| 12 | 1.2.1.1 | **完善产品开发流程** |  | 85d? | 2007-01-25 A | 2007-05-30 A |  | 100% | 2007-03-06 | 2007-03-23 | 13d? |  |  | 49.5h | 49.5h | 77.21 | 76.3 | 77.21 |
| 13 | 1.2.1.1.1 | 版本定义和发布流程 | milestone | 0d? | 2007-03-13 A | 2007-04-03 A |  | 100% | 2007-03-13 | 2007-03-15 | 2d? |  | 范露玫 [25%] |  |  | 0.17 | 11.9 | 0.17 |
| 14 | 1.2.1.1.2 | 产品的需求跟踪方法和流程-客户化、产品需求 |  | 15.13d? | 2007-01-25 A | 2007-05-30 A |  | 100% | 2007-03-15 | 2007-03-19 | 2d? | start no earlier than 2007-01-22 | 范露玫; 韩海东 [68.8%] | 49.5h | 49.5h | 75.98 | 11.9 | 75.98 |
| 15 | 1.2.1.1.3 | 定义changelog规范和流程 | milestone | 0d? | 2007-03-19 A | 2007-04-03 A |  | 100% | 2007-03-19 | 2007-03-21 | 2d? |  | 范露玫 [25%] |  |  | 0.17 | 11.9 | 0.17 |
| 16 | 1.2.1.1.4 | 制定系统上线检查表-checklist | milestone | 0d? | 2007-03-06 A | 2007-03-06 A |  | 100% | 2007-03-06 | 2007-03-13 | 5d? |  | 范露玫 |  |  | 0.7 | 28.7 | 0.7 |
| 17 | 1.2.1.1.5 | 制定设备签收维修变更的流程 | milestone | 0d? | 2007-03-21 A | 2007-04-03 A |  | 100% | 2007-03-21 | 2007-03-23 | 2d? |  | 范露玫 [25%] |  |  | 0.17 | 11.9 | 0.17 |
| 18 | 1.2.1.2 | **完善产品配套文档** |  | 116.88d? | 2007-01-22 A | 2007-07-10 A |  | 100% | 2006-12-18 | 2007-03-06 | 50.1d? |  |  | 574h | 574h | 403.02 | 226.8 | 403.02 |
| 19 | 1.2.1.2.1 | 完善产品使用手册 |  | 74.88d? | 2007-01-22 A | 2007-07-10 A |  | 100% | 2006-12-18 | 2006-12-30 | 10d? | start no earlier than 2007-01-22 | 范露玫 | 573h | 573h | 401.8 | 56.7 | 401.8 |
| 20 | 1.2.1.2.2 | 完善产品安装维护手册 | milestone | 0d? | 2007-03-17 A | 2007-03-18 A | 19 | 100% | 2007-01-10 | 2007-01-24 | 10d? |  | 范露玫 [2.1%] |  |  | 0.01 | 56.7 | 0.01 |
| 21 | 1.2.1.2.3 | 完善各种产品开发文档 |  | 1d? | 2007-01-30 A | 2007-03-19 A |  | 100% | 2007-01-30 | 2007-02-13 | 10d? |  | 范露玫 [2.1%] | 0.5h | 0.5h | 0.36 | 56.7 | 0.36 |
| 22 | 1.2.1.2.4 | 完善各种产品实施文档 |  | 1d? | 2007-02-25 A | 2007-02-25 A |  | 100% | 2007-02-13 | 2007-03-06 | 10d? |  | 韩海东 [6.2%] | 0.5h | 0.5h | 0.84 | 56.7 | 0.84 |
| 23 | 1.2.1.3 | 整理跟踪需求 |  | 15d? | 2007-01-24 A | 2007-04-29 A |  | 100% |  |  |  |  | 滕斌 [87.5%] | 49h | 49h | 34.91 |  | 34.91 |
| 24 | 1.2.1.4 | 完善测试过程及方法 |  | 16d? | 2007-01-26 A | 2007-05-18 A |  | 100% |  |  |  | start no earlier than 2007-01-22 | 滕斌 [81.2%] | 58.5h | 58.5h | 41.52 |  | 41.52 |

| ID | WBS | Task | Type | Duration | Start | Finish | Predecessors | Complete | Baseline start | Baseline finish | Baseline duration | Constraint | Resources | Work | Actual work | Cost | Baseline cost | Actual cost |
| --- | --- | --- | --- | --- | --- | --- | --- | --- | --- | --- | --- | --- | --- | --- | --- | --- | --- | --- |
| 25 | 1.2.2 | **新系统对接** |  | 116.8d? | 2006-12-18 A | 2007-06-06 A |  | 100% | 2006-12-31 | 2007-05-18 | 91.93d? |  |  | 443h | 443h | 526.72 | 657.9 | 526.72 |
| 26 | 1.2.2.1 | **13、水控管理系统对接** |  | 90d? | 2006-12-18 A | 2007-04-30 A |  | 100% | 2006-12-31 | 2007-05-18 | 91.93d? |  |  | 201.5h | 201.5h | 156.9 | 164.4 | 156.9 |
| 27 | 1.2.2.1.1 | **三九水控的对接** |  | 90d? | 2006-12-18 A | 2007-04-30 A |  | 100% | 2006-12-31 | 2007-05-18 | 91.93d? |  |  | 184.5h | 184.5h | 144.3 | 102.9 | 144.3 |
| 28 | 1.2.2.1.1.1 | **脱机模式的对接** |  | 59d? | 2006-12-18 A | 2007-03-18 A |  | 100% | 2006-12-31 | 2007-03-16 | 47.26d? |  |  | 184.5h | 184.5h | 138.6 | 47.1 | 138.6 |
| 29 | 1.2.2.1.1.1.1 | 系统分析 |  | 3d? | 2007-02-01 A | 2007-02-28 A |  | 100% |  |  |  |  | 韩海东 [62.5%]; 汤成; 李翔 [25%]; 韩纪伟 | 8h | 8h | 13.21 |  | 13.21 |
| 30 | 1.2.2.1.1.1.2 | 写卡动态库的修改 |  | 22d? | 2006-12-21 A | 2007-02-28 A | 86 | 100% | 2006-12-31 | 2007-01-05 | 2d? |  | 李翔 [87.5%] | 68h | 68h | 48.21 | 11.9 | 48.21 |
| 31 | 1.2.2.1.1.1.3 | 钱包的转帐 |  | 25d? | 2006-12-18 A | 2007-03-05 A |  | 100% | 2007-01-05 | 2007-01-08 | 1d? |  | 李翔 [87.5%] | 87h | 87h | 61.51 | 6.3 | 61.51 |
| 32 | 1.2.2.1.1.1.4 | 流水的采集 |  | 1d? | 2007-03-17 A | 2007-03-18 A |  | 100% | 2007-03-14 | 2007-03-16 | 2d? |  | 韩纪伟 [2.1%] | 0.5h | 0.5h | 0.52 | 17 | 0.52 |
| 33 | 1.2.2.1.1.1.5 | 帐务的处理 |  | 9d? | 2006-12-27 A | 2007-03-01 A | 31 | 100% | 2007-01-08 | 2007-01-10 | 2d? |  | 李翔 [62.5%] | 21h | 21h | 15.14 | 11.9 | 15.14 |
| 34 | 1.2.2.1.1.2 | **联机模式的对接** |  | 31d? | 2007-03-19 A | 2007-04-30 A | 28 | 100% | 2007-03-16 | 2007-05-18 | 44.67d? |  |  |  |  | 5.7 | 55.8 | 5.7 |
| 35 | 1.2.2.1.1.2.1 | 对于自增长编号的规范0开始or1开始 | milestone | 0d? | 2007-03-19 A | 2007-03-19 A |  | 100% | 2007-03-16 | 2007-03-19 | 1d? |  | 汤成 |  |  | 1.5 | 13.5 | 1.5 |
| 36 | 1.2.2.1.1.2.2 | 硬件支持 | milestone | 0d? | 2007-03-20 A | 2007-03-23 A | 35 | 100% | 2007-03-19 | 2007-04-10 | 1d? |  | 汤成 |  |  | 1.5 | 13.5 | 1.5 |
| 37 | 1.2.2.1.1.2.3 | 充值扣款选择钱包 | milestone | 0d? | 2007-04-30 A | 2007-04-30 A | 36 | 100% | 2007-05-15 | 2007-05-16 | 1d? |  | 韩纪伟 [50%] |  |  | 0.5 | 9 | 0.5 |
| 38 | 1.2.2.1.1.2.4 | 发卡选择打开几个钱包 | milestone | 0d? | 2007-04-30 A | 2007-04-30 A | 37 | 100% | 2007-05-16 | 2007-05-17 | 1d? |  | 李翔 |  |  | 0.7 | 6.3 | 0.7 |
| 39 | 1.2.2.1.1.2.5 | 改造卡号和钱包号查找帐户的功能 | milestone | 0d? | 2007-04-30 A | 2007-04-30 A | 38 | 100% | 2007-05-17 | 2007-05-18 | 1d? |  | 汤成 |  |  | 1.5 | 13.5 | 1.5 |
| 40 | 1.2.2.1.2 | 凯路水控的对接 |  | 4.88d? | 2007-01-10 A | 2007-01-17 A |  | 100% | 2007-05-04 | 2007-05-15 | 5d? | start no earlier than 2007-01-10 | 李翔 | 17h | 17h | 12.6 | 61.5 | 12.6 |
| 41 | 1.2.2.2 | **11、门禁管理系统对接** |  | 111.12d? | 2006-12-21 A | 2007-06-04 A |  | 100% | 2007-01-12 | 2007-04-10 | 57.26d? |  |  | 241.5h | 241.5h | 365.44 | 183 | 365.44 |
| 42 | 1.2.2.2.1 | 汉军门禁的对接 |  | 45d? | 2006-12-21 A | 2007-05-15 A | 146, 65 | 100% | 2007-01-12 | 2007-01-19 | 5d? |  | 汤成 [112.5%] | 241.5h | 241.5h | 363.94 | 61.5 | 363.94 |
| 43 | 1.2.2.2.2 | 酬勤门禁的对接 | milestone | 0d? | 2007-06-04 A | 2007-06-04 A | 44FS+1d | 100% | 2007-03-16 | 2007-04-10 | 10d? |  | 汤成 |  |  | 1.5 | 121.5 | 1.5 |
| 44 | 1.2.2.3 | 12、通道管理系统对接 | milestone | 0d? | 2007-06-04 A | 2007-06-04 A | 42 | 100% | 2007-02-27 | 2007-03-15 | 10d? | start no earlier than 2007-06-04 | 汤成 |  |  | 1.5 | 121.5 | 1.5 |
| 45 | 1.2.2.4 | 51、机房收费系统对接 | milestone | 0d? | 2007-04-20 A | 2007-05-11 A |  | 100% | 2007-02-07 | 2007-02-12 | 3d? |  | 李翔 |  |  | 0.7 | 17.5 | 0.7 |
| 46 | 1.2.2.5 | 52、自助复印系统对接 | milestone | 0d? | 2007-04-10 A | 2007-04-20 A |  | 100% | 2007-03-22 | 2007-03-29 | 5d? |  | 李翔 [50%] |  |  | 0.35 | 28.7 | 0.35 |
| 47 | 1.2.2.6 | 53、自助洗衣系统对接 | milestone | 0d? | 2007-03-29 A | 2007-04-06 A |  | 100% | 2007-03-29 | 2007-04-05 | 5d? |  | 李翔 [12.5%] |  |  | 0.09 | 28.7 | 0.09 |
| 48 | 1.2.2.7 | 54、自助照相系统对接 | milestone | 0d? | 2007-04-05 A | 2007-04-16 A |  | 100% | 2007-04-05 | 2007-04-12 | 5d? |  | 李翔 |  |  | 0.7 | 28.7 | 0.7 |
| 49 | 1.2.2.8 | 55、电子寄存柜系统对接 | milestone | 0d? | 2007-04-12 A | 2007-04-13 A |  | 100% | 2007-04-12 | 2007-04-20 | 5d? |  | 李翔 [50%] |  |  | 0.35 | 28.7 | 0.35 |
| 50 | 1.2.2.9 | 指纹考勤的支持 | milestone | 0d? | 2007-05-08 A | 2007-06-06 A |  | 100% | 2007-03-08 | 2007-03-22 | 10d? | start no earlier than 2006-12-25 | 李翔 |  |  | 0.7 | 56.7 | 0.7 |

| ID | WBS | Task | Type | Duration | Start | Finish | Predecessors | Complete | Baseline start | Baseline finish | Baseline duration | Constraint | Resources | Work | Actual work | Cost | Baseline cost | Actual cost |
| --- | --- | --- | --- | --- | --- | --- | --- | --- | --- | --- | --- | --- | --- | --- | --- | --- | --- | --- |
| 51 | 1.2.3 | **现有系统的完善** |  | 140d? | 2006-12-18 A | 2007-07-09 A |  | 100% | 2006-12-18 | 2007-05-21 | 104.53d? |  |  | 2647h | 2647h | 2,977.45 | 3,287.73 | 2,977.45 |
| 52 | 1.2.3.1 | **美工设计** |  | 47d? | 2007-01-04 A | 2007-03-18 A |  | 100% | 2007-01-04 | 2007-01-16 | 9d? |  |  | 64.5h | 64.5h | 46.56 | 52.5 | 46.56 |
| 53 | 1.2.3.1.1 | 新版的卡面设计 | milestone | 0d? | 2007-01-04 A | 2007-03-09 A | 55 | 100% | 2007-01-04 | 2007-01-08 | 3d? | start no earlier than 2007-01-01 | 奚嘉敏 |  |  | 0.7 | 17.5 | 0.7 |
| 54 | 1.2.3.1.2 | c/s架构程序的美工设计 |  | 1d? | 2007-03-17 A | 2007-03-18 A | 53 | 100% | 2007-01-09 | 2007-01-11 | 3d? | start no earlier than 2007-01-11 | 奚嘉敏 [2.1%] | 0.5h | 0.5h | 0.36 | 17.5 | 0.36 |
| 55 | 1.2.3.1.3 | c/s架构的安装封面 |  | 8d? | 2007-01-10 A | 2007-01-24 A |  | 100% | 2007-01-12 | 2007-01-16 | 3d? | start no earlier than 2007-01-10 | 奚嘉敏 | 64h | 64h | 45.5 | 17.5 | 45.5 |
| 56 | 1.2.3.2 | **01、拍照打卡系统完善** |  | 104d? | 2006-12-21 A | 2007-05-23 A |  | 100% | 2007-01-15 | 2007-02-12 | 20d? |  |  | 178h | 178h | 180 | 162 | 180 |
| 57 | 1.2.3.2.1 | 拍照系统改版 |  | 18d? | 2006-12-21 A | 2007-05-23 A |  | 100% | 2007-01-15 | 2007-01-29 | 10d? |  | 韩纪伟 | 101.5h | 101.5h | 102.5 | 81 | 102.5 |
| 58 | 1.2.3.2.2 | 卡片打印系统改版 |  | 13d? | 2007-01-22 A | 2007-03-20 A | 57 | 100% | 2007-01-29 | 2007-02-12 | 10d? |  | 韩纪伟 | 76.5h | 76.5h | 77.5 | 81 | 77.5 |
| 59 | 1.2.3.3 | **04、会议签到管理系统** |  | 97.88d? | 2007-01-10 A | 2007-06-03 A |  | 100% | 2007-01-05 | 2007-03-01 | 34.02d? |  |  | 415.5h | 415.5h | 418 | 122 | 418 |
| 60 | 1.2.3.3.1 | 实现脱机会议签到 |  | 58.88d? | 2007-01-10 A | 2007-06-03 A |  | 100% | 2007-01-05 | 2007-01-26 | 15d? | start no earlier than 2007-01-10 | 何林青 [150%] | 415.5h | 415.5h | 417 | 121 | 417 |
| 61 | 1.2.3.3.2 | 整合海事大学的需求 | milestone | 0d? | 2007-03-01 A | 2007-03-01 A |  | 100% | 2007-03-01 | 2007-03-01 | 0d? | start no earlier than 2007-03-01 | 何林青 |  |  | 1 | 1 | 1 |
| 62 | 1.2.3.4 | **11、门禁管理系统完善** |  | 99d? | 2006-12-21 A | 2007-05-16 A |  | 100% | 2006-12-18 | 2007-03-23 | 63.86d? |  |  | 120.5h | 120.5h | 165.25 | 414.5 | 165.25 |
| 63 | 1.2.3.4.1 | 总体设计 |  | 6d? | 2006-12-21 A | 2007-04-02 A |  | 100% | 2006-12-18 | 2006-12-21 | 3.33d? | start no earlier than 2006-12-18 | 韩海东 [37.5%]; 韩纪伟; 汤成 | 28h | 28h | 45.06 | 110.67 | 45.06 |
| 64 | 1.2.3.4.2 | 通道机的对接设计 | milestone | 0d? | 2007-01-25 A | 2007-01-25 A | 63 | 100% | 2006-12-21 | 2006-12-22 | 1.67d? |  | 韩海东; 韩纪伟; 汤成 |  |  | 4 | 44 | 4 |
| 65 | 1.2.3.4.3 | 开关门状态的监控 | milestone | 0d? | 2007-01-24 A | 2007-01-30 A | 64 | 100% | 2006-12-26 | 2006-12-28 | 1.5d? |  | 汤成; 何林青 |  |  | 2.5 | 32.5 | 2.5 |
| 66 | 1.2.3.4.4 | 前台界面功能整改 |  | 14d? | 2007-03-27 A | 2007-04-26 A |  | 100% | 2006-12-29 | 2007-01-15 | 10d? |  | 韩纪伟 | 91h | 91h | 92 | 81 | 92 |
| 67 | 1.2.3.4.5 | 重复卡检查报警-监控 |  | 1d? | 2007-02-13 A | 2007-02-25 A | 65 | 100% | 2006-12-28 | 2006-12-31 | 3d? |  | 何林青 [6.2%] | 0.5h | 0.5h | 0.56 | 25 | 0.56 |
| 68 | 1.2.3.4.6 | 门未关报警-监控 |  | 1d? | 2007-02-25 A | 2007-02-25 A | 67 | 100% | 2006-12-31 | 2007-01-04 | 1d? |  | 何林青 [6.2%] | 0.5h | 0.5h | 0.56 | 9 | 0.56 |
| 69 | 1.2.3.4.7 | 外力破坏报警-监控 |  | 1d? | 2007-02-25 A | 2007-02-25 A | 68 | 100% | 2007-01-04 | 2007-01-05 | 1d? |  | 何林青 [6.2%] | 0.5h | 0.5h | 0.56 | 9 | 0.56 |
| 70 | 1.2.3.4.8 | 时间段排程设计 | milestone | 0d? | 2007-02-13 A | 2007-02-14 A | 63 | 100% | 2006-12-21 | 2006-12-21 | 0.67d? |  | 韩纪伟; 汤成 |  |  | 2.5 | 15.83 | 2.5 |
| 71 | 1.2.3.4.9 | 刷卡、密码双重认证 | milestone | 0d? | 2007-05-10 A | 2007-05-11 A | 70 | 100% | 2007-03-16 | 2007-03-20 | 1d? |  | 韩纪伟; 汤成 |  |  | 2.5 | 12.5 | 2.5 |
| 72 | 1.2.3.4.10 | 指纹、虹膜多重认证 | milestone | 0d? | 2007-05-14 A | 2007-05-14 A | 71 | 100% | 2007-03-20 | 2007-03-21 | 0.5d? |  | 韩纪伟; 汤成 |  |  | 2.5 | 12.5 | 2.5 |
| 73 | 1.2.3.4.11 | 反潜回功能的设计 | milestone | 0d? | 2007-05-14 A | 2007-05-14 A | 72 | 100% | 2007-03-21 | 2007-03-21 | 0.5d? |  | 韩纪伟; 汤成 |  |  | 2.5 | 12.5 | 2.5 |
| 74 | 1.2.3.4.12 | 路线功能的设计 | milestone | 0d? | 2007-05-15 A | 2007-05-15 A | 73 | 100% | 2007-03-21 | 2007-03-22 | 0.5d? |  | 韩纪伟; 汤成 |  |  | 2.5 | 12.5 | 2.5 |
| 75 | 1.2.3.4.13 | 区域功能的设计 | milestone | 0d? | 2007-05-15 A | 2007-05-15 A | 74 | 100% | 2007-03-22 | 2007-03-22 | 0.5d? |  | 韩纪伟; 汤成 |  |  | 2.5 | 12.5 | 2.5 |
| 76 | 1.2.3.4.14 | 主副卡的设计 | milestone | 0d? | 2007-05-16 A | 2007-05-16 A | 75 | 100% | 2007-03-22 | 2007-03-23 | 0.5d? |  | 韩纪伟; 汤成 |  |  | 2.5 | 12.5 | 2.5 |
| 77 | 1.2.3.4.15 | 胁迫码的设计 | milestone | 0d? | 2007-05-16 A | 2007-05-16 A | 76 | 100% | 2007-03-23 | 2007-03-23 | 0.5d? |  | 韩纪伟; 汤成 |  |  | 2.5 | 12.5 | 2.5 |

| ID | WBS | Task | Type | Duration | Start | Finish | Predecessors | Complete | Baseline start | Baseline finish | Baseline duration | Constraint | Resources | Work | Actual work | Cost | Baseline cost | Actual cost |
| --- | --- | --- | --- | --- | --- | --- | --- | --- | --- | --- | --- | --- | --- | --- | --- | --- | --- | --- |
| 78 | 1.2.3.5 | **02、综合管理系统完善** |  | 118.88d? | 2006-12-18 A | 2007-06-08 A |  | 100% | 2006-12-18 | 2007-05-21 | 104.4d? |  |  | 656h | 656h | 772.05 | 1,335.53 | 772.05 |
| 79 | 1.2.3.5.1 | 业务重新命名 | milestone | 0d? | 2007-04-20 A | 2007-04-20 A | 80 | 100% | 2006-12-26 | 2006-12-29 | 2.5d? | start no earlier than 2006-12-25 | 韩海东 [25%]; 韩纪伟 [25%] |  |  | 0.62 | 52.5 | 0.62 |
| 80 | 1.2.3.5.2 | 业务分支合并 |  | 45d? | 2006-12-25 A | 2007-06-06 A |  | 100% | 2006-12-25 | 2006-12-26 | 1.6d? | start no earlier than 2006-12-25 | 韩纪伟 [93.8%]; 汤成; 何林青 [50%]; 李翔 [50%]; 韩海东 [50%] | 165.5h | 165.5h | 182.69 | 78.66 | 182.69 |
| 81 | 1.2.3.5.3 | **drtp、gcc、bcc+bu的升级** |  | 33d? | 2007-04-09 A | 2007-05-23 A |  | 100% | 2007-05-02 | 2007-05-04 | 1.67d? |  |  | 83h | 83h | 95.84 | 13.8 | 95.84 |
| 82 | 1.2.3.5.3.1 | bcc+bu架构的升级 |  | 9d? | 2007-04-09 A | 2007-05-23 A |  | 100% | 2007-05-02 | 2007-05-03 | 0.83d? |  | 汤成 [62.5%]; 闻剑 | 43h | 43h | 53.94 | 6.9 | 53.94 |
| 83 | 1.2.3.5.3.2 | 多个bcc的改造 |  | 7d? | 2007-04-18 A | 2007-04-30 A |  | 100% | 2007-05-03 | 2007-05-04 | 0.83d? |  | 汤成 [60%]; 闻剑 | 40h | 40h | 41.9 | 6.9 | 41.9 |
| 84 | 1.2.3.5.4 | 照片库和客户表的整合完善 | milestone | 0d? | 2007-05-28 A | 2007-05-29 A | 112 | 100% | 2007-04-11 | 2007-04-12 | 1d? |  | 韩海东; 汤成; 韩纪伟 |  |  | 4 | 36 | 4 |
| 85 | 1.2.3.5.5 | 增加结算科目的划拨业务 |  | 6d? | 2007-03-07 A | 2007-03-26 A | 84 | 100% | 2007-04-12 | 2007-04-13 | 1d? |  | 韩纪伟; 李翔 [75%] | 27h | 27h | 23.43 | 22.5 | 23.43 |
| 86 | 1.2.3.5.6 | 写卡失败机制的完善-借用字段 |  | 4d? | 2006-12-28 A | 2007-01-12 A |  | 100% | 2006-12-26 | 2006-12-31 | 5d? |  | 李翔 [87.5%] | 17h | 17h | 12.51 | 28.7 | 12.51 |
| 87 | 1.2.3.5.7 | 修改直接取帐户表部门、名字的问题 |  | 5d? | 2007-03-09 A | 2007-03-19 A | 85 | 100% | 2007-04-13 | 2007-04-17 | 1.5d? |  | 韩纪伟; 李翔 [50%] | 11h | 11h | 9.05 | 32.5 | 9.05 |
| 88 | 1.2.3.5.8 | **设备参数的更改记录** |  | 14.83d? | 2007-03-27 A | 2007-04-17 A | 87 | 100% | 2007-04-17 | 2007-04-18 | 1.33d? |  |  |  |  | 8.43 | 46.93 | 8.43 |
| 89 | 1.2.3.5.8.1 | 搭伙费比例 | milestone | 0d? | 2007-03-27 A | 2007-04-16 A |  | 100% | 2007-04-17 | 2007-04-17 | 0.33d? |  | 汤成 [37.5%]; 李翔; 韩纪伟 [37.5%] |  |  | 1.64 | 11.73 | 1.64 |
| 90 | 1.2.3.5.8.2 | 单次、累积大额参数 | milestone | 0d? | 2007-04-16 A | 2007-04-16 A | 89 | 100% | 2007-04-17 | 2007-04-18 | 0.33d? |  | 韩纪伟 [37.5%]; 汤成 [37.5%]; 李翔 |  |  | 1.64 | 11.73 | 1.64 |
| 91 | 1.2.3.5.8.3 | 卡权限控制参数 | milestone | 0d? | 2007-04-16 A | 2007-04-16 A | 90 | 100% | 2007-04-18 | 2007-04-18 | 0.33d? |  | 韩纪伟 [37.5%]; 汤成; 李翔 |  |  | 2.58 | 11.73 | 2.58 |
| 92 | 1.2.3.5.8.4 | 设备更换的考虑 | milestone | 0d? | 2007-04-17 A | 2007-04-17 A | 91 | 100% | 2007-04-18 | 2007-04-18 | 0.33d? |  | 韩纪伟 [37.5%]; 汤成; 李翔 |  |  | 2.58 | 11.73 | 2.58 |
| 93 | 1.2.3.5.9 | 经费本的充值查询功能完善 |  | 4d? | 2007-03-08 A | 2007-03-23 A |  | 100% |  |  |  | start no earlier than 2007-03-12 | 韩纪伟; 李翔 [50%] | 12h | 12h | 9.75 |  | 9.75 |
| 94 | 1.2.3.5.10 | 补办校园卡的收费选项、容易出错 |  | 1d? | 2007-03-12 A | 2007-03-23 A | 93 | 100% | 2007-04-18 | 2007-04-19 | 0.83d? |  | 韩纪伟 [56.2%] | 4.5h | 4.5h | 5.06 | 4.6 | 5.06 |
| 95 | 1.2.3.5.11 | 商户结构调整的生效问题 | milestone | 0d? | 2007-05-08 A | 2007-05-17 A | 79 | 100% | 2006-12-29 | 2006-12-31 | 2d? | start no earlier than 2006-12-25 | 韩海东 [50%] |  |  | 0.75 | 25.5 | 0.75 |
| 96 | 1.2.3.5.12 | 设备商户的分配的不同时间段判断有问题 | milestone | 0d? | 2007-04-30 A | 2007-05-16 A | 42 | 100% | 2007-01-19 | 2007-01-23 | 2d? |  | 汤成 [50%] |  |  | 0.75 | 25.5 | 0.75 |
| 97 | 1.2.3.5.13 | 数据库的备份方案 |  | 10d? | 2007-04-27 A | 2007-06-08 A |  | 100% | 2007-01-23 | 2007-01-25 | 2.5d? | start no earlier than 2007-04-27 | 韩海东; 汤成 [40%]; 闻剑 | 62h | 62h | 65.1 | 63 | 65.1 |
| 98 | 1.2.3.5.14 | 增加新生卡类别，区别正式卡 |  | 1d? | 2007-03-26 A | 2007-04-09 A | 94 | 100% | 2007-04-19 | 2007-04-20 | 1d? |  | 汤成 [50%]; 韩纪伟 [25%] | 4h | 4h | 7 | 22.5 | 7 |
| 99 | 1.2.3.5.15 | 前后台功能的整体美化和修改 |  | 2d? | 2007-05-08 A | 2007-05-09 A | 97 | 100% | 2007-01-25 | 2007-01-29 | 2d? |  | 汤成 [40%]; 韩纪伟 | 16h | 16h | 17.6 | 25.5 | 17.6 |
| 100 | 1.2.3.5.16 | 补助功能的查询和下发错误的处理 | milestone | 0d? | 2007-04-10 A | 2007-04-10 A | 98 | 100% | 2007-04-20 | 2007-04-23 | 1d? |  | 韩纪伟 [12.5%]; 汤成 [50%] |  |  | 0.88 | 22.5 | 0.88 |
| 101 | 1.2.3.5.17 | 授权卡的改造和业务调整 |  | 13d? | 2007-01-10 A | 2007-01-29 A |  | 100% | 2007-01-10 | 2007-01-17 | 5d? | start no earlier than 2007-01-08 | 李翔 [75%]; 汤成 [50%] | 29h | 29h | 21.57 | 28.7 | 21.57 |
| 102 | 1.2.3.5.18 | 卡片密钥体系的设计 |  | 1d? | 2007-01-30 A | 2007-05-15 A | 101 | 100% | 2007-01-17 | 2007-01-17 | 0d? |  | 李翔 [50%] | 4h | 4h | 3.15 | 0.7 | 3.15 |

| ID | WBS | Task | Type | Duration | Start | Finish | Predecessors | Complete | Baseline start | Baseline finish | Baseline duration | Constraint | Resources | Work | Actual work | Cost | Baseline cost | Actual cost |
| --- | --- | --- | --- | --- | --- | --- | --- | --- | --- | --- | --- | --- | --- | --- | --- | --- | --- | --- |
| 103 | 1.2.3.5.19 | **报表的完善** |  | 118.88d? | 2006-12-18 A | 2007-06-08 A |  | 100% | 2007-02-12 | 2007-03-01 | 8d? |  |  | 22.5h | 22.5h | 26.71 | 119 | 26.71 |
| 104 | 1.2.3.5.19.1 | 增加餐次报表和设置功能 |  | 0.88d? | 2007-02-08 A | 2007-02-11 A |  | 100% | 2007-02-12 | 2007-02-14 | 2.5d? | start no earlier than 2007-01-08 | 韩海东 [3.1%]; 韩纪伟 [2.1%] | 0.5h | 0.5h | 0.82 | 52.5 | 0.82 |
| 105 | 1.2.3.5.19.2 | 完善资产负债表-修改科目 |  | 2d? | 2006-12-18 A | 2007-04-18 A |  | 100% | 2007-02-14 | 2007-02-25 | 1.5d? |  | 韩海东 [16.7%]; 韩纪伟 [62.5%] | 9h | 9h | 11.88 | 32.5 | 11.88 |
| 106 | 1.2.3.5.19.3 | 报表格式的统一修改 |  | 3d? | 2007-01-12 A | 2007-06-08 A |  | 100% | 2007-02-25 | 2007-02-27 | 2d? |  | 韩纪伟 | 12.5h | 12.5h | 13.5 | 17 | 13.5 |
| 107 | 1.2.3.5.19.4 | 支持不同种类的打印机 |  | 1d? | 2007-03-17 A | 2007-03-18 A | 106 | 100% | 2007-02-27 | 2007-03-01 | 2d? |  | 韩纪伟 [2.1%] | 0.5h | 0.5h | 0.52 | 17 | 0.52 |
| 108 | 1.2.3.5.20 | **帐务模块的调整** |  | 22d? | 2007-03-26 A | 2007-04-24 A | 100 | 100% | 2007-04-23 | 2007-04-26 | 3d? |  |  | 73h | 73h | 76.5 | 45.4 | 76.5 |
| 109 | 1.2.3.5.20.1 | 前台配置界面 |  | 8d? | 2007-03-26 A | 2007-04-23 A |  | 100% | 2007-04-23 | 2007-04-26 | 3d? |  | 韩纪伟; 闻剑 [50%] | 32h | 32h | 33.5 | 25 | 33.5 |
| 110 | 1.2.3.5.20.2 | 后台支持配置的增删改查 |  | 10d? | 2007-03-26 A | 2007-04-20 A |  | 100% | 2007-04-23 | 2007-04-24 | 0.83d? |  | 闻剑 | 33h | 33h | 34 | 6.9 | 34 |
| 111 | 1.2.3.5.20.3 | 后台搭伙费部分改造 |  | 1d? | 2007-04-20 A | 2007-04-24 A | 110 | 100% | 2007-04-24 | 2007-04-25 | 1d? |  | 闻剑 | 8h | 8h | 9 | 13.5 | 9 |
| 112 | 1.2.3.5.21 | **科目和交易类型的设置** |  | 72.76d? | 2007-02-09 A | 2007-05-29 A | 103 | 100% | 2007-03-01 | 2007-04-11 | 29.76d? |  |  | 42h | 42h | 68.34 | 108.33 | 68.34 |
| 113 | 1.2.3.5.21.1 | 后台支持交易代码和科目的是否可用状态 | milestone | 0d? | 2007-05-29 A | 2007-05-29 A |  | 100% | 2007-04-10 | 2007-04-11 | 1d? |  | 汤成 [25%] |  |  | 0.38 | 13.5 | 0.38 |
| 114 | 1.2.3.5.21.2 | 增加二级科目的设置 |  | 10d? | 2007-02-09 A | 2007-04-30 A |  | 100% | 2007-03-01 | 2007-03-02 | 1.67d? |  | 汤成; 韩海东 [106.2%]; 韩纪伟 [37.5%] | 42h | 42h | 66.47 | 57.33 | 66.47 |
| 115 | 1.2.3.5.21.3 | 多数业务的调整 | milestone | 0d? | 2007-04-02 A | 2007-04-02 A |  | 100% | 2007-03-15 | 2007-04-03 | 3d? |  | 汤成 |  |  | 1.5 | 37.5 | 1.5 |
| 116 | 1.2.3.5.22 | **前台动态显示字段** |  | 57d? | 2007-03-06 A | 2007-05-23 A | 108 | 100% | 2007-04-26 | 2007-05-08 | 8d? |  |  | 19.5h | 19.5h | 16.85 | 85.8 | 16.85 |
| 117 | 1.2.3.5.22.1 | 查询界面的改造 | milestone | 0d? | 2007-04-25 A | 2007-05-16 A |  | 100% | 2007-04-26 | 2007-05-01 | 3d? |  | 韩纪伟 [50%] |  |  | 0.5 | 25 | 0.5 |
| 118 | 1.2.3.5.22.2 | 增加维护界面 | milestone | 0d? | 2007-05-17 A | 2007-05-23 A | 117 | 100% | 2007-05-01 | 2007-05-08 | 5d? |  | 韩纪伟 [50%] |  |  | 0.5 | 41 | 0.5 |
| 119 | 1.2.3.5.22.3 | 检查接口，入库 |  | 4d? | 2007-03-06 A | 2007-03-09 A |  | 100% | 2007-04-26 | 2007-04-27 | 1d? |  | 范露玫 | 19.5h | 19.5h | 14.35 | 6.3 | 14.35 |
| 120 | 1.2.3.5.22.4 | 增加4个后台功能 | milestone | 0d? | 2007-04-02 A | 2007-04-25 A |  | 100% | 2007-04-26 | 2007-04-27 | 1d? |  | 汤成 |  |  | 1.5 | 13.5 | 1.5 |
| 121 | 1.2.3.5.23 | **非业务交易的日志保存和查看** |  | 14d? | 2007-05-08 A | 2007-05-25 A | 116 | 100% | 2007-05-08 | 2007-05-15 | 5d? |  |  | 8h | 8h | 11.2 | 72.7 | 11.2 |
| 122 | 1.2.3.5.23.1 | 检查接口，入库 | milestone | 0d? | 2007-05-24 A | 2007-05-24 A |  | 100% | 2007-05-08 | 2007-05-15 | 5d? |  | 范露玫 |  |  | 0.7 | 28.7 | 0.7 |
| 123 | 1.2.3.5.23.2 | 在bu入口保存buffer |  | 1d? | 2007-05-08 A | 2007-05-08 A |  | 100% | 2007-05-08 | 2007-05-09 | 1d? |  | 闻剑 | 8h | 8h | 9 | 13.5 | 9 |
| 124 | 1.2.3.5.23.3 | 前台显示内容 | milestone | 0d? | 2007-05-24 A | 2007-05-25 A |  | 100% | 2007-05-08 | 2007-05-10 | 2d? |  | 韩纪伟 [50%] |  |  | 0.5 | 17 | 0.5 |
| 125 | 1.2.3.5.23.4 | 后台解析内容 | milestone | 0d? | 2007-05-24 A | 2007-05-24 A | 123 | 100% | 2007-05-09 | 2007-05-10 | 1d? |  | 闻剑 |  |  | 1 | 13.5 | 1 |
| 126 | 1.2.3.5.24 | 增加操作员号和工作站号 | milestone | 0d? | 2007-05-28 A | 2007-05-28 A | 121 | 100% | 2007-05-15 | 2007-05-16 | 0.5d? |  | 汤成; 韩纪伟 |  |  | 2.5 | 12.5 | 2.5 |

| ID | WBS | Task | Type | Duration | Start | Finish | Predecessors | Complete | Baseline start | Baseline finish | Baseline duration | Constraint | Resources | Work | Actual work | Cost | Baseline cost | Actual cost |
| --- | --- | --- | --- | --- | --- | --- | --- | --- | --- | --- | --- | --- | --- | --- | --- | --- | --- | --- |
| 127 | 1.2.3.5.25 | **定时任务的管理** |  | 0d? | 2007-05-28 A | 2007-05-28 A | 126 | 100% | 2007-05-16 | 2007-05-16 | 0d? |  |  |  |  | 2.5 | 2.5 | 2.5 |
| 128 | 1.2.3.5.25.1 | 前台增加修改查询界面 | milestone | 0d? | 2007-05-28 A | 2007-05-28 A |  | 100% | 2007-05-16 | 2007-05-16 | 0d? |  | 韩纪伟 |  |  | 1 | 1 | 1 |
| 129 | 1.2.3.5.25.2 | 后台增加读取和修改contab的功能 | milestone | 0d? | 2007-05-28 A | 2007-05-28 A |  | 100% | 2007-05-16 | 2007-05-16 | 0d? |  | 汤成 |  |  | 1.5 | 1.5 | 1.5 |
| 130 | 1.2.3.5.26 | syslog的统一 | milestone | 0d? | 2007-02-06 A | 2007-03-02 A | 102 | 100% | 2007-01-24 | 2007-02-07 | 10d? |  | 李翔 |  |  | 0.7 | 56.7 | 0.7 |
| 131 | 1.2.3.5.27 | 时钟同步方案 | milestone | 0d? | 2007-05-03 A | 2007-05-03 A | 99 | 100% | 2007-01-29 | 2007-01-30 | 1d? |  | 汤成 |  |  | 1.5 | 13.5 | 1.5 |
| 132 | 1.2.3.5.28 | 自动化升级 | milestone | 0d? | 2007-02-01 A | 2007-02-25 A |  | 100% | 2006-12-18 | 2006-12-25 | 5d? | start no earlier than 2007-02-01 | 闻剑 |  |  | 1 | 41 | 1 |
| 133 | 1.2.3.5.29 | **系统安装** |  | 11.38d? | 2007-05-03 A | 2007-05-20 A | 131 | 100% | 2007-01-30 | 2007-02-01 | 2d? |  |  | 3.5h | 3.5h | 6.62 | 26.5 | 6.62 |
| 134 | 1.2.3.5.29.1 | b/s*.war部署 | milestone | 0d? | 2007-05-04 A | 2007-05-04 A |  | 100% | 2007-01-30 | 2007-01-30 | 0d? |  | 何林青 |  |  | 1 | 1 | 1 |
| 135 | 1.2.3.5.29.2 | 后台的安装.o和.bnd |  | 2d? | 2007-05-03 A | 2007-05-20 A |  | 100% | 2007-01-30 | 2007-02-01 | 2d? |  | 汤成 [25%] | 3.5h | 3.5h | 5.62 | 25.5 | 5.62 |
| 136 | 1.2.3.5.30 | **blk的完善** |  | 14d? | 2007-03-23 A | 2007-04-11 A | 135 | 100% | 2007-02-01 | 2007-02-06 | 3d? |  |  | 10.5h | 10.5h | 17.44 | 39 | 17.44 |
| 137 | 1.2.3.5.30.1 | 提高可配置性 |  | 2d? | 2007-03-23 A | 2007-04-11 A |  | 100% | 2007-02-01 | 2007-02-01 | 0d? |  | 汤成 [25%] | 3.5h | 3.5h | 5.62 | 1.5 | 5.62 |
| 138 | 1.2.3.5.30.2 | 解决cpu占用率的问题 |  | 1d? | 2007-03-26 A | 2007-03-27 A |  | 100% | 2007-02-01 | 2007-02-06 | 3d? |  | 汤成 [87.5%] | 7h | 7h | 11.81 | 37.5 | 11.81 |
| 139 | 1.2.3.5.31 | 前台的所有的错误提示统一风格 |  | 1d? | 2007-02-01 A | 2007-02-12 A |  | 100% | 2006-12-31 | 2007-01-10 | 5d? | start no earlier than 2007-02-01 | 闻剑; 韩海东 [2.1%] | 0.5h | 0.5h | 1.78 | 41 | 1.78 |
| 140 | 1.2.3.5.32 | 多帐户结算的修改 | milestone | 0d? | 2007-05-17 A | 2007-05-17 A | 95 | 100% | 2006-12-31 | 2007-01-08 | 3d? |  | 韩海东 [50%] |  |  | 0.75 | 37.5 | 0.75 |
| 141 | 1.2.3.5.33 | 卡库不平和个人账户不平的调整 |  | 9d? | 2007-01-26 A | 2007-02-11 A | 140 | 100% | 2007-01-08 | 2007-01-11 | 3d? |  | 韩海东 [87.5%] | 41.5h | 41.5h | 63.56 | 37.5 | 63.56 |
| 142 | 1.2.3.5.34 | 查询数据的筛选-控制操作权限 | milestone | 0d? | 2007-05-08 A | 2007-05-08 A | 128 | 100% | 2007-05-16 | 2007-05-21 | 3.5d? |  | 韩纪伟; 汤成 |  |  | 2.5 | 52.5 | 2.5 |
| 143 | 1.2.3.5.35 | 卡片使用张数的统计 | milestone | 0d? | 2007-04-09 A | 2007-04-09 A |  | 100% | 2007-01-11 | 2007-01-11 | 0d? | start no earlier than 2007-04-09 | 韩海东 |  |  | 1.5 | 1.5 | 1.5 |
| 144 | 1.2.3.5.36 | 完善独立核算和非独立核算的机制 | milestone | 0d? | 2007-03-16 A | 2007-04-09 A |  | 100% | 2007-03-16 | 2007-03-20 | 0.79d? | start no earlier than 2007-02-01 | 韩海东 [27.3%] |  |  | 0.41 | 11 | 0.41 |
| 145 | 1.2.3.5.37 | 对接的v23设备中途拔卡的处理 | milestone | 0d? | 2007-05-11 A | 2007-05-11 A | 138 | 100% | 2007-02-06 | 2007-02-06 | 0d? |  | 汤成 |  |  | 1.5 | 1.5 | 1.5 |
| 146 | 1.2.3.6 | 16、通用网关系统的完善 |  | 35d? | 2006-12-18 A | 2007-05-18 A | 65 | 100% | 2006-12-28 | 2007-01-12 | 10d? |  | 汤成 [106.2%] | 151h | 151h | 228.09 | 121.5 | 228.09 |
| 147 | 1.2.3.7 | **06、银行圈存系统完善** |  | 73d? | 2007-02-12 A | 2007-05-30 A |  | 100% | 2007-01-11 | 2007-03-05 | 32.72d? |  |  | 52h | 52h | 38.98 | 131.7 | 38.98 |
| 148 | 1.2.3.7.1 | 圈存机的业务监控-心跳 | milestone | 0d? | 2007-02-12 A | 2007-05-21 A | 143 | 100% | 2007-01-11 | 2007-01-12 | 1d? |  | 韩海东 [25%] |  |  | 0.38 | 13.5 | 0.38 |
| 149 | 1.2.3.7.2 | 银行通讯接口和自身业务的分离 | milestone | 0d? | 2007-05-08 A | 2007-05-08 A |  | 100% | 2007-01-12 | 2007-01-19 | 5d? | start no earlier than 2007-05-08 | 韩海东 |  |  | 1.5 | 61.5 | 1.5 |
| 150 | 1.2.3.7.3 | 结构的调整 |  | 11d? | 2007-04-26 A | 2007-05-30 A | 45 | 100% | 2007-02-12 | 2007-03-05 | 10d? |  | 李翔 | 52h | 52h | 37.1 | 56.7 | 37.1 |

| ID | WBS | Task | Type | Duration | Start | Finish | Predecessors | Complete | Baseline start | Baseline finish | Baseline duration | Resources | Work | Actual work | Cost | Baseline cost | Actual cost |
| --- | --- | --- | --- | --- | --- | --- | --- | --- | --- | --- | --- | --- | --- | --- | --- | --- | --- |
| 151 | 1.2.3.8 | **05、监控管理系统完善** |  | 108d? | 2006-12-18 A | 2007-05-24 A |  | 100% | 2007-01-26 | 2007-03-13 | 27.5d? |  | 44h | 44h | 52.5 | 236 | 52.5 |
| 152 | 1.2.3.8.1 | **现有业务的整改** |  | 10d? | 2007-02-05 A | 2007-02-25 A |  | 100% | 2007-01-26 | 2007-02-08 | 9.5d? |  | 27h | 27h | 28.38 | 83 | 28.38 |
| 153 | 1.2.3.8.1.1 | 数据字典的改造 |  | 1d? | 2007-02-15 A | 2007-02-25 A |  | 100% | 2007-01-26 | 2007-01-29 | 1d? | 何林青 [6.2%] | 0.5h | 0.5h | 0.56 | 9 | 0.56 |
| 154 | 1.2.3.8.1.2 | gis操作的易用性改造（提示/点击进入等） |  | 1d? | 2007-02-25 A | 2007-02-25 A | 153 | 100% | 2007-01-29 | 2007-01-31 | 2d? | 何林青 [6.2%] | 0.5h | 0.5h | 0.56 | 17 | 0.56 |
| 155 | 1.2.3.8.1.3 | 系统菜单专业化/布局合理化 |  | 1d? | 2007-02-25 A | 2007-02-25 A | 154 | 100% | 2007-01-31 | 2007-02-01 | 1d? | 何林青 [6.2%] | 0.5h | 0.5h | 0.56 | 9 | 0.56 |
| 156 | 1.2.3.8.1.4 | 图例位置合理化 |  | 1d? | 2007-02-25 A | 2007-02-25 A | 155 | 100% | 2007-02-01 | 2007-02-02 | 1d? | 何林青 [6.2%] | 0.5h | 0.5h | 0.56 | 9 | 0.56 |
| 157 | 1.2.3.8.1.5 | 图例用的图片优化 |  | 1d? | 2007-02-25 A | 2007-02-25 A | 156 | 100% | 2007-02-02 | 2007-02-02 | 0.5d? | 何林青 [6.2%] | 0.5h | 0.5h | 0.56 | 5 | 0.56 |
| 158 | 1.2.3.8.1.6 | 前台增加系统监控日志展现 |  | 1d? | 2007-02-25 A | 2007-02-25 A | 157 | 100% | 2007-02-02 | 2007-02-06 | 2d? | 何林青 [6.2%] | 0.5h | 0.5h | 0.56 | 17 | 0.56 |
| 159 | 1.2.3.8.1.7 | 丢数采集业务的完善-存在缺陷 |  | 3d? | 2007-02-05 A | 2007-02-07 A | 158 | 100% | 2007-02-06 | 2007-02-08 | 2d? | 何林青 | 24h | 24h | 25 | 17 | 25 |
| 160 | 1.2.3.8.2 | **系统输出功能增强** |  | 98d? | 2006-12-30 A | 2007-05-24 A | 152 | 100% | 2007-02-08 | 2007-03-06 | 13d? |  |  |  | 3 | 108 | 3 |
| 161 | 1.2.3.8.2.1 | **增加分析报表** |  | 98d? | 2006-12-30 A | 2007-05-24 A |  | 100% | 2007-02-08 | 2007-03-06 | 13d? |  |  |  | 2 | 107 | 2 |
| 162 | 1.2.3.8.2.1.1 | 设备状态变化报表 | milestone | 0d? | 2006-12-30 A | 2007-05-14 A |  | 100% | 2007-02-08 | 2007-02-15 | 5d? | 何林青 [50%] |  |  | 0.5 | 41 | 0.5 |
| 163 | 1.2.3.8.2.1.2 | 流水异常统计 | milestone | 0d? | 2007-05-15 A | 2007-05-21 A | 162 | 100% | 2007-02-15 | 2007-03-01 | 5d? | 何林青 [50%] |  |  | 0.5 | 41 | 0.5 |
| 164 | 1.2.3.8.2.1.3 | 其他可能的报表 | milestone | 0d? | 2007-05-22 A | 2007-05-24 A | 163 | 100% | 2007-03-01 | 2007-03-06 | 3d? | 何林青 |  |  | 1 | 25 | 1 |
| 165 | 1.2.3.8.2.2 | 增加查询结果印功能 | milestone | 0d? | 2007-04-16 A | 2007-04-16 A | 161 | 100% | 2007-03-06 | 2007-03-06 | 0d? | 何林青 |  |  | 1 | 1 | 1 |
| 166 | 1.2.3.8.3 | **新增业务** |  | 80d? | 2006-12-18 A | 2007-04-16 A | 165 | 100% | 2007-03-06 | 2007-03-13 | 5d? |  | 17h | 17h | 21.12 | 45 | 21.12 |
| 167 | 1.2.3.8.3.1 | 增加对服务器的监控 |  | 1d? | 2006-12-18 A | 2007-01-04 A |  | 100% | 2007-03-06 | 2007-03-06 | 0d? | 何林青 [75%] | 6h | 6h | 6.75 | 1 | 6.75 |
| 168 | 1.2.3.8.3.2 | 增加对数据库的监控 |  | 1d? | 2006-12-19 A | 2006-12-19 A | 167 | 100% | 2007-03-06 | 2007-03-06 | 0d? | 何林青 [62.5%] | 5h | 5h | 5.62 | 1 | 5.62 |
| 169 | 1.2.3.8.3.3 | 增加对软件/服务端口的监控 |  | 1d? | 2006-12-20 A | 2007-01-05 A | 168 | 100% | 2007-03-06 | 2007-03-06 | 0d? | 何林青 [75%] | 6h | 6h | 6.75 | 1 | 6.75 |
| 170 | 1.2.3.8.3.4 | 增加对通讯平台的监控 | milestone | 0d? | 2007-04-16 A | 2007-04-16 A | 169 | 100% | 2007-03-06 | 2007-03-06 | 0d? | 何林青 |  |  | 1 | 1 | 1 |
| 171 | 1.2.3.8.3.5 | 对接系统的监控-图书馆 | milestone | 0d? | 2007-04-16 A | 2007-04-16 A | 170 | 100% | 2007-03-06 | 2007-03-13 | 5d? | 何林青 |  |  | 1 | 41 | 1 |
| 172 | 1.2.3.9 | **10、多媒体查询系统改版** |  | 61d? | 2007-02-08 A | 2007-05-10 A |  | 100% | 2007-01-16 | 2007-04-17 | 60d? |  | 229.5h | 229.5h | 231.5 | 482 | 231.5 |
| 173 | 1.2.3.9.1 | 多媒体前台部分 |  | 19d? | 2007-02-08 A | 2007-04-30 A |  | 100% | 2007-01-16 | 2007-03-06 | 30d? | 何林青 | 127.5h | 127.5h | 128.5 | 241 | 128.5 |
| 174 | 1.2.3.9.2 | 多媒体后台部分 |  | 16d? | 2007-02-12 A | 2007-05-10 A |  | 100% | 2007-03-06 | 2007-04-17 | 30d? | 何林青 | 102h | 102h | 103 | 241 | 103 |

| ID | WBS | Task | Type | Duration | Start | Finish | Predecessors | Complete | Baseline start | Baseline finish | Baseline duration | Constraint | Resources | Work | Actual work | Cost | Baseline cost | Actual cost |
| --- | --- | --- | --- | --- | --- | --- | --- | --- | --- | --- | --- | --- | --- | --- | --- | --- | --- | --- |
| 175 | 1.2.3.10 | **08、领导查询系统完善** |  | 3.28d? | 2007-03-29 A | 2007-04-03 A |  | 100% | 2007-03-29 | 2007-04-02 | 2d? |  |  |  |  | 1.08 | 18 | 1.08 |
| 176 | 1.2.3.10.1 | 经费本充值次数 | milestone | 0d? | 2007-03-29 A | 2007-04-02 A |  | 100% | 2007-03-29 | 2007-03-30 | 1d? | start no earlier than 2006-12-25 | 韩纪伟 [69.1%] |  |  | 0.69 | 9 | 0.69 |
| 177 | 1.2.3.10.2 | 增加个人、设备的明细记录查询 | milestone | 0d? | 2007-04-03 A | 2007-04-03 A | 176 | 100% | 2007-03-30 | 2007-04-02 | 1d? |  | 韩纪伟 [39.2%] |  |  | 0.39 | 9 | 0.39 |
| 178 | 1.2.3.11 | **09、综合查询系统完善** |  | 3.12d? | 2007-05-01 A | 2007-05-04 A | 166 | 100% | 2007-03-27 | 2007-04-04 | 6d? |  |  |  |  | 2 | 50 | 2 |
| 179 | 1.2.3.11.1 | 展现现代教育中心上机流水 | milestone | 0d? | 2007-05-01 A | 2007-05-01 A |  | 100% | 2007-03-27 | 2007-03-30 | 3d? |  | 何林青 |  |  | 1 | 25 | 1 |
| 180 | 1.2.3.11.2 | 展现光华楼门禁流水 | milestone | 0d? | 2007-05-04 A | 2007-05-04 A |  | 100% | 2007-03-30 | 2007-04-04 | 3d? |  | 何林青 |  |  | 1 | 25 | 1 |
| 181 | 1.2.3.12 | 07、考勤管理系统完善 |  | 13d? | 2006-12-18 A | 2007-03-19 A |  | 100% | 2007-04-02 | 2007-05-15 | 10d? |  | 韩纪伟 | 49h | 49h | 50 | 81 | 50 |
| 182 | 1.2.3.13 | webservice通用接口 |  | 4d? | 2007-05-09 A | 2007-05-24 A | 178 | 100% | 2007-04-04 | 2007-04-18 | 10d? |  | 何林青 | 19.5h | 19.5h | 20.5 | 81 | 20.5 |
| 183 | 1.2.3.14 | **00、临时增补任务** |  | 70.88d? | 2007-04-02 A | 2007-07-09 A |  | 100% |  |  |  |  |  | 667.5h | 667.5h | 770.94 |  | 770.94 |
| 184 | 1.2.3.14.1 | 卡操作的DEMO程序 |  | 4.88d? | 2007-04-02 A | 2007-04-23 A |  | 100% |  |  |  | start no earlier than 2007-04-02 | 李翔 | 24h | 24h | 17.5 |  | 17.5 |
| 185 | 1.2.3.14.2 | 嵌入脚本的二次开发模式 |  | 4d? | 2007-04-02 A | 2007-04-10 A |  | 100% |  |  |  | start no earlier than 2007-04-02 | 李翔 | 28h | 28h | 20.3 |  | 20.3 |
| 186 | 1.2.3.14.3 | 回归测试bug修改 |  | 35d? | 2007-05-21 A | 2007-07-09 A |  | 100% |  |  |  | start no earlier than 2007-06-04 | 韩海东 [162.5%]; 韩纪伟; 汤成 [150%]; 闻剑; 李翔; 何林青 | 615.5h | 615.5h | 733.14 |  | 733.14 |
| 187 | 1.2.4 | **上线系统维护和变更** |  | 140d? | 2006-12-18 A | 2007-07-09 A |  | 100% | 2006-12-19 | 2007-03-20 | 59.17d? |  |  | 1288.5h | 1288.5h | 1,435.51 | 477.91 | 1,435.51 |
| 188 | 1.2.4.1 | 复旦大学 |  | 89.51d? | 2006-12-18 A | 2007-07-09 A |  | 100% | 2006-12-19 | 2007-03-09 | 17.14d? |  | 韩海东 [164.3%]; 韩纪伟; 汤成; 何林青; 李翔; 闻剑; 范露玫 | 634.5h | 634.5h | 685.11 | 176.54 | 685.11 |
| 189 | 1.2.4.2 | 上海大学 |  | 45d? | 2006-12-25 A | 2007-06-14 A |  | 100% | 2007-01-10 | 2007-03-19 | 10d? |  | 汤成; 何林青 [37.5%]; 李翔; 闻剑; 范露玫; 韩纪伟; 韩海东 [112.5%] | 241h | 241h | 295.16 | 83.3 | 295.16 |
| 190 | 1.2.4.3 | 泰州大学 |  | 6d? | 2007-01-11 A | 2007-02-27 A |  | 100% | 2007-01-12 | 2007-03-20 | 9.9d? |  | 韩纪伟 [12.5%]; 汤成; 何林青; 李翔 [75%]; 范露玫; 韩海东 [50%] | 19h | 19h | 22.5 | 83.81 | 22.5 |
| 191 | 1.2.4.4 | 理工大学 |  | 68d? | 2006-12-21 A | 2007-06-22 A |  | 100% | 2006-12-22 | 2007-03-15 | 14.41d? |  | 韩海东 [75%]; 韩纪伟; 汤成 [143.8%]; 何林青 [25%]; 李翔; 闻剑; 范露玫 | 394h | 394h | 432.73 | 134.26 | 432.73 |
| 192 | 1.2.5 | **系统培训** |  | 79.02d? | 2007-02-01 A | 2007-05-30 A |  | 100% | 2007-02-07 | 2007-05-02 | 54.78d? |  |  | 8.33h | 8.33h | 9.51 | 246.4 | 9.51 |
| 193 | 1.2.5.1 | 一卡通结算相关培训 | milestone | 0d? | 2007-02-01 A | 2007-05-18 A |  | 100% | 2007-03-05 | 2007-03-16 | 5d? | start no earlier than 2007-02-01 | 韩海东 [50%]; 李翔 |  |  | 1.45 | 46.2 | 1.45 |
| 194 | 1.2.5.2 | 一卡通web应用培训 | milestone | 0d? | 2007-05-08 A | 2007-05-28 A |  | 100% | 2007-03-19 | 2007-03-29 | 8d? | start no earlier than 2007-02-01 | 韩纪伟; 何林青 [50%] |  |  | 1.5 | 82 | 1.5 |
| 195 | 1.2.5.3 | 一卡通产品体系架构培训 | milestone | 0d? | 2007-04-18 A | 2007-05-30 A |  | 100% | 2007-04-18 | 2007-05-02 | 5d? | start no earlier than 2007-02-01 | 汤成 [25%] |  |  | 0.38 | 61.5 | 0.38 |
| 196 | 1.2.5.4 | 一卡通卡务业务相关培训 |  | 2.25d? | 2007-02-07 A | 2007-05-17 A |  | 100% | 2007-02-07 | 2007-03-02 | 10d? | start no earlier than 2007-02-01 | 滕斌 [50%] | 8.33h | 8.33h | 6.18 | 56.7 | 6.18 |
| 197 | 1.2.6 | 其他 |  | 91d? | 2006-12-18 A | 2007-06-08 A |  | 100% | 2006-12-18 | 2007-03-06 | 8.57d? |  | 韩海东 [112.5%]; 韩纪伟; 汤成 [125%]; 何林青 [87.5%]; 李翔; 闻剑 [75%]; 滕斌 | 533h | 533h | 545.34 | 91.97 | 545.34 |
| 198 | 1.3 | **项目测试活动** |  | 113d? | 2007-01-24 A | 2007-07-06 A |  | 100% | 2006-12-18 | 2007-04-16 | 79.7d? |  |  | 1213h | 1213h | 959.74 | 369.6 | 959.74 |
| 199 | 1.3.1 | **新对接系统测试** |  | 84.12d? | 2007-01-31 A | 2007-06-05 A |  | 100% | 2007-01-22 | 2007-04-16 | 55.57d? |  |  | 75h | 75h | 62.94 | 86.1 | 62.94 |
| 200 | 1.3.1.1 | **水控系统** |  | 50d? | 2007-01-31 A | 2007-04-17 A | 26SS | 100% | 2007-01-23 | 2007-03-21 | 36.62d? |  |  | 53h | 53h | 38.33 | 23.8 | 38.33 |
| 201 | 1.3.1.1.1 | 业务熟悉 |  | 2d? | 2007-01-31 A | 2007-02-07 A |  | 100% | 2007-03-21 | 2007-03-21 | 0.5d? | start no earlier than 2007-05-18 | 滕斌 [25%] | 3h | 3h | 2.28 | 3.5 | 2.28 |
| 202 | 1.3.1.1.2 | 测试工作 |  | 9d? | 2007-02-06 A | 2007-02-27 A |  | 100% | 2007-03-16 | 2007-03-20 | 2d? | start no earlier than 2007-05-21 | 滕斌 [75%] | 38h | 38h | 27.13 | 11.9 | 27.13 |
| 203 | 1.3.1.1.3 | 验证缺陷修改 |  | 4d? | 2007-02-09 A | 2007-03-01 A |  | 100% | 2007-01-23 | 2007-01-23 | 0.5d? | start no earlier than 2007-05-25 | 滕斌 [25%] | 6h | 6h | 4.38 | 3.5 | 4.38 |
| 204 | 1.3.1.1.4 | 回归测试 |  | 2d? | 2007-04-16 A | 2007-04-17 A |  | 100% | 2007-03-20 | 2007-03-21 | 0.75d? | start no earlier than 2007-05-28 | 滕斌 [50%] | 6h | 6h | 4.55 | 4.9 | 4.55 |

| ID | WBS | Task | Type | Duration | Start | Finish | Predecessors | Complete | Baseline start | Baseline finish | Baseline duration | Constraint | Resources | Work | Actual work | Cost | Baseline cost | Actual cost |
| --- | --- | --- | --- | --- | --- | --- | --- | --- | --- | --- | --- | --- | --- | --- | --- | --- | --- | --- |
| 205 | 1.3.1.2 | **门禁系统** |  | 72.12d? | 2007-02-25 A | 2007-06-05 A | 41SS | 100% | 2007-01-22 | 2007-03-14 | 32.75d? |  |  | 22h | 22h | 20.48 | 30.8 | 20.48 |
| 206 | 1.3.1.2.1 | **汉军系统** |  | 54d? | 2007-02-25 A | 2007-05-09 A |  | 100% |  |  |  |  |  | 22h | 22h | 17.32 |  | 17.32 |
| 207 | 1.3.1.2.1.1 | 业务熟悉 |  | 5d? | 2007-02-27 A | 2007-05-09 A |  | 100% | 2007-01-22 | 2007-01-23 | 1d? | start no earlier than 2007-02-27 | 滕斌 [75%] | 14h | 14h | 10.32 | 6.3 | 10.32 |
| 208 | 1.3.1.2.1.2 | 修改、编写测试用例 | milestone | 0d? | 2007-03-01 A | 2007-04-09 A |  | 100% |  |  |  | start no earlier than 2007-03-01 | 滕斌 [25%] |  |  | 0.17 |  | 0.17 |
| 209 | 1.3.1.2.1.3 | 测试工作 |  | 3d? | 2007-03-05 A | 2007-04-11 A |  | 100% | 2007-03-08 | 2007-03-13 | 2.5d? | start no earlier than 2007-03-05 | 滕斌 [50%] | 8h | 8h | 5.95 | 14.7 | 5.95 |
| 210 | 1.3.1.2.1.4 | 验证缺陷修改 | milestone | 0d? | 2007-02-25 A | 2007-04-02 A |  | 100% | 2007-03-14 | 2007-03-14 | 0.5d? |  | 滕斌 [25%] |  |  | 0.17 | 3.5 | 0.17 |
| 211 | 1.3.1.2.1.5 | 回归测试 | milestone | 0d? | 2007-03-26 A | 2007-03-30 A |  | 100% | 2007-03-13 | 2007-03-14 | 1d? | start no earlier than 2007-03-26 | 滕斌 |  |  | 0.7 | 6.3 | 0.7 |
| 212 | 1.3.1.2.2 | **酬勤系统** |  | 12d? | 2007-05-18 A | 2007-06-05 A |  | 100% |  |  |  |  |  |  |  | 3.15 |  | 3.15 |
| 213 | 1.3.1.2.2.1 | 业务熟悉 | milestone | 0d? | 2007-05-18 A | 2007-05-21 A |  | 100% |  |  |  | start no earlier than 2007-05-18 | 滕斌 |  |  | 0.7 |  | 0.7 |
| 214 | 1.3.1.2.2.2 | 修改、编写测试用例 | milestone | 0d? | 2007-05-22 A | 2007-05-23 A |  | 100% |  |  |  | start no earlier than 2007-05-22 | 滕斌 |  |  | 0.7 |  | 0.7 |
| 215 | 1.3.1.2.2.3 | 测试工作 | milestone | 0d? | 2007-05-24 A | 2007-05-28 A |  | 100% |  |  |  | start no earlier than 2007-05-24 | 滕斌 |  |  | 0.7 |  | 0.7 |
| 216 | 1.3.1.2.2.4 | 验证缺陷修改 | milestone | 0d? | 2007-05-30 A | 2007-05-31 A |  | 100% |  |  |  | start no earlier than 2007-05-30 | 滕斌 [50%] |  |  | 0.35 |  | 0.35 |
| 217 | 1.3.1.2.2.5 | 回归测试 | milestone | 0d? | 2007-06-04 A | 2007-06-05 A |  | 100% |  |  |  | start no earlier than 2007-06-04 | 滕斌 |  |  | 0.7 |  | 0.7 |
| 218 | 1.3.1.3 | 机房软件的对接测试 | milestone | 0d? | 2007-04-25 A | 2007-04-25 A | 45SS | 100% | 2007-02-07 | 2007-02-08 | 1d? | start no earlier than 2007-04-25 | 滕斌 |  |  | 0.7 | 6.3 | 0.7 |
| 219 | 1.3.1.4 | 通道机的对接测试 | milestone | 0d? | 2007-06-04 A | 2007-06-05 A | 44SS | 100% | 2007-02-27 | 2007-02-28 | 1d? | start no earlier than 2007-02-16 | 滕斌 [42%] |  |  | 0.29 | 6.3 | 0.29 |
| 220 | 1.3.1.5 | 自助复印测试 | milestone | 0d? | 2007-04-10 A | 2007-04-16 A | 46SS | 100% | 2007-03-26 | 2007-03-26 | 0.5d? | start no earlier than 2007-03-30 | 滕斌 |  |  | 0.7 | 3.5 | 0.7 |
| 221 | 1.3.1.6 | 自助洗衣测试 | milestone | 0d? | 2007-04-06 A | 2007-04-17 A | 47SS+3h | 100% | 2007-04-02 | 2007-04-06 | 0.5d? | start no earlier than 2007-04-06 | 滕斌 |  |  | 0.7 | 3.5 | 0.7 |
| 222 | 1.3.1.7 | 自助照相测试 | milestone | 0d? | 2007-04-10 A | 2007-04-17 A | 48SS | 100% | 2007-04-09 | 2007-04-10 | 1d? | start no earlier than 2007-04-10 | 滕斌 |  |  | 0.7 | 6.3 | 0.7 |
| 223 | 1.3.1.8 | 电子寄存柜测试 | milestone | 0d? | 2007-04-23 A | 2007-04-23 A | 49SS | 100% | 2007-04-16 | 2007-04-16 | 0.5d? | start no earlier than 2007-04-23 | 滕斌 |  |  | 0.7 | 3.5 | 0.7 |
| 224 | 1.3.1.9 | 指纹考勤的支持测试 | milestone | 0d? | 2007-03-23 A | 2007-05-09 A | 50SS+1d | 100% | 2007-03-09 | 2007-03-09 | 0.25d? | start no earlier than 2007-03-23 | 滕斌 [50%] |  |  | 0.35 | 2.1 | 0.35 |
| 225 | 1.3.2 | **现有系统的测试工作** |  | 113d? | 2007-01-24 A | 2007-07-06 A |  | 100% | 2006-12-18 | 2007-04-06 | 73.72d? |  |  | 1138h | 1138h | 896.8 | 283.5 | 896.8 |
| 226 | 1.3.2.1 | **拍照打卡** |  | 101d? | 2007-01-24 A | 2007-06-20 A | 56SS | 100% | 2007-01-23 | 2007-02-07 | 11d? |  |  | 45h | 45h | 33.08 | 9.8 | 33.08 |
| 227 | 1.3.2.1.1 | 业务熟悉 |  | 3d? | 2007-01-25 A | 2007-04-18 A |  | 100% | 2007-01-23 | 2007-01-23 | 0.25d? | start no earlier than 2007-03-09 | 滕斌 [25%] | 5h | 5h | 3.68 | 2.1 | 3.68 |
| 228 | 1.3.2.1.2 | 编写测试用例 |  | 4d? | 2007-01-24 A | 2007-03-12 A | 227 | 100% |  |  |  |  | 滕斌 [25%] | 8h | 8h | 5.78 |  | 5.78 |
| 229 | 1.3.2.1.3 | 测试工作 |  | 5d? | 2007-01-26 A | 2007-06-20 A | 228 | 100% | 2007-01-25 | 2007-01-25 | 0.5d? |  | 滕斌 | 28h | 28h | 20.3 | 3.5 | 20.3 |
| 230 | 1.3.2.1.4 | 验证缺陷修改 | milestone | 0d? | 2007-03-16 A | 2007-04-02 A |  | 100% | 2007-01-25 | 2007-01-25 | 0.25d? | start no earlier than 2007-03-16 | 滕斌 [50%] |  |  | 0.35 | 2.1 | 0.35 |
| 231 | 1.3.2.1.5 | 回归测试 |  | 2d? | 2007-04-02 A | 2007-04-27 A | 230 | 100% | 2007-01-26 | 2007-02-07 | 0.25d? |  | 滕斌 [25%] | 4h | 4h | 2.98 | 2.1 | 2.98 |

| ID | WBS | Task | Type | Duration | Start | Finish | Predecessors | Complete | Baseline start | Baseline finish | Baseline duration | Constraint | Resources | Work | Actual work | Cost | Baseline cost | Actual cost |
| --- | --- | --- | --- | --- | --- | --- | --- | --- | --- | --- | --- | --- | --- | --- | --- | --- | --- | --- |
| 232 | 1.3.2.2 | **前后台业务** |  | 112d? | 2007-01-25 A | 2007-07-06 A | 78SS | 100% | 2006-12-18 | 2007-03-08 | 52.62d? |  |  | 957h | 957h | 755.75 | 161.7 | 755.75 |
| 233 | 1.3.2.2.1 | 熟悉业务改动以及新增功能 |  | 12d? | 2007-05-03 A | 2007-06-29 A |  | 100% | 2006-12-18 | 2006-12-22 | 4d? | start no earlier than 2007-05-03 | 滕斌 [50%]; 赵浪; 王家欢 [50%]; 郭莉莉 | 96h | 96h | 74.75 | 23.1 | 74.75 |
| 234 | 1.3.2.2.2 | 各个测试模块功能、业务罗列 |  | 2d? | 2007-05-31 A | 2007-06-06 A | 233 | 100% | 2006-12-22 | 2006-12-27 | 3d? |  | 滕斌 | 16h | 16h | 11.9 | 17.5 | 11.9 |
| 235 | 1.3.2.2.3 | 部分模块制定测试方法 | milestone | 0d? | 2007-06-07 A | 2007-06-08 A | 234 | 100% | 2006-12-27 | 2006-12-29 | 2d? |  | 滕斌 [33.3%] |  |  | 0.23 | 11.9 | 0.23 |
| 236 | 1.3.2.2.4 | 测试用例设计 |  | 2d? | 2007-05-14 A | 2007-06-11 A | 235 | 100% | 2006-12-29 | 2007-01-04 | 3d? |  | 滕斌; 赵浪; 王家欢 [75%]; 郭莉莉 | 12h | 12h | 9.1 | 17.5 | 9.1 |
| 237 | 1.3.2.2.5 | 执行测试 |  | 45d? | 2007-01-25 A | 2007-07-06 A | 236 | 100% | 2007-01-04 | 2007-01-18 | 10d? | finish no earlier than 2007-06-15 | 滕斌; 赵浪 [125%]; 王家欢 [131.2%]; 郭莉莉 [137.5%] | 814h | 814h | 645.5 | 56.7 | 645.5 |
| 238 | 1.3.2.2.6 | 验证缺陷修改 |  | 2d? | 2007-06-07 A | 2007-06-08 A |  | 100% | 2007-01-18 | 2007-01-22 | 2d? | start no earlier than 2007-06-11 | 滕斌 | 16h | 16h | 11.9 | 11.9 | 11.9 |
| 239 | 1.3.2.2.7 | 回归测试 |  | 1d? | 2007-04-12 A | 2007-04-12 A | 238 | 100% | 2007-03-02 | 2007-03-08 | 4d? | finish no earlier than 2007-06-13 | 滕斌 [37.5%] | 3h | 3h | 2.36 | 23.1 | 2.36 |
| 240 | 1.3.2.3 | **圈存完善测试** |  | 30.77d? | 2007-03-05 A | 2007-04-16 A | 147SS | 100% | 2007-03-15 | 2007-03-16 | 1.12d? |  |  |  |  | 2.01 | 9.1 | 2.01 |
| 241 | 1.3.2.3.1 | 业务熟悉 | milestone | 0d? | 2007-03-05 A | 2007-04-02 A |  | 100% | 2007-03-15 | 2007-03-15 | 0.25d? | start no earlier than 2007-03-05 | 滕斌 [50%] |  |  | 0.35 | 2.1 | 0.35 |
| 242 | 1.3.2.3.2 | 修改、编写测试用例 | milestone | 0d? | 2007-03-06 A | 2007-04-02 A |  | 100% |  |  |  | start no earlier than 2007-03-06 | 滕斌 [12.5%] |  |  | 0.09 |  | 0.09 |
| 243 | 1.3.2.3.3 | 测试工作 | milestone | 0d? | 2007-03-12 A | 2007-04-02 A |  | 100% | 2007-03-15 | 2007-03-15 | 0.5d? | start no earlier than 2007-03-12 | 滕斌 [25%] |  |  | 0.17 | 3.5 | 0.17 |
| 244 | 1.3.2.3.4 | 缺陷跟踪 | milestone | 0d? | 2007-03-19 A | 2007-04-02 A |  | 100% | 2007-03-16 | 2007-03-16 | 0.12d? | start no earlier than 2007-03-19 | 滕斌 |  |  | 0.7 | 1.4 | 0.7 |
| 245 | 1.3.2.3.5 | 回归测试 | milestone | 0d? | 2007-04-16 A | 2007-04-16 A |  | 100% | 2007-03-15 | 2007-03-15 | 0.25d? |  | 滕斌 |  |  | 0.7 | 2.1 | 0.7 |
| 246 | 1.3.2.4 | **监控系统** |  | 25.88d? | 2007-02-28 A | 2007-04-04 A | 151SS | 100% | 2007-01-26 | 2007-02-07 | 8.5d? |  |  |  |  | 1.4 | 51.1 | 1.4 |
| 247 | 1.3.2.4.1 | 新业务熟悉 | milestone | 0d? | 2007-02-28 A | 2007-04-02 A |  | 100% | 2007-01-26 | 2007-01-26 | 0.5d? | start no earlier than 2007-02-28 | 滕斌 [25%] |  |  | 0.17 | 3.5 | 0.17 |
| 248 | 1.3.2.4.2 | 修改现有的部分测试用例 | milestone | 0d? | 2007-03-12 A | 2007-04-03 A | 247 | 100% | 2007-01-26 | 2007-01-30 | 1.5d? |  | 滕斌 [25%] |  |  | 0.17 | 9.1 | 0.17 |
| 249 | 1.3.2.4.3 | 测试工作 | milestone | 0d? | 2007-04-04 A | 2007-04-04 A | 248 | 100% | 2007-01-30 | 2007-02-05 | 4d? |  | 滕斌 [25%] |  |  | 0.17 | 23.1 | 0.17 |
| 250 | 1.3.2.4.4 | 缺陷跟踪 | milestone | 0d? | 2007-03-15 A | 2007-04-02 A |  | 100% | 2007-02-05 | 2007-02-05 | 0.5d? | start no earlier than 2007-03-15 | 滕斌 [25%] |  |  | 0.17 | 3.5 | 0.17 |
| 251 | 1.3.2.4.5 | 回归测试 | milestone | 0d? | 2007-04-02 A | 2007-04-02 A | 250 | 100% | 2007-02-05 | 2007-02-07 | 2d? |  | 滕斌 |  |  | 0.7 | 11.9 | 0.7 |
| 252 | 1.3.2.5 | **多媒体查询系统** |  | 11.25d? | 2007-04-26 A | 2007-05-11 A | 172SS | 100% | 2007-01-22 | 2007-03-20 | 36.62d? |  |  | 14h | 14h | 12.25 | 14 | 12.25 |
| 253 | 1.3.2.5.1 | 业务熟悉 |  | 2d? | 2007-05-09 A | 2007-05-10 A |  | 100% | 2007-01-22 | 2007-01-22 | 0.25d? | start no earlier than 2007-04-17 | 滕斌 | 14h | 14h | 10.5 | 2.1 | 10.5 |
| 254 | 1.3.2.5.2 | 测试工作 | milestone | 0d? | 2007-05-11 A | 2007-05-11 A | 253 | 100% | 2007-01-24 | 2007-01-24 | 1d? |  | 滕斌 |  |  | 0.7 | 6.3 | 0.7 |
| 255 | 1.3.2.5.3 | 缺陷跟踪 | milestone | 0d? | 2007-04-26 A | 2007-04-26 A |  | 100% | 2007-01-25 | 2007-01-25 | 0.25d? | start no earlier than 2007-04-26 | 滕斌 |  |  | 0.7 | 2.1 | 0.7 |
| 256 | 1.3.2.5.4 | 回归测试 | milestone | 0d? | 2007-05-07 A | 2007-05-07 A | 255 | 100% | 2007-03-20 | 2007-03-20 | 0.5d? | start no earlier than 2007-05-07 | 滕斌 [50%] |  |  | 0.35 | 3.5 | 0.35 |

| ID | WBS | Task | Type | Duration | Start | Finish | Predecessors | Complete | Baseline start | Baseline finish | Baseline duration | Constraint | Resources | Work | Actual work | Cost | Baseline cost | Actual cost |
| --- | --- | --- | --- | --- | --- | --- | --- | --- | --- | --- | --- | --- | --- | --- | --- | --- | --- | --- |
| 257 | 1.3.2.6 | **领导查询** |  | 9.38d? | 2007-04-03 A | 2007-04-16 A | 175SS | 100% | 2007-03-29 | 2007-03-30 | 1.25d? |  |  |  |  | 3.5 | 10.5 | 3.5 |
| 258 | 1.3.2.6.1 | 熟悉新业务 | milestone | 0d? | 2007-04-03 A | 2007-04-03 A |  | 100% | 2007-03-29 | 2007-03-29 | 0.12d? | start no earlier than 2007-04-03 | 滕斌 |  |  | 0.7 | 1.4 | 0.7 |
| 259 | 1.3.2.6.2 | 修改部分测试用例 | milestone | 0d? | 2007-04-03 A | 2007-04-03 A | 258 | 100% | 2007-03-29 | 2007-03-29 | 0.25d? |  | 滕斌 |  |  | 0.7 | 2.1 | 0.7 |
| 260 | 1.3.2.6.3 | 测试工作 | milestone | 0d? | 2007-04-03 A | 2007-04-03 A | 259 | 100% | 2007-03-29 | 2007-03-30 | 0.5d? |  | 滕斌 |  |  | 0.7 | 3.5 | 0.7 |
| 261 | 1.3.2.6.4 | 缺陷跟踪 | milestone | 0d? | 2007-04-16 A | 2007-04-16 A |  | 100% | 2007-03-30 | 2007-03-30 | 0.12d? | start no earlier than 2007-04-16 | 滕斌 |  |  | 0.7 | 1.4 | 0.7 |
| 262 | 1.3.2.6.5 | 回归测试 | milestone | 0d? | 2007-04-16 A | 2007-04-16 A | 261 | 100% | 2007-03-30 | 2007-03-30 | 0.25d? |  | 滕斌 |  |  | 0.7 | 2.1 | 0.7 |
| 263 | 1.3.2.7 | **综合查询** |  | 32.88d? | 2007-05-09 A | 2007-06-22 A | 178 | 100% | 2007-04-04 | 2007-04-06 | 2.12d? |  |  | 8h | 8h | 7.53 | 15.4 | 7.53 |
| 264 | 1.3.2.7.1 | 熟悉新业务 | milestone | 0d? | 2007-05-09 A | 2007-05-09 A |  | 100% | 2007-04-04 | 2007-04-04 | 0.25d? |  | 滕斌 [50%] |  |  | 0.35 | 2.1 | 0.35 |
| 265 | 1.3.2.7.2 | 修改部分测试用例 | milestone | 0d? | 2007-05-09 A | 2007-05-09 A | 264 | 100% | 2007-04-04 | 2007-04-05 | 0.5d? |  | 滕斌 [25%] |  |  | 0.17 | 3.5 | 0.17 |
| 266 | 1.3.2.7.3 | 测试工作 | milestone | 0d? | 2007-05-09 A | 2007-05-10 A | 265 | 100% | 2007-04-05 | 2007-04-06 | 0.75d? |  | 滕斌 [50%] |  |  | 0.35 | 4.9 | 0.35 |
| 267 | 1.3.2.7.4 | 缺陷跟踪 | milestone | 0d? | 2007-05-09 A | 2007-05-09 A |  | 100% | 2007-04-06 | 2007-04-06 | 0.25d? | start no earlier than 2007-03-29 | 滕斌 [50%] |  |  | 0.35 | 2.1 | 0.35 |
| 268 | 1.3.2.7.5 | 回归测试 |  | 1d? | 2007-05-09 A | 2007-06-22 A | 267 | 100% | 2007-04-06 | 2007-04-06 | 0.38d? |  | 滕斌 | 8h | 8h | 6.3 | 2.8 | 6.3 |
| 269 | 1.3.2.8 | 考勤的功能测试 | milestone | 0d? | 2007-02-02 A | 2007-04-02 A | 181SS | 100% | 2007-04-02 | 2007-04-04 | 2d? | start no earlier than 2007-02-02 | 滕斌 [12.5%] |  |  | 0.09 | 11.9 | 0.09 |
| 270 | 1.3.2.9 | 会议签到功能测试 |  | 16d? | 2007-01-31 A | 2007-06-17 A |  | 100% |  |  |  | start no earlier than 2007-01-30 | 滕斌 | 94h | 94h | 66.5 |  | 66.5 |
| 271 | 1.3.2.10 | 手持机系统测试 |  | 4d? | 2007-03-29 A | 2007-04-03 A |  | 100% |  |  |  | start no earlier than 2007-03-26 | 滕斌 | 20h | 20h | 14.7 |  | 14.7 |
