# 金仕达一卡通V3.0

Schedule from MS Project, 2008-04-14 to 2008-10-31, status date 2005-01-20, costs in ￥, A marks actual dates.
复旦金仕达

## Calendars

- 标准: Mon-Fri 09:00-12:30, 13:30-18:00; Sat-Sun off. Exceptions (off unless hours are given): 2008-09-27 to 2008-09-28 08:00-12:00, 13:00-17:00.

## Resources

| Resource | Rate |
| --- | --- |
| 何林青 | 1 |
| 韩纪伟 | 1 |
| 李珣 | 1 |
| 闻剑 | 1 |
| 王家欢 | 1 |
| 郭莉莉 | 1 |
| 范路玫 | 1 |
| 高级程序员1 | 1 |

## Schedule

| ID | WBS | Task | Type | Duration | Start | Finish | Predecessors | Complete | Remaining | Baseline start | Baseline finish | Baseline duration | Total slack | Constraint | Deadline | Resources | Work | Actual work | Cost | Baseline cost | Actual cost | Text2 | Text20 |
| --- | --- | --- | --- | --- | --- | --- | --- | --- | --- | --- | --- | --- | --- | --- | --- | --- | --- | --- | --- | --- | --- | --- | --- |
| 1 | 1 | **管理活动** |  | 147d? | 2008-04-14 09:00 A | 2008-10-31 18:00 |  | 14% | 126.98d? | 2005-01-06 09:00 | 2005-03-29 11:00 | 58.25d? | 0d |  |  |  | 416.06h | 148.1h | 416.06 | 8 | 148.1 |  |  |
| 2 | 1.1 | **项目初始** |  | 7d? | 2008-04-14 09:00 A | 2008-04-22 18:00 A |  | 100% |  | 2005-01-19 09:00 | 2005-01-20 18:00 | 2d? |  |  |  |  | 33h | 33h | 33 | 8 | 33 |  |  |
| 3 | 1.1.1 | **项目范围确定** |  | 5d? | 2008-04-14 09:00 A | 2008-04-18 18:00 A |  | 100% |  | 2005-01-19 09:00 | 2005-01-20 18:00 | 2d? |  |  |  |  | 25h | 25h | 25 | 8 | 25 |  |  |
| 4 | 1.1.1.1 | 用户需求说明书 |  | 4d? | 2008-04-14 09:00 A | 2008-04-17 18:00 A |  | 100% |  | 2005-01-19 09:00 | 2005-01-20 18:00 | 2d? |  |  |  | 闻剑 [75%] | 23h | 23h | 23 | 8 | 23 |  |  |
| 5 | 1.1.1.2 | 生命周期选择 |  | 0.5d? | 2008-04-18 09:00 A | 2008-04-18 14:00 A | 4 | 100% |  | 2005-01-20 09:00 | 2005-01-20 18:00 | 1d? |  |  |  | 闻剑 [25%] | 1h | 1h | 1 |  | 1 |  |  |
| 6 | 1.1.1.3 | 项目交付物清单 |  | 0.5d? | 2008-04-18 14:00 A | 2008-04-18 18:00 A | 5 | 100% |  | 2005-01-20 09:00 | 2005-01-20 18:00 | 1d? |  | finish no earlier than 2008-04-09 18:00 |  | 闻剑 [25%] | 1h | 1h | 1 |  | 1 | 交付物清单 |  |
| 7 | 1.1.2 | **项目初步估算** |  | 2d? | 2008-04-21 09:00 A | 2008-04-22 18:00 A |  | 100% |  | 2005-01-20 09:00 | 2005-01-20 18:00 | 1d? |  |  |  |  | 8h | 8h | 8 |  | 8 | 项目估计表 |  |
| 8 | 1.1.2.1 | 规模估算 |  | 1d? | 2008-04-21 09:00 A | 2008-04-21 18:00 A | 6 | 100% |  | 2005-01-20 09:00 | 2005-01-20 18:00 | 1d? |  | start no earlier than 2008-04-07 09:00 |  | 闻剑 | 5h | 5h | 5 |  | 5 |  |  |
| 9 | 1.1.2.2 | 工作量估算 |  | 1d? | 2008-04-22 09:00 A | 2008-04-22 18:00 A | 8 | 100% |  | 2005-01-20 09:00 | 2005-01-20 18:00 | 1d? |  | start no earlier than 2008-04-07 09:00 |  | 闻剑 | 3h | 3h | 3 |  | 3 |  |  |
| 10 | 1.2 | **项目计划** |  | 44.65d? | 2008-04-22 09:00 A | 2008-06-23 15:12 |  | 99% | 0.47d? | 2005-01-20 09:00 | 2005-01-21 18:00 | 2d? | 96.35d |  |  |  | 115h | 114h | 115 |  | 114 |  | pp |
| 11 | 1.2.1 | 工作分解结构 |  | 4.5d | 2008-04-22 09:00 A | 2008-04-28 14:00 A | 8 | 100% |  | 2005-01-20 09:00 | 2005-01-20 18:00 | 1d? |  | start no earlier than 2008-04-07 09:00 |  | 闻剑 | 23h | 23h | 23 |  | 23 |  |  |
| 12 | 1.2.2 | **项目估算** |  | 12.25d? | 2008-04-28 14:00 A | 2008-05-14 16:00 A |  | 100% |  | 2005-01-20 09:00 | 2005-01-20 18:00 | 1d? |  |  |  |  | 30h | 30h | 30 |  | 30 |  |  |
| 13 | 1.2.2.1 | 规模估算 |  | 1d? | 2008-04-28 14:00 A | 2008-04-29 14:00 A | 11 | 100% |  | 2005-01-20 09:00 | 2005-01-20 18:00 | 1d? |  |  |  | 闻剑 | 8h | 8h | 8 |  | 8 |  |  |
| 14 | 1.2.2.2 | 工作量估算 |  | 0.5d | 2008-04-29 14:00 A | 2008-04-29 18:00 A | 13 | 100% |  | 2005-01-20 09:00 | 2005-01-20 18:00 | 1d? |  |  | 2008-05-05 18:00 | 闻剑 | 4h | 4h | 4 |  | 4 |  |  |
| 15 | 1.2.2.3 | 进度估算 |  | 1.75d? | 2008-04-30 09:00 A | 2008-05-06 18:00 A | 14 | 100% |  | 2005-01-20 09:00 | 2005-01-20 18:00 | 1d? |  |  |  | 闻剑 | 10h | 10h | 10 |  | 10 |  |  |
| 16 | 1.2.2.4 | 成本估算 |  | 1d? | 2008-05-07 09:00 A | 2008-05-07 18:00 A | 15 | 100% |  | 2005-01-20 09:00 | 2005-01-20 18:00 | 1d? |  |  |  | 闻剑 [25%] | 2h | 2h | 2 |  | 2 |  |  |
| 17 | 1.2.2.5 | 资源估算 |  | 1d? | 2008-05-08 09:00 A | 2008-05-08 18:00 A | 16 | 100% |  | 2005-01-20 09:00 | 2005-01-20 18:00 | 1d? |  |  |  | 闻剑 [25%] | 2h | 2h | 2 |  | 2 |  |  |
| 18 | 1.2.2.6 | 风险收集 |  | 1.25d? | 2008-05-09 09:00 A | 2008-05-14 16:00 A | 17 | 100% |  | 2005-01-20 09:00 | 2005-01-20 18:00 | 1d? |  |  |  | 闻剑 | 4h | 4h | 4 |  | 4 |  |  |
| 19 | 1.2.3 | 进度计划 |  | 4.5d? | 2008-05-14 16:00 A | 2008-05-21 18:00 A | 18 | 100% |  | 2005-01-20 09:00 | 2005-01-20 18:00 | 1d? |  |  |  | 闻剑 | 20h | 20h | 20 |  | 20 |  |  |
| 20 | 1.2.4 | 人力资源计划 |  | 2.5d? | 2008-05-22 09:00 A | 2008-05-30 11:00 A | 19 | 100% |  | 2005-01-20 09:00 | 2005-01-20 18:00 | 1d? |  |  |  | 闻剑 | 10h | 10h | 10 |  | 10 |  |  |
| 21 | 1.2.5 | **SCM计划** |  | 11.8d? | 2008-05-30 11:00 A | 2008-06-17 09:24 A |  | 100% |  | 2005-01-20 09:00 | 2005-01-20 18:00 | 1d? |  |  |  |  | 24h | 24h | 24 |  | 24 |  |  |
| 22 | 1.2.5.1 | 配置项与基线计划 |  | 10.8d? | 2008-05-30 11:00 A | 2008-06-16 09:24 A | 20 | 100% |  | 2005-01-20 09:00 | 2005-01-20 18:00 | 1d? |  | start no earlier than 2008-04-07 09:00 |  | 范路玫 [50%] | 24h | 24h | 24 |  | 24 |  |  |
| 23 | 1.2.5.2 | SCM计划审核 | milestone | 0d? | 2008-06-16 09:24 A | 2008-06-17 09:24 A | 22 | 100% |  | 2005-01-20 09:00 | 2005-01-20 18:00 | 1d? |  | start no earlier than 2008-04-07 09:00 |  | 闻剑 [50%] |  |  |  |  |  |  |  |
| 24 | 1.2.6 | 项目计划整合 |  | 0.95d? | 2008-06-17 09:24 A | 2008-06-17 18:00 A | 23 | 100% |  | 2005-01-21 09:00 | 2005-01-21 18:00 | 1d? |  | start no earlier than 2008-04-07 09:00 |  | 闻剑 [39.5%] | 3h | 3h | 3 |  | 3 |  |  |
| 25 | 1.2.7 | 项目计划评审 |  | 1.65d? | 2008-06-18 09:00 A | 2008-06-23 15:12 | 24 | 80% | 0.33d? | 2005-01-21 09:00 | 2005-01-21 18:00 | 1d? | 96.35d |  |  | 闻剑 [37.9%] | 5h | 4h | 5 |  | 4 | 项目计划 |  |

Notes:
- 10: 使用项目计划模板

| ID | WBS | Task | Duration | Start | Finish | Predecessors | Complete | Remaining | Baseline start | Baseline finish | Baseline duration | Total slack | Free slack | Constraint | Resources | Work | Actual work | Cost | Actual cost | Text2 | Text20 |
| --- | --- | --- | --- | --- | --- | --- | --- | --- | --- | --- | --- | --- | --- | --- | --- | --- | --- | --- | --- | --- | --- |
| 26 | 1.3 | **项目日常管理** | 147d? | 2008-04-14 09:00 A | 2008-10-31 18:00 |  | 2% | 143.85d? | 2005-01-14 09:00 | 2005-01-14 18:00 | 1d? | 0d |  |  |  | 17.94h | 0.7h | 17.94 | 0.7 |  |  |
| 27 | 1.3.1 | 工作周报 | 32.69d? | 2008-04-14 09:00 A | 2008-10-31 18:00 |  | 2% | 31.99d? |  |  |  | 0d |  | finish no earlier than 2008-10-31 18:00 | 闻剑 [12.5%] | 17.94h | 0.7h | 17.94 | 0.7 |  |  |
| 28 | 1.4 | **SCM活动（由SCM人员补充计划）** | 144d | 2008-04-17 09:00 A | 2008-10-31 18:00 |  |  | 143.95d | 2005-01-14 09:00 | 2005-01-14 18:00 | 1d | 0d |  |  |  | 62.12h | 0.4h | 62.12 | 0.4 | SCM活动记录 | scm |
| 29 | 1.4.1 | SCM的基线工作 | 3.95d | 2008-05-13 09:00 A | 2008-05-16 17:36 |  | 1% | 3.9d | 2005-01-14 09:00 | 2005-01-14 18:00 | 1d | 122.05d |  | start no earlier than 2008-05-13 09:00 | 范路玫 | 12.52h | 0.4h | 12.52 | 0.4 |  |  |
| 30 | 1.4.2 | 其它经常性的SCM工作 | 144d | 2008-04-17 09:00 | 2008-10-31 18:00 |  |  |  | 2005-01-14 09:00 | 2005-01-14 18:00 | 1d | 0d |  | finish no earlier than 2008-10-31 18:00 | 范路玫 [5%] | 49.6h |  | 49.6 |  |  |  |
| 31 | 1.5 | **修订用户文档** | 62.5d | 2008-08-04 09:00 | 2008-10-27 14:00 |  |  |  | 2005-03-07 09:00 | 2005-03-14 18:00 | 6d | 4.5d |  |  |  | 160h |  | 160 |  |  |  |
| 32 | 1.5.1 | 用户手册 | 50d | 2008-08-04 09:00 | 2008-10-08 18:00 |  |  |  | 2005-03-08 09:00 | 2005-03-10 18:00 | 3d | 4.5d | 0d | start no earlier than 2008-08-04 09:00 | 范路玫 [20%] | 80h |  | 80 |  | 用户手册 |  |
| 33 | 1.5.2 | 安装维护手册 | 12.5d | 2008-10-09 09:00 | 2008-10-27 14:00 | 32 |  |  | 2005-03-11 09:00 | 2005-03-14 18:00 | 2d | 4.5d |  | finish no earlier than 2008-10-20 18:00 | 范路玫 [80%] | 80h |  | 80 |  | 安装维护手册 |  |
| 34 | 1.6 | **项目结项** | 3.5d? | 2008-10-28 09:00 | 2008-10-31 14:00 | 199 |  |  | 2005-03-25 09:00 | 2005-03-29 11:00 | 2.25d? | 0.5d |  |  |  | 28h |  | 28 |  |  |  |
| 35 | 1.6.1 | 项目数据度量表 | 1d | 2008-10-28 09:00 | 2008-10-28 18:00 |  |  |  | 2005-03-25 09:00 | 2005-03-28 11:00 | 1.25d | 0.5d | 0d | start no earlier than 2008-10-28 09:00 | 闻剑 | 8h |  | 8 |  | 项目数据度量表 | pc01 |
| 36 | 1.6.2 | 项目结项报告 | 1d | 2008-10-29 09:00 | 2008-10-29 18:00 | 35 |  |  | 2005-03-28 11:00 | 2005-03-29 10:31 | 0.94d | 0.5d | 0d | start no earlier than 2008-04-07 09:00 | 闻剑 | 8h |  | 8 |  | 项目总结报告 | pc03 |
| 37 | 1.6.3 | 项目结项会议 | 1d | 2008-10-30 09:00 | 2008-10-30 18:00 | 36 |  |  | 2005-03-28 11:00 | 2005-03-29 11:00 | 1d | 0.5d | 0d | start no earlier than 2008-04-07 09:00 | 闻剑 | 8h |  | 8 |  |  | pc05 |
| 38 | 1.6.4 | 团队经验交流 | 0.5d? | 2008-10-31 09:00 | 2008-10-31 14:00 | 37 |  |  | 2005-03-25 09:00 | 2005-03-25 18:00 | 1d? | 0.5d |  |  | 闻剑 | 4h |  | 4 |  |  |  |
| 39 | 2 | **工程活动** | 141.5d? | 2008-04-14 09:00 A | 2008-10-24 14:00 |  | 59% | 57.87d? | 2005-01-14 09:00 | 2005-03-24 18:00 | 50d? | 5.5d |  |  |  | 3275.8h | 2046.47h | 3,275.81 | 2,046.47 |  |  |
| 40 | 2.1 | **环境准备** | 4d | 2008-04-14 09:00 A | 2008-04-17 18:00 A |  | 100% |  | 2005-01-14 09:00 | 2005-01-14 18:00 | 1d? |  |  |  |  | 8h | 8h | 8 | 8 |  |  |
| 41 | 2.1.1 | 开发环境搭建 | 4d | 2008-04-14 09:00 A | 2008-04-17 18:00 A |  | 100% |  | 2005-01-14 09:00 | 2005-01-14 18:00 | 1d? |  |  | start no later than 2008-04-14 09:00 | 闻剑 [25%] | 8h | 8h | 8 | 8 |  |  |
| 42 | 2.2 | **需求分析与设计** | 51.75d? | 2008-04-18 09:00 A | 2008-06-30 16:00 |  | 77% | 11.98d? | 2005-01-14 09:00 | 2005-01-14 18:00 | 1d? | 91.25d |  |  |  | 346.68h | 312.54h | 346.68 | 312.54 |  |  |
| 43 | 2.2.1 | **软件需求规格说明书** | 15.08d? | 2008-04-18 09:00 A | 2008-05-09 09:40 A |  | 100% |  | 2005-01-14 09:00 | 2005-01-14 18:00 | 1d? |  |  |  |  | 106h | 106h | 106 | 106 | 软件需求规格说明书 |  |
| 44 | 2.2.1.1 | **综合管理系统需求分析** | 11d? | 2008-04-18 09:00 A | 2008-05-02 18:00 A | 41 | 100% |  |  |  |  |  |  |  |  | 43h | 43h | 43 | 43 |  |  |
| 45 | 2.2.1.1.1 | 结算、数据清理和备份策略分析 | 3d? | 2008-04-18 09:00 A | 2008-04-22 18:00 A |  | 100% |  |  |  |  |  |  |  | 闻剑 [75%] | 11h | 11h | 11 | 11 |  |  |
| 46 | 2.2.1.1.2 | 电子钱包需求分析 | 3d? | 2008-04-23 09:00 A | 2008-04-25 18:00 A | 45 | 100% |  |  |  |  |  |  |  | 闻剑 [50%] | 8h | 8h | 8 | 8 |  |  |
| 47 | 2.2.1.1.3 | 其他模块分析 | 3d? | 2008-04-28 09:00 A | 2008-05-02 18:00 A | 46 | 100% |  |  |  |  |  |  |  | 闻剑 | 24h | 24h | 24 | 24 |  |  |
| 48 | 2.2.1.2 | 综合查询、监控需求分析 | 5d? | 2008-04-21 09:00 A | 2008-04-25 18:00 A |  | 100% |  |  |  |  |  |  | start no earlier than 2008-04-21 09:00 | 何林青 | 40h | 40h | 40 | 40 |  |  |
| 49 | 2.2.1.3 | 需求编制 | 3.33d? | 2008-05-05 09:00 A | 2008-05-08 11:40 A | 47 | 100% |  |  |  |  |  |  |  | 闻剑 [187.5%] | 17h | 17h | 17 | 17 |  |  |
| 50 | 2.2.1.4 | 需求评审 | 0.75d? | 2008-05-08 11:40 A | 2008-05-09 09:40 A | 49 | 100% |  |  |  |  |  |  |  | 韩纪伟 [50%]; 何林青 [150%]; 李珣 [50%]; 闻剑 [50%] | 6h | 6h | 6 | 6 |  |  |

Notes:
- 26: 项目的日常管理活动通常是周期性的活动，如每周的计划、会议、报告等
- 30: 按每周一次总计
- 36: 项目经理填写项目总结报告。

| ID | WBS | Task | Duration | Start | Finish | Predecessors | Complete | Remaining | Baseline start | Baseline finish | Baseline duration | Total slack | Constraint | Resources | Work | Actual work | Cost | Actual cost |
| --- | --- | --- | --- | --- | --- | --- | --- | --- | --- | --- | --- | --- | --- | --- | --- | --- | --- | --- |
| 51 | 2.2.2 | **详细设计** | 45.75d? | 2008-04-28 09:00 A | 2008-06-30 16:00 |  | 69% | 14.37d? | 2005-01-14 09:00 | 2005-01-14 18:00 | 1d? | 91.25d |  |  | 240.68h | 206.54h | 240.68 | 206.54 |
| 52 | 2.2.2.1 | 综合查询详细设计 | 5d? | 2008-04-28 09:00 A | 2008-05-02 18:00 A | 48 | 100% |  |  |  |  |  |  | 何林青 | 40h | 40h | 40 | 40 |
| 53 | 2.2.2.2 | 监控系统详细设计 | 5d? | 2008-05-05 09:00 A | 2008-05-09 18:00 A | 52 | 100% |  |  |  |  |  |  | 何林青 | 36h | 36h | 36 | 36 |
| 54 | 2.2.2.3 | **数据库详细设计** | 12.79d? | 2008-05-09 09:40 A | 2008-05-27 17:00 A |  | 100% |  |  |  |  |  |  |  | 75h | 75h | 75 | 75 |
| 55 | 2.2.2.3.1 | 基本信息类表设计 | 1.92d? | 2008-05-09 09:40 A | 2008-05-12 18:00 A | 50 | 100% |  |  |  |  |  |  | 闻剑 | 14h | 14h | 14 | 14 |
| 56 | 2.2.2.3.2 | 参数类表设计 | 0.88d? | 2008-05-13 09:00 A | 2008-05-13 17:00 A | 55 | 100% |  |  |  |  |  |  | 闻剑 | 7h | 7h | 7 | 7 |
| 57 | 2.2.2.3.3 | 帐户类表设计 | 2d? | 2008-05-13 17:00 A | 2008-05-15 17:00 A | 56 | 100% |  |  |  |  |  |  | 闻剑 [62.5%] | 9h | 9h | 9 | 9 |
| 58 | 2.2.2.3.4 | 交易处理类表设计 | 2d? | 2008-05-15 17:00 A | 2008-05-19 17:00 A | 57 | 100% |  |  |  |  |  |  | 闻剑 [62.5%] | 9h | 9h | 9 | 9 |
| 59 | 2.2.2.3.5 | 交易明细类表设计 | 3d? | 2008-05-19 17:00 A | 2008-05-22 17:00 A | 58 | 100% |  |  |  |  |  |  | 闻剑 [50%] | 12h | 12h | 12 | 12 |
| 60 | 2.2.2.3.6 | 交易日志类表设计 | 2d? | 2008-05-22 17:00 A | 2008-05-26 17:00 A | 59 | 100% |  |  |  |  |  |  | 闻剑 | 16h | 16h | 16 | 16 |
| 61 | 2.2.2.3.7 | 统计报表设计 | 1d? | 2008-05-26 17:00 A | 2008-05-27 17:00 A | 60 | 100% |  |  |  |  |  |  | 闻剑 | 8h | 8h | 8 | 8 |
| 62 | 2.2.2.4 | 设计文档同行评审 | 0.5d | 2008-05-27 17:00 A | 2008-05-28 12:00 A | 61 | 100% |  |  |  |  |  |  | 闻剑 [80%]; 何林青; 韩纪伟; 李珣 | 9.68h | 9.68h | 9.68 | 9.68 |
| 63 | 2.2.2.5 | **详细设计说明书** | 37.42d? | 2008-05-08 11:40 A | 2008-06-30 16:00 |  | 42% | 21.73d? |  |  |  | 91.25d |  |  | 80h | 45.86h | 80 | 45.86 |
| 64 | 2.2.2.5.1 | 库存管理接口 | 4.67d? | 2008-05-08 11:40 A | 2008-05-14 18:00 A | 49 | 100% |  |  |  |  |  |  | 李珣 [150%] | 40h | 40h | 40 | 40 |
| 65 | 2.2.2.5.2 | 模块接口设计 | 22.75d? | 2008-05-22 09:40 A | 2008-06-30 16:00 | 61 | 30% | 15.93d? |  |  |  | 91.25d |  | 闻剑 | 40h | 5.86h | 40 | 5.86 |
| 66 | 2.3 | **编码与单元测试** | 121.14d? | 2008-04-14 09:00 A | 2008-09-28 09:06 |  | 63% | 44.95d? | 2005-01-14 09:00 | 2005-01-14 18:00 | 1d? | 25.86d |  |  | 2398.12h | 1589.93h | 2,398.13 | 1,589.93 |
| 67 | 2.3.1 | **一卡通前后台** | 121.14d? | 2008-04-14 09:00 A | 2008-09-28 09:06 |  | 61% | 46.89d? |  |  |  | 25.86d |  |  | 1711.12h | 1138.13h | 1,711.13 | 1,138.13 |
| 68 | 2.3.1.1 | 前台界面美化修改 | 5d? | 2008-04-22 09:00 A | 2008-04-28 18:00 A |  | 100% |  |  |  |  |  | start no earlier than 2008-04-22 09:00 | 韩纪伟 | 40h | 40h | 40 | 40 |
| 69 | 2.3.1.2 | 前台代码移植 | 5d? | 2008-04-29 09:00 A | 2008-05-05 18:00 A | 68 | 100% |  |  |  |  |  |  | 韩纪伟 | 40h | 40h | 40 | 40 |
| 70 | 2.3.1.3 | **系统管理** | 9.55d? | 2008-05-15 09:00 A | 2008-05-28 14:25 A |  | 100% |  |  |  |  |  |  |  | 153.33h | 153.33h | 153.34 | 153.33 |
| 71 | 2.3.1.3.1 | **卡类别设置** | 2d | 2008-05-15 09:00 A | 2008-05-16 18:00 A |  | 100% |  |  |  |  |  |  |  | 37h | 37h | 37 | 37 |
| 72 | 2.3.1.3.1.1 | 卡类别添加 | 0.5d | 2008-05-15 09:00 A | 2008-05-15 14:00 A | 64 | 100% |  |  |  |  |  | start no earlier than 2008-05-12 09:00 | 韩纪伟; 李珣 | 8h | 8h | 8 | 8 |
| 73 | 2.3.1.3.1.2 | 卡类别修改 | 0.5d | 2008-05-15 14:00 A | 2008-05-15 18:00 A | 72 | 100% |  |  |  |  |  |  | 韩纪伟 [300%]; 李珣 | 12h | 12h | 12 | 12 |
| 74 | 2.3.1.3.1.3 | 卡类别删除 | 0.5d | 2008-05-16 09:00 A | 2008-05-16 14:00 A | 73 | 100% |  |  |  |  |  |  | 韩纪伟; 李珣 | 6h | 6h | 6 | 6 |
| 75 | 2.3.1.3.1.4 | 卡类别查询 | 0.5d | 2008-05-16 14:00 A | 2008-05-16 18:00 A | 74 | 100% |  |  |  |  |  |  | 韩纪伟 [187.5%]; 李珣 | 11h | 11h | 11 | 11 |

Notes:
- 66: 按照项目定义软件过程，对软件代码进行开发、维护、建立文档和验证，以实现软件需求和软件设计。/ 编码的标准和规范参见：Open9000 Portal - 开发规范 / 其间包括 / 需求、设计、数据库变更 / 时间机动

| ID | WBS | Task | Duration | Start | Finish | Predecessors | Complete | Resources | Work | Actual work | Cost | Actual cost |
| --- | --- | --- | --- | --- | --- | --- | --- | --- | --- | --- | --- | --- |
| 76 | 2.3.1.3.2 | **钱包设置** | 1.17d? | 2008-05-19 09:00 A | 2008-05-20 10:20 A |  | 100% |  | 16.33h | 16.33h | 16.33 | 16.33 |
| 77 | 2.3.1.3.2.1 | 钱包设置 | 0.67d? | 2008-05-19 09:00 A | 2008-05-19 15:20 A | 75 | 100% | 韩纪伟 [56.2%]; 李珣 | 8.33h | 8.33h | 8.33 | 8.33 |
| 78 | 2.3.1.3.2.2 | 钱包查询 | 0.5d? | 2008-05-19 15:20 A | 2008-05-20 10:20 A | 77 | 100% | 韩纪伟; 李珣 | 8h | 8h | 8 | 8 |
| 79 | 2.3.1.3.3 | **钱包查询** | 2.5d | 2008-05-20 10:20 A | 2008-05-22 15:20 A |  | 100% |  | 35h | 35h | 35 | 35 |
| 80 | 2.3.1.3.3.1 | 计划任务添加 | 0.5d | 2008-05-20 10:20 A | 2008-05-20 15:20 A | 78 | 100% | 韩纪伟; 李珣 | 8.02h | 8.02h | 8.02 | 8.02 |
| 81 | 2.3.1.3.3.2 | 计划任务修改 | 0.5d | 2008-05-20 15:20 A | 2008-05-21 10:22 A | 80 | 100% | 韩纪伟 [99.2%]; 李珣 | 8.03h | 8.03h | 8.03 | 8.03 |
| 82 | 2.3.1.3.3.3 | 计划任务删除 | 0.56d | 2008-05-21 10:22 A | 2008-05-21 15:49 A | 81 | 100% | 韩纪伟 [101.2%]; 李珣 [200.7%] | 8.95h | 8.95h | 8.95 | 8.95 |
| 83 | 2.3.1.3.3.4 | 计划任务查询 | 0.56d | 2008-05-21 15:49 A | 2008-05-22 11:17 A | 82 | 100% | 韩纪伟 [67.4%]; 李珣 [44.9%] | 5h | 5h | 5 | 5 |
| 84 | 2.3.1.3.3.5 | 计划任务日志查询 | 0.38d | 2008-05-22 11:17 A | 2008-05-22 15:20 A | 83 | 100% | 韩纪伟 [98.4%]; 李珣 [65.6%] | 5h | 5h | 5 | 5 |
| 85 | 2.3.1.3.4 | **消息队列管理** | 1.5d | 2008-05-22 11:17 A | 2008-05-23 16:17 A |  | 100% |  | 22.9h | 22.9h | 22.9 | 22.9 |
| 86 | 2.3.1.3.4.1 | 消息队列信息查询 | 0.5d | 2008-05-22 11:17 A | 2008-05-22 16:17 A | 83 | 100% | 韩纪伟 [105.3%]; 李珣 [105.3%] | 7h | 7h | 7 | 7 |
| 87 | 2.3.1.3.4.2 | 消息队列信息修改 | 0.5d | 2008-05-22 16:17 A | 2008-05-23 11:17 A | 86 | 100% | 韩纪伟; 李珣 | 8h | 8h | 8 | 8 |
| 88 | 2.3.1.3.4.3 | 消息队列信息删除 | 0.5d | 2008-05-23 11:17 A | 2008-05-23 16:17 A | 87 | 100% | 韩纪伟; 李珣 | 7.9h | 7.9h | 7.9 | 7.9 |
| 89 | 2.3.1.3.5 | **卡片库存管理** | 2.77d | 2008-05-23 16:17 A | 2008-05-28 14:25 A |  | 100% |  | 42.1h | 42.1h | 42.1 | 42.1 |
| 90 | 2.3.1.3.5.1 | 卡片领入 | 0.5d | 2008-05-23 16:17 A | 2008-05-26 11:17 A | 88 | 100% | 韩纪伟; 李珣 | 8h | 8h | 8 | 8 |
| 91 | 2.3.1.3.5.2 | 卡片上交 | 0.5d | 2008-05-26 11:17 A | 2008-05-26 16:17 A | 90 | 100% | 韩纪伟; 李珣 | 8h | 8h | 8 | 8 |
| 92 | 2.3.1.3.5.3 | 卡片交接 | 0.5d | 2008-05-26 16:17 A | 2008-05-27 11:17 A | 91 | 100% | 韩纪伟; 李珣 | 8h | 8h | 8 | 8 |
| 93 | 2.3.1.3.5.4 | 卡片作废 | 0.6d | 2008-05-27 11:17 A | 2008-05-27 17:05 A | 92 | 100% | 韩纪伟; 李珣 [114.3%] | 9.1h | 9.1h | 9.1 | 9.1 |
| 94 | 2.3.1.3.5.5 | 卡片信息查询 | 0.67d | 2008-05-27 17:05 A | 2008-05-28 14:25 A | 93 | 100% | 韩纪伟 [56.2%]; 李珣 [112.5%] | 9h | 9h | 9 | 9 |
| 95 | 2.3.1.4 | **操作员管理** | 2.5d | 2008-05-28 12:00 A | 2008-05-30 17:00 A | 62 | 100% |  | 36.4h | 36.4h | 36.4 | 36.4 |
| 96 | 2.3.1.4.1 | 操作员设置 | 0.5d | 2008-05-28 12:00 A | 2008-05-28 17:00 A |  | 100% | 韩纪伟 [169.5%]; 闻剑 [61%] | 6h | 6h | 6 | 6 |
| 97 | 2.3.1.4.2 | 操作员授权卡发行 | 0.5d | 2008-05-28 17:00 A | 2008-05-29 12:00 A | 96 | 100% | 韩纪伟 [150%]; 闻剑 [50%] | 8h | 8h | 8 | 8 |
| 98 | 2.3.1.4.3 | 操作员授权卡挂失解挂 | 0.5d | 2008-05-29 12:00 A | 2008-05-29 17:00 A | 97 | 100% | 韩纪伟; 闻剑 [84.7%] | 5h | 5h | 5 | 5 |
| 99 | 2.3.1.4.4 | 操作员授权卡注销 | 0.5d | 2008-05-29 17:00 A | 2008-05-30 12:00 A | 98 | 100% | 韩纪伟; 闻剑 [80%] | 7.2h | 7.2h | 7.2 | 7.2 |
| 100 | 2.3.1.4.5 | 操作员登录与签出 | 0.5d | 2008-05-30 12:00 A | 2008-05-30 17:00 A | 99 | 100% | 韩纪伟 [243.9%]; 闻剑 [73.2%] | 10.2h | 10.2h | 10.2 | 10.2 |
| 101 | 2.3.1.5 | 权限模板设置 | 0.5d | 2008-05-30 17:00 A | 2008-06-02 12:00 A | 100 | 100% | 韩纪伟; 闻剑 [75%] | 5h | 5h | 5 | 5 |
| 102 | 2.3.1.6 | 网点管理 | 0.5d | 2008-06-02 12:00 A | 2008-06-02 17:00 A | 101 | 100% | 韩纪伟 [122%]; 闻剑 [122%] | 8h | 8h | 8 | 8 |
| 103 | 2.3.1.7 | 站点管理 | 0.5d | 2008-06-02 17:00 A | 2008-06-03 12:00 A | 102 | 100% | 韩纪伟; 闻剑 [80%] | 7.2h | 7.2h | 7.2 | 7.2 |
| 104 | 2.3.1.8 | 操作员站点设置 | 0.5d | 2008-06-03 12:00 A | 2008-06-03 17:00 A | 103 | 100% | 韩纪伟; 闻剑 [122%] | 6h | 6h | 6 | 6 |
| 105 | 2.3.1.9 | 专业设置 | 0.5d | 2008-06-03 17:00 A | 2008-06-04 12:00 A | 104 | 100% | 韩纪伟; 闻剑 [75%] | 7h | 7h | 7 | 7 |
| 106 | 2.3.1.10 | 部门设置 | 0.5d | 2008-06-04 12:00 A | 2008-06-04 17:00 A | 105 | 100% | 韩纪伟 [169.5%]; 闻剑 [93.2%] | 7.51h | 7.51h | 7.51 | 7.51 |
| 107 | 2.3.1.11 | 交易收费设置 | 0.5d | 2008-06-04 17:00 A | 2008-06-05 12:00 A | 106 | 100% | 韩纪伟; 闻剑 | 8h | 8h | 8 | 8 |
| 108 | 2.3.1.12 | 收费类别设置 | 0.5d | 2008-06-05 12:00 A | 2008-06-05 17:00 A | 107 | 100% | 韩纪伟 [169.5%]; 闻剑 [122%] | 9.39h | 9.39h | 9.39 | 9.39 |
| 109 | 2.3.1.13 | 客户类别设置 | 0.5d | 2008-06-05 17:00 A | 2008-06-06 12:00 A | 108 | 100% | 韩纪伟; 闻剑 [80%] | 7.2h | 7.2h | 7.2 | 7.2 |
| 110 | 2.3.1.14 | 区域设置 | 0.5d | 2008-06-06 12:00 A | 2008-06-06 17:00 A | 109 | 100% | 韩纪伟 [243.9%]; 闻剑 [122%] | 10.5h | 10.5h | 10.5 | 10.5 |

| ID | WBS | Task | Duration | Start | Finish | Predecessors | Complete | Resources | Work | Actual work | Cost | Actual cost |
| --- | --- | --- | --- | --- | --- | --- | --- | --- | --- | --- | --- | --- |
| 111 | 2.3.1.15 | **客户信息管理** | 4.79d | 2008-06-06 17:00 A | 2008-06-13 15:21 A | 110 | 100% |  | 60.8h | 60.8h | 60.8 | 60.8 |
| 112 | 2.3.1.15.1 | 客户信息导入管理 | 2.69d | 2008-06-06 17:00 A | 2008-06-11 14:33 A | 104 | 100% | 韩纪伟; 闻剑 [90%] | 26.4h | 26.4h | 26.4 | 26.4 |
| 113 | 2.3.1.15.2 | 客户信息设置 | 1.99d | 2008-06-11 14:33 A | 2008-06-13 15:21 A | 112 | 100% | 韩纪伟 [989.7%]; 闻剑 [643.3%] | 34.4h | 34.4h | 34.4 | 34.4 |
| 114 | 2.3.1.16 | **卡务管理** | 28.17d? | 2008-06-13 15:21 A | 2008-07-23 16:45 A |  | 100% |  | 294.2h | 294.2h | 294.2 | 294.2 |
| 115 | 2.3.1.16.1 | 记账模块修改 | 4.91d? | 2008-06-13 15:21 A | 2008-06-20 14:38 A | 113 | 100% | 闻剑 [224.3%] | 32h | 32h | 32 | 32 |
| 116 | 2.3.1.16.2 | 一卡通开户查询 | 0.57d? | 2008-06-20 14:38 A | 2008-06-23 10:14 A | 115 | 100% | 韩纪伟; 闻剑 [112.1%] | 8h | 8h | 8 | 8 |
| 117 | 2.3.1.16.3 | 一卡通开户手续费查询 | 1d? | 2008-06-23 10:14 A | 2008-06-24 10:14 A | 116 | 100% | 韩纪伟 [133.3%]; 闻剑 [80%] | 14h | 14h | 14 | 14 |
| 118 | 2.3.1.16.4 | 一卡通开户 | 4.23d? | 2008-06-24 10:14 A | 2008-06-30 12:06 A | 117 | 100% | 韩纪伟; 闻剑 [90%] | 40h | 40h | 40 | 40 |
| 119 | 2.3.1.16.5 | 一卡通开户冲正 | 2.14d? | 2008-06-30 12:06 A | 2008-07-02 14:12 A | 118 | 100% | 韩纪伟 [157.9%]; 闻剑 [93.4%] | 32h | 32h | 32 | 32 |
| 120 | 2.3.1.16.6 | 一卡通批量开户 | 0.62d? | 2008-07-02 14:12 A | 2008-07-03 10:12 A | 119 | 100% | 韩纪伟 [160%]; 闻剑 [80%] | 12h | 12h | 12 | 12 |
| 121 | 2.3.1.16.7 | 一卡通充值 | 1.25d? | 2008-07-03 10:12 A | 2008-07-04 12:12 A | 120 | 100% | 韩纪伟; 闻剑 [82.5%] | 16h | 16h | 16 | 16 |
| 122 | 2.3.1.16.8 | 一卡通支取 | 0.62d? | 2008-07-04 12:12 A | 2008-07-07 09:12 A | 121 | 100% | 韩纪伟; 闻剑 [235.3%] | 9h | 9h | 9 | 9 |
| 123 | 2.3.1.16.9 | 一卡通充值冲正 | 1.25d? | 2008-07-07 09:12 A | 2008-07-08 11:12 A | 122 | 100% | 韩纪伟 [157.9%]; 闻剑 [91.3%] | 19h | 19h | 19 | 19 |
| 124 | 2.3.1.16.10 | 一卡通补办 | 1.25d? | 2008-07-08 11:12 A | 2008-07-09 14:12 A | 123 | 100% | 韩纪伟 [375%]; 闻剑 [173.9%] | 19h | 19h | 19 | 19 |
| 125 | 2.3.1.16.11 | 不计名临时卡开户 | 1.19d? | 2008-07-09 14:12 A | 2008-07-10 15:44 A | 124 | 100% | 韩纪伟 [122.4%]; 闻剑 [124.3%] | 18h | 18h | 18 | 18 |
| 126 | 2.3.1.16.12 | 不计名临时卡回收 | 1.25d? | 2008-07-10 15:44 A | 2008-07-11 17:44 A | 125 | 100% | 韩纪伟 [132.4%]; 闻剑 [87.4%] | 18h | 18h | 18 | 18 |
| 127 | 2.3.1.16.13 | 一卡通销户 | 1.58d? | 2008-07-11 17:44 A | 2008-07-15 14:24 A | 126 | 100% | 韩纪伟 [157.9%]; 闻剑 [93.4%] | 24h | 24h | 24 | 24 |
| 128 | 2.3.1.16.14 | 挂失解挂 | 0.5d | 2008-07-15 14:24 A | 2008-07-16 09:24 A | 127 | 100% | 韩纪伟 [214.3%]; 闻剑 [80%] | 8h | 8h | 8 | 8 |
| 129 | 2.3.1.16.15 | 冻结解冻 | 0.58d | 2008-07-16 09:24 A | 2008-07-16 15:00 A | 128 | 100% | 韩纪伟 [65%]; 闻剑 [470.6%] | 8h | 8h | 8 | 8 |
| 130 | 2.3.1.16.16 | 坏卡登记 | 4.59d | 2008-07-16 15:00 A | 2008-07-23 10:45 A | 129 | 100% | 韩纪伟; 闻剑 [80%] | 6h | 6h | 6 | 6 |
| 131 | 2.3.1.16.17 | 手工借贷 | 0.62d? | 2008-07-23 10:45 A | 2008-07-23 16:45 A | 130 | 100% | 韩纪伟; 闻剑 [395.1%] | 11.2h | 11.2h | 11.2 | 11.2 |
| 132 | 2.3.1.17 | **补助管理** | 3.1d? | 2008-07-23 16:45 A | 2008-07-28 17:33 A | 131 | 100% |  | 45.2h | 45.2h | 45.2 | 45.2 |
| 133 | 2.3.1.17.1 | 补助导入 | 1.25d? | 2008-07-23 16:45 A | 2008-07-25 09:45 A |  | 100% | 韩纪伟 [102.8%]; 闻剑 [84%] | 17.2h | 17.2h | 17.2 | 17.2 |
| 134 | 2.3.1.17.2 | 补助下发 | 1.23d? | 2008-07-25 09:45 A | 2008-07-28 11:33 A | 133 | 100% | 韩纪伟 [217.8%]; 闻剑 [165.7%] | 20h | 20h | 20 | 20 |
| 135 | 2.3.1.17.3 | 补助领取 | 0.62d? | 2008-07-28 11:33 A | 2008-07-28 17:33 A | 134 | 100% | 韩纪伟; 闻剑 [80%] | 8h | 8h | 8 | 8 |

| ID | WBS | Task | Duration | Start | Finish | Predecessors | Complete | Remaining | Total slack | Free slack | Resources | Work | Actual work | Cost | Actual cost |
| --- | --- | --- | --- | --- | --- | --- | --- | --- | --- | --- | --- | --- | --- | --- | --- |
| 136 | 2.3.1.18 | **电子钱包管理** | 7.73d? | 2008-07-28 17:33 A | 2008-08-07 15:23 | 135 | 71% | 2.21d? | 63.33d |  |  | 95.4h | 79.4h | 95.4 | 79.4 |
| 137 | 2.3.1.18.1 | 电子钱包开户 | 0.62d? | 2008-07-28 17:33 A | 2008-07-29 14:33 A |  | 100% |  |  |  | 韩纪伟 [189.7%]; 闻剑 [80%] | 9.6h | 9.6h | 9.6 | 9.6 |
| 138 | 2.3.1.18.2 | 电子钱包销户 | 0.62d? | 2008-07-29 14:33 A | 2008-07-30 10:33 A | 137 | 100% |  |  |  | 韩纪伟; 闻剑 [80%] | 8h | 8h | 8 | 8 |
| 139 | 2.3.1.18.3 | 电子钱包止付解付 | 0.31d? | 2008-07-30 10:33 A | 2008-07-30 14:03 A | 138 | 100% |  |  |  | 韩纪伟 [1846.2%]; 闻剑 [80%] | 5.8h | 5.8h | 5.8 | 5.8 |
| 140 | 2.3.1.18.4 | 电子钱包充值 | 0.31d? | 2008-07-30 14:03 A | 2008-07-30 16:33 A | 139 | 100% |  |  |  | 韩纪伟; 闻剑 [40%] | 3h | 3h | 3 | 3 |
| 141 | 2.3.1.18.5 | 电子钱包取款（前台） | 0.31d? | 2008-07-30 16:33 A | 2008-07-31 10:03 A | 140 | 100% |  |  |  | 韩纪伟; 闻剑 [80%] | 4h | 4h | 4 | 4 |
| 142 | 2.3.1.18.6 | 校园卡到电子钱包转帐（前台、多媒体、圈存） | 1.67d? | 2008-07-31 10:03 A | 2008-08-01 16:23 A | 141 | 100% |  |  |  | 韩纪伟 [328.8%]; 闻剑 [87.5%] | 26h | 26h | 26 | 26 |
| 143 | 2.3.1.18.7 | 电子帐户密码修改 | 0.25d? | 2008-08-01 16:23 A | 2008-08-04 09:23 A | 142 | 100% |  |  |  | 韩纪伟; 闻剑 | 4h | 4h | 4 | 4 |
| 144 | 2.3.1.18.8 | 电子帐户密码重置 | 0.25d? | 2008-08-04 16:23 A | 2008-08-05 09:23 A | 143 | 100% |  |  |  | 韩纪伟; 闻剑 | 4h | 4h | 4 | 4 |
| 145 | 2.3.1.18.9 | 帐户交易明细查询 | 0.62d? | 2008-08-05 09:23 A | 2008-08-05 15:23 A | 144 | 100% |  |  |  | 韩纪伟 [463.8%]; 闻剑 [96%] | 15h | 15h | 15 | 15 |
| 146 | 2.3.1.18.10 | 电子钱包支付 | 2d? | 2008-08-05 15:23 | 2008-08-07 15:23 | 145 |  |  | 63.33d |  | 闻剑 [120%] | 16h |  | 16 |  |
| 147 | 2.3.1.19 | **商户管理** | 7.74d | 2008-08-06 12:23 A | 2008-08-18 10:20 A |  | 100% |  |  |  |  | 116h | 116h | 116 | 116 |
| 148 | 2.3.1.19.1 | 充值商户管理 | 3.02d | 2008-08-06 12:23 A | 2008-08-11 13:34 A | 146 | 100% |  |  |  | 闻剑 [87.5%]; 韩纪伟 [127.5%] | 40h | 40h | 40 | 40 |
| 149 | 2.3.1.19.2 | 收费商户管理 | 2.5d | 2008-08-11 13:34 A | 2008-08-13 17:33 A | 148 | 100% |  |  |  | 韩纪伟 [106.6%]; 闻剑 [252.1%] | 40h | 40h | 40 | 40 |
| 150 | 2.3.1.19.3 | 商户设备设置 | 2.22d | 2008-08-13 17:33 A | 2008-08-18 10:20 A | 149 | 100% |  |  |  | 韩纪伟 [404%]; 闻剑 [137.9%] | 36h | 36h | 36 | 36 |
| 151 | 2.3.1.20 | **多钱包功能** | 6.94d | 2008-08-18 10:20 | 2008-08-27 09:49 | 150 |  |  | 45.97d |  |  | 64h |  | 64 |  |
| 152 | 2.3.1.20.1 | 钱包开通 | 1.76d | 2008-08-18 10:20 | 2008-08-19 17:25 |  |  |  | 45.97d | 0d | 韩纪伟 [79.9%]; 闻剑 [504.2%] | 21h |  | 21 |  |
| 153 | 2.3.1.20.2 | 钱包关闭 | 3.41d | 2008-08-19 17:25 | 2008-08-25 11:40 | 152 |  |  | 45.97d | 0d | 韩纪伟 [80%]; 闻剑 [129.4%] | 20h |  | 20 |  |
| 154 | 2.3.1.20.3 | 钱包转账 | 0.89d | 2008-08-25 11:40 | 2008-08-26 10:47 | 153 |  |  | 45.97d | 0d | 韩纪伟 [107.8%]; 闻剑 [119.1%] | 12h |  | 12 |  |
| 155 | 2.3.1.20.4 | 小钱包充值 | 0.88d | 2008-08-26 10:47 | 2008-08-27 09:49 | 154 |  |  | 45.97d | 0d | 韩纪伟 [87.1%]; 闻剑 [129%] | 11h |  | 11 |  |
| 156 | 2.3.1.21 | **POS流水管理** | 10.14d? | 2008-08-27 09:49 A | 2008-09-10 10:56 | 155 | 61% | 3.93d? | 39.76d |  |  | 115h | 68h | 115 | 68 |
| 157 | 2.3.1.21.1 | POS流水上传 | 0.83d | 2008-08-27 09:49 A | 2008-08-27 17:29 A |  | 100% |  |  |  | 韩纪伟 [72%]; 闻剑 [461.5%] | 7h | 7h | 7 | 7 |
| 158 | 2.3.1.21.2 | POS流水查询 | 0.92d? | 2008-08-27 17:29 A | 2008-08-28 16:49 A | 157 | 100% |  |  |  | 韩纪伟 [43.5%]; 闻剑 [68.2%] | 8h | 8h | 8 | 8 |
| 159 | 2.3.1.21.3 | POS流水冲正 | 0.88d | 2008-08-28 16:49 A | 2008-08-29 15:52 A | 158 | 100% |  |  |  | 韩纪伟 [42.6%]; 闻剑 [444.4%] | 11h | 11h | 11 | 11 |
| 160 | 2.3.1.21.4 | POS流水文件导入 | 0.96d | 2008-08-29 15:52 A | 2008-09-01 15:31 A | 159 | 100% |  |  |  | 韩纪伟 [192.9%]; 闻剑 [141.8%] | 11h | 11h | 11 | 11 |
| 161 | 2.3.1.21.5 | POS流水手工录入 | 0.83d | 2008-09-01 15:31 A | 2008-09-02 14:11 A | 160 | 100% |  |  |  | 韩纪伟 [116.5%]; 闻剑 [171.4%] | 10h | 10h | 10 | 10 |
| 162 | 2.3.1.21.6 | POS流水录入修改 | 0.44d | 2008-09-02 14:11 A | 2008-09-02 17:42 A | 161 | 100% |  |  |  | 韩纪伟 [91.3%]; 闻剑 [229%] | 7h | 7h | 7 | 7 |
| 163 | 2.3.1.21.7 | POS流水录入删除 | 0.46d | 2008-09-02 17:42 A | 2008-09-03 12:22 A | 162 | 100% |  |  |  | 韩纪伟 [27.3%]; 闻剑 [81.8%] | 4h | 4h | 4 | 4 |
| 164 | 2.3.1.21.8 | POS流水录入审核 | 0.89d | 2008-09-03 12:22 A | 2008-09-04 11:31 A | 163 | 100% |  |  |  | 韩纪伟; 闻剑 [102.7%] | 10h | 10h | 10 | 10 |
| 165 | 2.3.1.21.9 | 异常POS流水查询 | 0.83d | 2008-09-04 11:31 | 2008-09-05 10:11 | 164 |  |  | 39.76d | 0d | 韩纪伟 [103.6%]; 闻剑 [156.8%] | 12h |  | 12 |  |
| 166 | 2.3.1.21.10 | 异常POS流水修改 | 0.92d | 2008-09-05 10:11 | 2008-09-08 09:31 | 165 |  |  | 39.76d | 0d | 韩纪伟 [77%]; 闻剑 [82.1%] | 10h |  | 10 |  |
| 167 | 2.3.1.21.11 | 异常POS流水删除 | 0.44d | 2008-09-08 09:31 | 2008-09-08 14:02 | 166 |  |  | 39.76d | 0d | 韩纪伟 [56.8%]; 闻剑 [85.3%] | 5h |  | 5 |  |
| 168 | 2.3.1.21.12 | 异常POS流水处理 | 1.74d | 2008-09-08 14:02 | 2008-09-10 10:56 | 167 |  |  | 39.76d |  | 韩纪伟 [85.3%]; 闻剑 [123.6%] | 20h |  | 20 |  |

| ID | WBS | Task | Duration | Start | Finish | Predecessors | Complete | Remaining | Total slack | Free slack | Constraint | Resources | Work | Actual work | Cost | Actual cost |
| --- | --- | --- | --- | --- | --- | --- | --- | --- | --- | --- | --- | --- | --- | --- | --- | --- |
| 169 | 2.3.1.22 | **查询** | 11.1d? | 2008-08-11 09:00 A | 2008-08-26 09:46 A |  | 100% |  |  |  |  |  | 78.99h | 78.99h | 78.99 | 78.99 |
| 170 | 2.3.1.22.1 | 交易流水查询 | 1.03d? | 2008-08-11 09:00 A | 2008-08-13 14:36 A | 320 | 100% |  |  |  |  | 韩纪伟; 何林青 | 9.67h | 9.67h | 9.67 | 9.67 |
| 171 | 2.3.1.22.2 | 持卡人帐户查询 | 1.05d? | 2008-08-13 14:36 A | 2008-08-14 14:58 A | 170 | 100% |  |  |  |  | 韩纪伟; 何林青 | 10.33h | 10.33h | 10.33 | 10.33 |
| 172 | 2.3.1.22.3 | 持卡人帐户交易明细查询 | 1.03d? | 2008-08-14 14:58 A | 2008-08-15 15:15 A | 171 | 100% |  |  |  |  | 韩纪伟; 何林青 | 12h | 12h | 12 | 12 |
| 173 | 2.3.1.22.4 | 商户帐户查询 | 0.8d | 2008-08-15 15:15 A | 2008-08-19 09:10 A | 172 | 100% |  |  |  |  | 韩纪伟; 何林青 | 9h | 9h | 9 | 9 |
| 174 | 2.3.1.22.5 | 商户帐户交易明细查询 | 1d | 2008-08-19 09:10 A | 2008-08-20 11:20 A | 173 | 100% |  |  |  |  | 韩纪伟; 何林青 | 12h | 12h | 12 | 12 |
| 175 | 2.3.1.22.6 | 操作员交易流水查询 | 0.89d? | 2008-08-20 11:20 A | 2008-08-21 14:47 A | 174 | 100% |  |  |  |  | 韩纪伟; 何林青 | 11h | 11h | 11 | 11 |
| 176 | 2.3.1.22.7 | 操作员试轧帐 | 1.54d? | 2008-08-21 14:47 A | 2008-08-26 09:46 A | 175 | 100% |  |  |  |  | 韩纪伟 [70.8%]; 何林青 [92%] | 15h | 15h | 15 | 15 |
| 177 | 2.3.1.23 | **卡库不平机制** | 2.9d? | 2008-04-14 09:00 | 2008-04-16 17:12 |  |  |  | 144.1d |  |  |  | 36h |  | 36 |  |
| 178 | 2.3.1.23.1 | 卡库不平查询 | 0.17d | 2008-04-14 09:00 | 2008-04-14 10:20 |  |  |  | 144.1d | 0d |  | 韩纪伟; 闻剑 [248.6%] | 4h |  | 4 |  |
| 179 | 2.3.1.23.2 | 卡库不平手工处理 | 2.5d? | 2008-04-14 10:20 | 2008-04-16 17:12 | 178 |  |  | 144.1d |  |  | 韩纪伟; 闻剑 [130.6%] | 32h |  | 32 |  |
| 180 | 2.3.1.24 | **圈存管理** | 3.56d? | 2008-08-26 09:46 | 2008-08-29 15:13 | 176 |  |  | 13.45d | 0d |  |  | 32h |  | 32.01 |  |
| 181 | 2.3.1.24.1 | 圈存补帐 | 0.56d | 2008-08-26 09:46 | 2008-08-26 15:13 |  |  |  | 13.45d | 0d |  | 韩纪伟; 闻剑 [90%] | 8h |  | 8.01 |  |
| 182 | 2.3.1.24.2 | 圈存转账 | 2d? | 2008-08-26 15:13 | 2008-08-28 15:13 | 181 |  |  | 13.45d | 0d |  | 闻剑 [112.6%] | 16.67h |  | 16.67 |  |
| 183 | 2.3.1.24.3 | 圈存转账冲正 | 1d? | 2008-08-28 15:13 | 2008-08-29 15:13 | 182 |  |  | 13.45d |  |  | 闻剑 | 7.33h |  | 7.33 |  |
| 184 | 2.3.1.25 | **卡库不平机制** | 2.9d? | 2008-08-29 15:13 | 2008-09-03 14:25 |  |  |  | 13.45d |  |  |  | 36h |  | 36 |  |
| 185 | 2.3.1.25.1 | 卡库不平查询 | 0.17d | 2008-08-29 15:13 | 2008-08-29 16:33 | 180 |  |  | 13.45d | 0d |  | 韩纪伟; 闻剑 [248.6%] | 4h |  | 4 |  |
| 186 | 2.3.1.25.2 | 卡库不平手工处理 | 2.5d? | 2008-08-29 16:33 | 2008-09-03 14:25 | 185 |  |  | 13.45d | 0d |  | 韩纪伟; 闻剑 [130.6%] | 32h |  | 32 |  |
| 187 | 2.3.1.26 | **版权管理** | 2d? | 2008-09-03 14:25 | 2008-09-05 14:25 | 186 |  |  | 13.45d |  |  |  | 16h |  | 16 |  |
| 188 | 2.3.1.26.1 | 前台版本管理 | 2d? | 2008-09-03 14:25 | 2008-09-05 14:25 |  |  |  | 13.45d | 0d |  | 韩纪伟 | 16h |  | 16 |  |
| 189 | 2.3.1.27 | 门禁系统 | 5d | 2008-09-05 14:25 | 2008-09-12 14:25 | 188 |  |  | 13.45d |  | start no later than 2008-09-25 09:00 | 闻剑 | 16h |  | 16 |  |
| 190 | 2.3.1.28 | **后台独立程序（无前台）** | 21d | 2008-07-17 09:00 A | 2008-08-14 18:00 |  | 29% | 15d | 16d |  |  |  | 168h | 48h | 168 | 48 |
| 191 | 2.3.1.28.1 | POS流水入账程序 | 3d | 2008-07-17 09:00 A | 2008-07-21 18:00 A |  | 100% |  |  |  | start no earlier than 2008-07-17 09:00 | 高级程序员1 | 24h | 24h | 24 | 24 |
| 192 | 2.3.1.28.2 | 中途拔卡处理程序 | 3d | 2008-07-22 09:00 A | 2008-07-24 18:00 A | 191 | 100% |  |  |  |  | 高级程序员1 | 24h | 24h | 24 | 24 |
| 193 | 2.3.1.28.3 | 卡库不平处理程序 | 3d | 2008-07-25 09:00 | 2008-07-29 18:00 | 192 |  |  | 16d | 0d |  | 高级程序员1 | 24h |  | 24 |  |
| 194 | 2.3.1.28.4 | 日终结算 | 3d | 2008-07-30 09:00 | 2008-08-01 18:00 | 193 |  |  | 16d | 0d |  | 高级程序员1 | 24h |  | 24 |  |
| 195 | 2.3.1.28.5 | 来帐流水表数据清理程序 | 3d | 2008-08-04 09:00 | 2008-08-06 18:00 | 194 |  |  | 16d | 0d |  | 高级程序员1 | 24h |  | 24 |  |
| 196 | 2.3.1.28.6 | 交易流水数据导出与清理程序 | 3d | 2008-08-07 09:00 | 2008-08-11 18:00 | 195 |  |  | 16d | 0d |  | 高级程序员1 | 24h |  | 24 |  |
| 197 | 2.3.1.28.7 | 计划任务程序（后台） | 3d | 2008-08-12 09:00 | 2008-08-14 18:00 | 196 |  |  | 16d | 0d |  | 高级程序员1 | 24h |  | 24 |  |

| ID | WBS | Task | Duration | Start | Finish | Predecessors | Complete | Remaining | Total slack | Free slack | Constraint | Resources | Work | Actual work | Cost | Actual cost |
| --- | --- | --- | --- | --- | --- | --- | --- | --- | --- | --- | --- | --- | --- | --- | --- | --- |
| 198 | 2.3.1.29 | **统计报表** | 32.14d | 2008-08-15 09:00 A | 2008-09-28 09:06 | 197 | 3% | 31.22d | 25.86d |  |  |  | 192h | 2h | 192 | 2 |
| 199 | 2.3.1.29.1 | 科目余额表 | 1.33d | 2008-08-15 09:00 | 2008-08-18 11:40 |  |  |  | 41.03d | 14.67d |  | 闻剑; 韩纪伟 [50%] | 16h |  | 16 |  |
| 200 | 2.3.1.29.2 | 系统运行情况表 | 1.67d | 2008-09-08 09:00 A | 2008-09-09 15:20 | 199 | 30% | 1.17d | 25.86d | 0d |  | 韩纪伟 [50%]; 闻剑 | 16h | 2h | 16 | 2 |
| 201 | 2.3.1.29.3 | 个人对账不平清单 | 1.33d | 2008-09-09 15:20 | 2008-09-10 18:00 | 200 |  |  | 25.86d | 0d |  | 闻剑; 韩纪伟 [50%] | 16h |  | 16 |  |
| 202 | 2.3.1.29.4 | 卡库不平清单 | 1.54d | 2008-09-11 09:00 | 2008-09-12 14:18 | 201 |  |  | 25.86d | 0d |  | 闻剑; 韩纪伟 [50%] | 16h |  | 16 |  |
| 203 | 2.3.1.29.5 | 操作情况汇总表 | 1.33d | 2008-09-12 14:18 | 2008-09-15 16:58 | 202 |  |  | 25.86d | 0d |  | 闻剑; 韩纪伟 [50%] | 16h |  | 16 |  |
| 204 | 2.3.1.29.6 | 普通商户结算表 | 1.33d | 2008-09-15 16:58 | 2008-09-17 10:38 | 203 |  |  | 25.86d | 0d |  | 闻剑; 韩纪伟 [50%] | 16h |  | 16 |  |
| 205 | 2.3.1.29.7 | 银行划拨表 | 1.33d | 2008-09-17 10:38 | 2008-09-18 14:18 | 204 |  |  | 25.86d | 0d |  | 闻剑; 韩纪伟 [50%] | 16h |  | 16 |  |
| 206 | 2.3.1.29.8 | 资产负债表 | 2d | 2008-09-18 14:18 | 2008-09-22 14:18 | 205 |  |  | 25.86d | 0d |  | 闻剑; 韩纪伟 [50%] | 24h |  | 24 |  |
| 207 | 2.3.1.29.9 | 操作员现金报表 | 1.6d | 2008-09-22 14:18 | 2008-09-24 10:06 | 206 |  |  | 25.86d | 0d |  | 闻剑; 韩纪伟 [50%] | 16h |  | 16 |  |
| 208 | 2.3.1.29.10 | 商户当天营业报表 | 2d | 2008-09-24 10:06 | 2008-09-26 10:06 | 207 |  |  | 25.86d | 0d |  | 闻剑; 韩纪伟 [50%] | 16h |  | 16 |  |
| 209 | 2.3.1.29.11 | 商户解款报表 | 1.33d | 2008-09-26 10:06 | 2008-09-27 11:46 | 208 |  |  | 25.86d | 0d |  | 闻剑; 韩纪伟 [50%] | 16h |  | 16 |  |
| 210 | 2.3.1.29.12 | 现金解款报表 | 0.67d | 2008-09-27 11:46 | 2008-09-28 09:06 | 209 |  |  | 25.86d |  |  | 闻剑; 韩纪伟 [50%] | 8h |  | 8 |  |
| 211 | 2.3.2 | **综合查询系统迁移** | 73d? | 2008-05-12 09:00 A | 2008-08-20 18:00 |  | 81% | 13.9d? | 54d |  |  |  | 335h | 271h | 335 | 271 |
| 212 | 2.3.2.1 | **系统管理** | 1.5d | 2008-05-12 09:00 A | 2008-05-13 14:00 A |  | 100% |  |  |  |  |  | 12h | 12h | 12 | 12 |
| 213 | 2.3.2.1.1 | 用户权限分配 | 0.5d | 2008-05-12 09:00 A | 2008-05-12 14:00 A |  | 100% |  |  |  | start no earlier than 2008-05-12 09:00 | 何林青 | 4h | 4h | 4 | 4 |
| 214 | 2.3.2.1.2 | 管理员密码修改 | 0.5d | 2008-05-12 14:00 A | 2008-05-13 09:00 A | 213 | 100% |  |  |  |  | 何林青 | 4h | 4h | 4 | 4 |
| 215 | 2.3.2.1.3 | 一卡通用户登录 | 0.5d | 2008-05-13 09:00 A | 2008-05-13 14:00 A | 214 | 100% |  |  |  |  | 何林青 | 4h | 4h | 4 | 4 |
| 216 | 2.3.2.2 | **新闻公告管理** | 2.5d | 2008-05-13 14:00 A | 2008-05-16 09:00 A |  | 100% |  |  |  |  |  | 20h | 20h | 20 | 20 |
| 217 | 2.3.2.2.1 | 浏览新闻公告 | 0.5d | 2008-05-13 14:00 A | 2008-05-14 09:00 A | 215 | 100% |  |  |  |  | 何林青 | 4h | 4h | 4 | 4 |
| 218 | 2.3.2.2.2 | 查询新闻公告 | 0.5d | 2008-05-14 09:00 A | 2008-05-14 14:00 A | 217 | 100% |  |  |  |  | 何林青 | 4h | 4h | 4 | 4 |
| 219 | 2.3.2.2.3 | 添加新闻公告 | 0.5d | 2008-05-14 14:00 A | 2008-05-15 09:00 A | 218 | 100% |  |  |  |  | 何林青 | 4h | 4h | 4 | 4 |
| 220 | 2.3.2.2.4 | 编辑新闻公告 | 0.5d | 2008-05-15 09:00 A | 2008-05-15 14:00 A | 219 | 100% |  |  |  |  | 何林青 | 4h | 4h | 4 | 4 |
| 221 | 2.3.2.2.5 | 删除新闻公告 | 0.5d | 2008-05-15 14:00 A | 2008-05-16 09:00 A | 220 | 100% |  |  |  |  | 何林青 | 4h | 4h | 4 | 4 |

| ID | WBS | Task | Duration | Start | Finish | Predecessors | Complete | Resources | Work | Actual work | Cost | Actual cost |
| --- | --- | --- | --- | --- | --- | --- | --- | --- | --- | --- | --- | --- |
| 222 | 2.3.2.3 | **文档下载类管理** | 2.5d | 2008-05-16 09:00 A | 2008-05-20 14:00 A |  | 100% |  | 20h | 20h | 20 | 20 |
| 223 | 2.3.2.3.1 | 下载文档 | 0.5d | 2008-05-16 09:00 A | 2008-05-16 14:00 A | 221 | 100% | 何林青 | 4h | 4h | 4 | 4 |
| 224 | 2.3.2.3.2 | 查询可下载文档 | 0.5d | 2008-05-16 14:00 A | 2008-05-19 09:00 A | 223 | 100% | 何林青 | 4h | 4h | 4 | 4 |
| 225 | 2.3.2.3.3 | 添加文档 | 0.5d | 2008-05-19 09:00 A | 2008-05-19 14:00 A | 224 | 100% | 何林青 | 4h | 4h | 4 | 4 |
| 226 | 2.3.2.3.4 | 编辑文档信息 | 0.5d | 2008-05-19 14:00 A | 2008-05-20 09:00 A | 225 | 100% | 何林青 | 4h | 4h | 4 | 4 |
| 227 | 2.3.2.3.5 | 删除文档 | 0.5d | 2008-05-20 09:00 A | 2008-05-20 14:00 A | 226 | 100% | 何林青 | 4h | 4h | 4 | 4 |
| 228 | 2.3.2.4 | **规章制度管理** | 2.5d | 2008-05-20 14:00 A | 2008-05-23 09:00 A |  | 100% |  | 20h | 20h | 20 | 20 |
| 229 | 2.3.2.4.1 | 浏览规章制度 | 0.5d | 2008-05-20 14:00 A | 2008-05-21 09:00 A | 227 | 100% | 何林青 | 4h | 4h | 4 | 4 |
| 230 | 2.3.2.4.2 | 查询规章制度 | 0.5d | 2008-05-21 09:00 A | 2008-05-21 14:00 A | 229 | 100% | 何林青 | 4h | 4h | 4 | 4 |
| 231 | 2.3.2.4.3 | 添加规章制度 | 0.5d | 2008-05-21 14:00 A | 2008-05-22 09:00 A | 230 | 100% | 何林青 | 4h | 4h | 4 | 4 |
| 232 | 2.3.2.4.4 | 编辑规章 | 0.5d | 2008-05-22 09:00 A | 2008-05-22 14:00 A | 231 | 100% | 何林青 | 4h | 4h | 4 | 4 |
| 233 | 2.3.2.4.5 | 删除规章 | 0.5d | 2008-05-22 14:00 A | 2008-05-23 09:00 A | 232 | 100% | 何林青 | 4h | 4h | 4 | 4 |
| 234 | 2.3.2.5 | **操作指南管理** | 2.5d | 2008-05-23 09:00 A | 2008-05-27 14:00 A |  | 100% |  | 20h | 20h | 20 | 20 |
| 235 | 2.3.2.5.1 | 浏览操作指南 | 0.5d | 2008-05-23 09:00 A | 2008-05-23 14:00 A | 233 | 100% | 何林青 | 4h | 4h | 4 | 4 |
| 236 | 2.3.2.5.2 | 查询操作指南 | 0.5d | 2008-05-23 14:00 A | 2008-05-26 09:00 A | 235 | 100% | 何林青 | 4h | 4h | 4 | 4 |
| 237 | 2.3.2.5.3 | 添加操作指南 | 0.5d | 2008-05-26 09:00 A | 2008-05-26 14:00 A | 236 | 100% | 何林青 | 4h | 4h | 4 | 4 |
| 238 | 2.3.2.5.4 | 编辑操作指南 | 0.5d | 2008-05-26 14:00 A | 2008-05-27 09:00 A | 237 | 100% | 何林青 | 4h | 4h | 4 | 4 |
| 239 | 2.3.2.5.5 | 删除操作指南 | 0.5d | 2008-05-27 09:00 A | 2008-05-27 14:00 A | 238 | 100% | 何林青 | 4h | 4h | 4 | 4 |
| 240 | 2.3.2.6 | **自动设备分布图管理** | 2.5d | 2008-05-27 14:00 A | 2008-05-30 09:00 A |  | 100% |  | 20h | 20h | 20 | 20 |
| 241 | 2.3.2.6.1 | 浏览设备分布图 | 0.5d | 2008-05-27 14:00 A | 2008-05-28 09:00 A | 239 | 100% | 何林青 | 4h | 4h | 4 | 4 |
| 242 | 2.3.2.6.2 | 查询设备分布图 | 0.5d | 2008-05-28 09:00 A | 2008-05-28 14:00 A | 241 | 100% | 何林青 | 4h | 4h | 4 | 4 |
| 243 | 2.3.2.6.3 | 添加设备分布图 | 0.5d | 2008-05-28 14:00 A | 2008-05-29 09:00 A | 242 | 100% | 何林青 | 4h | 4h | 4 | 4 |
| 244 | 2.3.2.6.4 | 编辑设备分布图 | 0.5d | 2008-05-29 09:00 A | 2008-05-29 14:00 A | 243 | 100% | 何林青 | 4h | 4h | 4 | 4 |
| 245 | 2.3.2.6.5 | 删除设备分布图 | 0.5d | 2008-05-29 14:00 A | 2008-05-30 09:00 A | 244 | 100% | 何林青 | 4h | 4h | 4 | 4 |

| ID | WBS | Task | Duration | Start | Finish | Predecessors | Complete | Constraint | Resources | Work | Actual work | Cost | Actual cost |
| --- | --- | --- | --- | --- | --- | --- | --- | --- | --- | --- | --- | --- | --- |
| 246 | 2.3.2.7 | **FAQ管理** | 2d | 2008-05-30 09:00 A | 2008-06-03 09:00 A |  | 100% |  |  | 16h | 16h | 16 | 16 |
| 247 | 2.3.2.7.1 | 浏览FAQ | 0.5d | 2008-05-30 09:00 A | 2008-05-30 14:00 A | 245 | 100% |  | 何林青 | 4h | 4h | 4 | 4 |
| 248 | 2.3.2.7.2 | 添加FAQ | 0.5d | 2008-05-30 14:00 A | 2008-06-02 09:00 A | 247 | 100% |  | 何林青 | 4h | 4h | 4 | 4 |
| 249 | 2.3.2.7.3 | 编辑FAQ | 0.5d | 2008-06-02 09:00 A | 2008-06-02 14:00 A | 248 | 100% |  | 何林青 | 4h | 4h | 4 | 4 |
| 250 | 2.3.2.7.4 | 删除FAQ | 0.5d | 2008-06-02 14:00 A | 2008-06-03 09:00 A | 249 | 100% |  | 何林青 | 4h | 4h | 4 | 4 |
| 251 | 2.3.2.8 | **领卡和失卡名单管理** | 1d | 2008-06-03 09:00 A | 2008-06-04 09:00 A |  | 100% |  |  | 8h | 8h | 8 | 8 |
| 252 | 2.3.2.8.1 | 浏览领卡和失卡名单 | 0.5d | 2008-06-03 09:00 A | 2008-06-03 14:00 A | 250 | 100% |  | 何林青 | 4h | 4h | 4 | 4 |
| 253 | 2.3.2.8.2 | 编辑领卡和失卡名单 | 0.5d | 2008-06-03 14:00 A | 2008-06-04 09:00 A | 252 | 100% |  | 何林青 | 4h | 4h | 4 | 4 |
| 254 | 2.3.2.9 | **留言簿管理** | 2d | 2008-06-04 09:00 A | 2008-06-06 09:00 A |  | 100% |  |  | 16h | 16h | 16 | 16 |
| 255 | 2.3.2.9.1 | 浏览留言 | 0.5d | 2008-06-04 09:00 A | 2008-06-04 14:00 A | 253 | 100% |  | 何林青 | 4h | 4h | 4 | 4 |
| 256 | 2.3.2.9.2 | 添加留言 | 0.5d | 2008-06-04 14:00 A | 2008-06-05 09:00 A | 255 | 100% |  | 何林青 | 4h | 4h | 4 | 4 |
| 257 | 2.3.2.9.3 | 回复留言 | 0.5d | 2008-06-05 09:00 A | 2008-06-05 14:00 A | 256 | 100% |  | 何林青 | 4h | 4h | 4 | 4 |
| 258 | 2.3.2.9.4 | 留言查询 | 0.5d | 2008-06-05 14:00 A | 2008-06-06 09:00 A | 257 | 100% |  | 何林青 | 4h | 4h | 4 | 4 |
| 259 | 2.3.2.10 | **校园卡使用管理** | 7d | 2008-06-06 09:00 A | 2008-06-16 18:00 A |  | 100% |  |  | 39h | 39h | 39 | 39 |
| 260 | 2.3.2.10.1 | 查询卡信息 | 0.5d | 2008-06-06 09:00 A | 2008-06-06 14:00 A | 258 | 100% |  | 何林青 | 4h | 4h | 4 | 4 |
| 261 | 2.3.2.10.2 | 卡流水明细查询 | 0.5d | 2008-06-06 14:00 A | 2008-06-06 18:00 A | 260 | 100% |  | 何林青 [75%] | 3h | 3h | 3 | 3 |
| 262 | 2.3.2.10.3 | 卡挂失 | 0.5d | 2008-06-11 09:00 A | 2008-06-11 14:00 A |  | 100% | start no earlier than 2008-06-11 09:00 | 何林青 | 4h | 4h | 4 | 4 |
| 263 | 2.3.2.10.4 | 卡延期申请 | 0.5d | 2008-06-11 14:00 A | 2008-06-12 09:00 A | 262 | 100% |  | 何林青 | 4h | 4h | 4 | 4 |
| 264 | 2.3.2.10.5 | 卡延期申请处理 | 0.5d | 2008-06-12 09:00 A | 2008-06-12 14:00 A | 263 | 100% |  | 何林青 | 4h | 4h | 4 | 4 |
| 265 | 2.3.2.10.6 | 卡延期申请查询 | 0.5d | 2008-06-12 14:00 A | 2008-06-13 09:00 A | 264 | 100% |  | 何林青 | 4h | 4h | 4 | 4 |
| 266 | 2.3.2.10.7 | 卡挂失需知修改 | 0.5d | 2008-06-13 09:00 A | 2008-06-13 14:00 A | 265 | 100% |  | 何林青 | 4h | 4h | 4 | 4 |
| 267 | 2.3.2.10.8 | 卡延期需知修改 | 1.5d | 2008-06-13 14:00 A | 2008-06-16 18:00 A | 266 | 100% |  | 何林青 | 12h | 12h | 12 | 12 |
| 268 | 2.3.2.11 | **用户相关模块** | 10d? | 2008-06-17 09:00 A | 2008-06-30 18:00 A |  | 100% |  |  | 80h | 80h | 80 | 80 |
| 269 | 2.3.2.11.1 | 用户默认页面 | 2d? | 2008-06-17 09:00 A | 2008-06-18 18:00 A |  | 100% | start no earlier than 2008-06-17 09:00 | 何林青 | 16h | 16h | 16 | 16 |
| 270 | 2.3.2.11.2 | 用户登陆跳转 | 2d? | 2008-06-19 09:00 A | 2008-06-20 18:00 A | 269 | 100% |  | 何林青 | 16h | 16h | 16 | 16 |
| 271 | 2.3.2.11.3 | 用户角色默认规划 | 2d? | 2008-06-23 09:00 A | 2008-06-24 18:00 A | 270 | 100% |  | 何林青 | 16h | 16h | 16 | 16 |
| 272 | 2.3.2.11.4 | 超级用户管理界面优化 | 2d? | 2008-06-25 09:00 A | 2008-06-26 18:00 A | 271 | 100% |  | 何林青 | 16h | 16h | 16 | 16 |
| 273 | 2.3.2.11.5 | 用户创建相关资源分配 | 2d? | 2008-06-27 09:00 A | 2008-06-30 18:00 A | 272 | 100% |  | 何林青 | 16h | 16h | 16 | 16 |

| ID | WBS | Task | Duration | Start | Finish | Predecessors | Complete | Remaining | Total slack | Free slack | Constraint | Resources | Work | Actual work | Cost | Actual cost |
| --- | --- | --- | --- | --- | --- | --- | --- | --- | --- | --- | --- | --- | --- | --- | --- | --- |
| 274 | 2.3.2.12 | **电子钱包管理** | 3d? | 2008-08-11 09:00 | 2008-08-13 18:00 | 320 |  |  | 54d |  |  |  | 24h |  | 24 |  |
| 275 | 2.3.2.12.1 | 电子钱包信息修改 | 0.5d? | 2008-08-11 09:00 | 2008-08-11 14:00 |  |  |  | 54d | 0d |  | 何林青 | 4h |  | 4 |  |
| 276 | 2.3.2.12.2 | 电子钱包密码修改 | 0.5d? | 2008-08-11 14:00 | 2008-08-11 18:00 | 275 |  |  | 54d | 0d |  | 何林青 | 4h |  | 4 |  |
| 277 | 2.3.2.12.3 | 电子钱包密码重置 | 1d? | 2008-08-12 09:00 | 2008-08-12 18:00 | 276 |  |  | 54d | 0d |  | 何林青 | 8h |  | 8 |  |
| 278 | 2.3.2.12.4 | 帐户交易明细查询 | 1d? | 2008-08-13 09:00 | 2008-08-13 18:00 | 277 |  |  | 54d | 0d |  | 何林青 | 8h |  | 8 |  |
| 279 | 2.3.2.13 | 卡务模块代码移植 | 5d? | 2008-08-14 09:00 | 2008-08-20 18:00 | 278 |  |  | 54d |  |  | 何林青 | 40h |  | 40 |  |
| 280 | 2.3.3 | **webservice接口设计** | 11d | 2008-07-01 09:00 A | 2008-07-15 18:00 A | 273 | 100% |  |  |  |  |  | 88h | 88h | 88 | 88 |
| 281 | 2.3.3.1 | 数据库设计 | 16h | 2008-07-01 09:00 A | 2008-07-02 18:00 A |  | 100% |  |  |  |  | 何林青 | 16h | 16h | 16 | 16 |
| 282 | 2.3.3.2 | **接口设计** | 2d | 2008-07-03 09:00 A | 2008-07-04 18:00 A |  | 100% |  |  |  |  |  | 16h | 16h | 16 | 16 |
| 283 | 2.3.3.2.1 | xml输入输出接口设计 | 8h | 2008-07-03 09:00 A | 2008-07-03 18:00 A | 281 | 100% |  |  |  |  | 何林青 | 8h | 8h | 8 | 8 |
| 284 | 2.3.3.2.2 | bcc核心工作模式设计 | 8h | 2008-07-04 09:00 A | 2008-07-04 18:00 A | 283 | 100% |  |  |  |  | 何林青 | 8h | 8h | 8 | 8 |
| 285 | 2.3.3.3 | **编码** | 7d | 2008-07-07 09:00 A | 2008-07-15 18:00 A |  | 100% |  |  |  |  |  | 56h | 56h | 56 | 56 |
| 286 | 2.3.3.3.1 | 输入输出xml转化以及输入输出接口的实现 | 8h | 2008-07-07 09:00 A | 2008-07-07 18:00 A | 284 | 100% |  |  |  |  | 何林青 | 8h | 8h | 8 | 8 |
| 287 | 2.3.3.3.2 | bccclient调用形式统一的接口编码 | 8h | 2008-07-08 09:00 A | 2008-07-08 18:00 A | 286 | 100% |  |  |  |  | 何林青 | 8h | 8h | 8 | 8 |
| 288 | 2.3.3.3.3 | webservice架构设计相关配置代码编码 | 8h | 2008-07-09 09:00 A | 2008-07-09 18:00 A | 287 | 100% |  |  |  |  | 何林青 | 8h | 8h | 8 | 8 |
| 289 | 2.3.3.3.4 | bcc 相关的配置文件设计编码 | 8h | 2008-07-10 09:00 A | 2008-07-10 18:00 A | 288 | 100% |  |  |  |  | 何林青 | 8h | 8h | 8 | 8 |
| 290 | 2.3.3.3.5 | bcc核心工作代码 | 8h | 2008-07-11 09:00 A | 2008-07-11 18:00 A | 289 | 100% |  |  |  |  | 何林青 | 8h | 8h | 8 | 8 |
| 291 | 2.3.3.3.6 | 用户登陆模块 | 8h | 2008-07-14 09:00 A | 2008-07-14 18:00 A | 290 | 100% |  |  |  |  | 何林青 | 8h | 8h | 8 | 8 |
| 292 | 2.3.3.3.7 | 开发一个delphi客户端测试 | 8h | 2008-07-15 09:00 A | 2008-07-15 18:00 A | 291 | 100% |  |  |  |  | 何林青 | 8h | 8h | 8 | 8 |
| 293 | 2.3.4 | **监控系统** | 18d? | 2008-07-16 09:00 A | 2008-08-08 18:00 | 292 | 64% | 6.4d? | 62d |  |  |  | 144h | 92.8h | 144 | 92.8 |
| 294 | 2.3.4.1 | **设备列表显示** | 2d? | 2008-07-16 09:00 A | 2008-07-17 18:00 A |  | 100% |  |  |  |  |  | 16h | 16h | 16 | 16 |
| 295 | 2.3.4.1.1 | 前台ocx 修改设备列表显示功能，相关的有几个功能需要作必要的调整 | 1d? | 2008-07-16 09:00 A | 2008-07-16 18:00 A | 273 | 100% |  |  |  | finish no earlier than 2008-05-12 18:00 | 何林青 | 8h | 8h | 8 | 8 |
| 296 | 2.3.4.1.2 | 后台web 修改设备列表功能 | 1d? | 2008-07-17 09:00 A | 2008-07-17 18:00 A | 295 | 100% |  |  |  |  | 何林青 | 8h | 8h | 8 | 8 |
| 297 | 2.3.4.2 | **监控实时事件提醒功能** | 4d? | 2008-07-18 09:00 A | 2008-07-23 18:00 A |  | 100% |  |  |  |  |  | 32h | 32h | 32 | 32 |
| 298 | 2.3.4.2.1 | 前台ocx 增加一个事件滚动的界面、以及一个相关的配置界面 | 2d | 2008-07-18 09:00 A | 2008-07-21 18:00 A | 296 | 100% |  |  |  |  | 何林青 | 16h | 16h | 16 | 16 |

| ID | WBS | Task | Duration | Start | Finish | Predecessors | Complete | Remaining | Baseline start | Baseline finish | Baseline duration | Total slack | Free slack | Resources | Work | Actual work | Cost | Actual cost |
| --- | --- | --- | --- | --- | --- | --- | --- | --- | --- | --- | --- | --- | --- | --- | --- | --- | --- | --- |
| 299 | 2.3.4.2.2 | **后台web** | 2d? | 2008-07-22 09:00 A | 2008-07-23 18:00 A |  | 100% |  |  |  |  |  |  |  | 16h | 16h | 16 | 16 |
| 300 | 2.3.4.2.2.1 | 每个分析线程需要增加一个事件信息记录功能路口 | 1d? | 2008-07-22 09:00 A | 2008-07-22 18:00 A | 298 | 100% |  |  |  |  |  |  | 何林青 | 8h | 8h | 8 | 8 |
| 301 | 2.3.4.2.2.2 | 针对设备脱机、流水采集、cpu预警等需要单独增加差异分析入口 | 1d? | 2008-07-23 09:00 A | 2008-07-23 18:00 A | 300 | 100% |  |  |  |  |  |  | 何林青 | 8h | 8h | 8 | 8 |
| 302 | 2.3.4.3 | 数据库 增加一个时间信息表 | 0.5d | 2008-07-24 09:00 A | 2008-07-24 14:00 A | 301 | 100% |  |  |  |  |  |  | 何林青 | 4h | 4h | 4 | 4 |
| 303 | 2.3.4.4 | **单个设备的状态图** | 5d? | 2008-07-24 14:00 A | 2008-07-31 14:00 |  | 12% | 4.4d? |  |  |  | 68.5d |  |  | 40h | 4.8h | 40 | 4.8 |
| 304 | 2.3.4.4.1 | **前台ocx** | 3d? | 2008-07-24 14:00 A | 2008-07-29 14:00 |  | 20% | 2.4d? |  |  |  | 68.5d |  |  | 24h | 4.8h | 24 | 4.8 |
| 305 | 2.3.4.4.1.1 | 增加设备脱机的状态图 | 2d | 2008-07-24 14:00 A | 2008-07-28 14:00 | 302 | 30% | 1.4d |  |  |  | 68.5d | 0d | 何林青 | 16h | 4.8h | 16 | 4.8 |
| 306 | 2.3.4.4.1.2 | 增加服务器cpu mem等的状态改变图 | 1d? | 2008-07-28 14:00 | 2008-07-29 14:00 | 305 |  |  |  |  |  | 68.5d | 0d | 何林青 | 8h |  | 8 |  |
| 307 | 2.3.4.4.2 | **后台web** | 2d? | 2008-07-29 14:00 | 2008-07-31 14:00 |  |  |  |  |  |  | 68.5d |  |  | 16h |  | 16 |  |
| 308 | 2.3.4.4.2.1 | 增加设备脱机的相应查询功能 | 1d? | 2008-07-29 14:00 | 2008-07-30 14:00 | 306 |  |  |  |  |  | 68.5d | 0d | 何林青 | 8h |  | 8 |  |
| 309 | 2.3.4.4.2.2 | 增加服务器的状态查询功能 | 1d? | 2008-07-30 14:00 | 2008-07-31 14:00 | 308 |  |  |  |  |  | 68.5d |  | 何林青 | 8h |  | 8 |  |
| 310 | 2.3.4.5 | **设备状态字典配置** | 4d? | 2008-07-31 14:00 A | 2008-08-06 14:00 A |  | 100% |  |  |  |  |  |  |  | 32h | 32h | 32 | 32 |
| 311 | 2.3.4.5.1 | **前台ocx** | 2d? | 2008-07-31 14:00 A | 2008-08-04 14:00 A |  | 100% |  |  |  |  |  |  |  | 16h | 16h | 16 | 16 |
| 312 | 2.3.4.5.1.1 | 增加一个数据字典的维护界面 | 1d? | 2008-07-31 14:00 A | 2008-08-01 14:00 A | 309 | 100% |  |  |  |  |  |  | 何林青 | 8h | 8h | 8 | 8 |
| 313 | 2.3.4.5.1.2 | 修改功能选项，初始化从数据库读取信息，实现同步信息功能 | 1d? | 2008-08-01 14:00 A | 2008-08-04 14:00 A | 312 | 100% |  |  |  |  |  |  | 何林青 | 8h | 8h | 8 | 8 |
| 314 | 2.3.4.5.2 | **后台web** | 2d? | 2008-08-04 14:00 A | 2008-08-06 14:00 A |  | 100% |  |  |  |  |  |  |  | 16h | 16h | 16 | 16 |
| 315 | 2.3.4.5.2.1 | 增加数据字典维护功能 | 1d? | 2008-08-04 14:00 A | 2008-08-05 14:00 A | 313 | 100% |  |  |  |  |  |  | 何林青 | 8h | 8h | 8 | 8 |
| 316 | 2.3.4.5.2.2 | 增加数据库典前后台同步信息功能 | 1d? | 2008-08-05 14:00 A | 2008-08-06 14:00 A | 315 | 100% |  |  |  |  |  |  | 何林青 | 8h | 8h | 8 | 8 |
| 317 | 2.3.4.6 | 数据库 增加一个数据字典表 | 0.5d | 2008-08-06 14:00 A | 2008-08-06 18:00 A | 316 | 100% |  |  |  |  |  |  | 何林青 | 4h | 4h | 4 | 4 |
| 318 | 2.3.4.7 | **服务器状态** | 2d? | 2008-08-07 09:00 | 2008-08-08 18:00 |  |  |  |  |  |  | 47d |  |  | 16h |  | 16 |  |
| 319 | 2.3.4.7.1 | 前台ocx 增加服务器相关信息的显示 | 1d? | 2008-08-07 09:00 | 2008-08-07 18:00 | 317 |  |  |  |  |  | 47d | 0d | 何林青 | 8h |  | 8 |  |
| 320 | 2.3.4.7.2 | 后台web 增加服务器信息周期同步功能 | 1d? | 2008-08-08 09:00 | 2008-08-08 18:00 | 319 |  |  |  |  |  | 47d | 0d | 何林青 | 8h |  | 8 |  |
| 321 | 2.3.5 | **文档修订** | 15d? | 2008-08-26 09:46 | 2008-09-16 09:46 | 320 |  |  |  |  |  | 35.9d |  |  | 120h |  | 120 |  |
| 322 | 2.3.5.1 | 用户手册 | 5d? | 2008-08-26 09:46 | 2008-09-02 09:46 | 176 |  |  | 2005-01-14 09:00 | 2005-01-14 18:00 | 1d? | 35.9d | 0d | 何林青 | 40h |  | 40 |  |
| 323 | 2.3.5.2 | 安装维护手册 | 5d? | 2008-09-02 09:46 | 2008-09-09 09:46 | 322 |  |  | 2005-01-14 09:00 | 2005-01-14 18:00 | 1d? | 35.9d | 0d | 何林青 | 40h |  | 40 |  |
| 324 | 2.3.5.3 | 测试bug修改 | 5d? | 2008-09-09 09:46 | 2008-09-16 09:46 | 323 |  |  |  |  |  | 35.9d |  | 何林青 | 40h |  | 40 |  |

| ID | WBS | Task | Duration | Start | Finish | Predecessors | Complete | Remaining | Baseline start | Baseline finish | Baseline duration | Total slack | Constraint | Resources | Work | Actual work | Cost | Actual cost |
| --- | --- | --- | --- | --- | --- | --- | --- | --- | --- | --- | --- | --- | --- | --- | --- | --- | --- | --- |
| 325 | 2.4 | **系统测试** | 61.5d? | 2008-08-04 09:00 A | 2008-10-24 14:00 |  | 23% | 47.17d? | 2005-01-14 09:00 | 2005-03-14 18:00 | 42d? | 5.5d |  |  | 523h | 136h | 523 | 136 |
| 326 | 2.4.1 | 测试环境搭建 | 2d | 2008-08-04 09:00 A | 2008-08-05 18:00 A |  | 100% |  | 2005-01-14 09:00 | 2005-01-14 18:00 | 1d? |  | start no earlier than 2008-08-04 09:00 | 王家欢 | 16h | 16h | 16 | 16 |
| 327 | 2.4.2 | 编写测试用例 | 2d | 2008-08-06 09:00 A | 2008-08-07 18:00 A | 326 | 100% |  | 2005-01-14 09:00 | 2005-01-14 18:00 | 1d? |  | finish no earlier than 2008-06-11 18:00 | 王家欢; 郭莉莉 | 32h | 32h | 32 | 32 |
| 328 | 2.4.3 | **一卡通前后台** | 47.5d? | 2008-08-05 09:00 A | 2008-10-07 14:00 |  | 23% | 36.47d? |  |  |  | 18.5d |  |  | 371h | 88h | 371 | 88 |
| 329 | 2.4.3.1 | **系统管理** | 2.5d? | 2008-08-08 09:00 A | 2008-08-12 14:00 A |  | 100% |  |  |  |  |  |  |  | 20h | 20h | 20 | 20 |
| 330 | 2.4.3.1.1 | 卡类型设置 | 0.5d? | 2008-08-08 09:00 A | 2008-08-08 14:00 A | 327 | 100% |  |  |  |  |  |  | 郭莉莉 | 4h | 4h | 4 | 4 |
| 331 | 2.4.3.1.2 | 钱包设置 | 0.5d? | 2008-08-08 14:00 A | 2008-08-08 18:00 A | 330 | 100% |  |  |  |  |  |  | 郭莉莉 | 4h | 4h | 4 | 4 |
| 332 | 2.4.3.1.3 | 网点设置 | 0.5d? | 2008-08-11 09:00 A | 2008-08-11 14:00 A | 331 | 100% |  |  |  |  |  |  | 郭莉莉 | 4h | 4h | 4 | 4 |
| 333 | 2.4.3.1.4 | 交易收费配置 | 0.5d? | 2008-08-11 14:00 A | 2008-08-11 18:00 A | 332 | 100% |  |  |  |  |  |  | 郭莉莉 | 4h | 4h | 4 | 4 |
| 334 | 2.4.3.1.5 | 计划任务管理 | 0.5d? | 2008-08-12 09:00 A | 2008-08-12 14:00 A | 333 | 100% |  |  |  |  |  |  | 郭莉莉 | 4h | 4h | 4 | 4 |
| 335 | 2.4.3.2 | **卡片库存管理** | 2d? | 2008-08-12 14:00 A | 2008-08-14 14:00 A |  | 100% |  |  |  |  |  |  |  | 16h | 16h | 16 | 16 |
| 336 | 2.4.3.2.1 | 卡片领入 | 0.5d? | 2008-08-12 14:00 A | 2008-08-12 18:00 A | 334 | 100% |  |  |  |  |  |  | 郭莉莉 | 4h | 4h | 4 | 4 |
| 337 | 2.4.3.2.2 | 卡片上交 | 0.5d? | 2008-08-13 09:00 A | 2008-08-13 14:00 A | 336 | 100% |  |  |  |  |  |  | 郭莉莉 | 4h | 4h | 4 | 4 |
| 338 | 2.4.3.2.3 | 卡片交接 | 0.5d? | 2008-08-13 14:00 A | 2008-08-13 18:00 A | 337 | 100% |  |  |  |  |  |  | 郭莉莉 | 4h | 4h | 4 | 4 |
| 339 | 2.4.3.2.4 | 卡片作废 | 0.5d? | 2008-08-14 09:00 A | 2008-08-14 14:00 A | 338 | 100% |  |  |  |  |  |  | 郭莉莉 | 4h | 4h | 4 | 4 |
| 340 | 2.4.3.3 | **操作员管理** | 2d? | 2008-08-14 14:00 A | 2008-08-18 14:00 A |  | 100% |  |  |  |  |  |  |  | 16h | 16h | 16 | 16 |
| 341 | 2.4.3.3.1 | 操作员设置 | 1d? | 2008-08-14 14:00 A | 2008-08-15 14:00 A | 339 | 100% |  |  |  |  |  |  | 郭莉莉 | 8h | 8h | 8 | 8 |
| 342 | 2.4.3.3.2 | 操作员站点设置 | 1d? | 2008-08-15 14:00 A | 2008-08-18 14:00 A | 341 | 100% |  |  |  |  |  |  | 郭莉莉 | 8h | 8h | 8 | 8 |
| 343 | 2.4.3.4 | **操作员卡管理** | 2.5d? | 2008-08-18 14:00 A | 2008-08-20 18:00 A |  | 100% |  |  |  |  |  |  |  | 20h | 20h | 20 | 20 |
| 344 | 2.4.3.4.1 | 操作员卡发行 | 1d? | 2008-08-18 14:00 A | 2008-08-19 14:00 A | 342 | 100% |  |  |  |  |  |  | 郭莉莉 | 8h | 8h | 8 | 8 |
| 345 | 2.4.3.4.2 | 操作员卡注销 | 1d? | 2008-08-19 14:00 A | 2008-08-20 14:00 A | 344 | 100% |  |  |  |  |  |  | 郭莉莉 | 8h | 8h | 8 | 8 |
| 346 | 2.4.3.4.3 | 操作员卡挂失解挂 | 0.5d? | 2008-08-20 14:00 A | 2008-08-20 18:00 A | 345 | 100% |  |  |  |  |  |  | 郭莉莉 | 4h | 4h | 4 | 4 |
| 347 | 2.4.3.5 | **客户信息管理** | 2d? | 2008-08-21 09:00 A | 2008-08-22 18:00 A |  | 100% |  |  |  |  |  |  |  | 16h | 16h | 16 | 16 |
| 348 | 2.4.3.5.1 | 客户信息导入 | 1d? | 2008-08-21 09:00 A | 2008-08-21 18:00 A | 346 | 100% |  |  |  |  |  |  | 郭莉莉 | 8h | 8h | 8 | 8 |
| 349 | 2.4.3.5.2 | 客户信息设置 | 1d? | 2008-08-22 09:00 A | 2008-08-22 18:00 A | 348 | 100% |  |  |  |  |  |  | 郭莉莉 | 8h | 8h | 8 | 8 |

Notes:
- 325: 按照项目定义软件过程，制定软件测试计划和测试用例／规程，执行单元，集成和系统／验收测试

| ID | WBS | Task | Duration | Start | Finish | Predecessors | Total slack | Free slack | Constraint | Resources | Work | Cost |
| --- | --- | --- | --- | --- | --- | --- | --- | --- | --- | --- | --- | --- |
| 350 | 2.4.3.6 | **卡务管理** | 7d? | 2008-08-05 09:00 | 2008-08-13 18:00 |  | 43.12d | 0d |  |  | 56h | 56 |
| 351 | 2.4.3.6.1 | 一卡通开户 | 1d? | 2008-08-05 09:00 | 2008-08-05 18:00 |  | 43.12d | 0d | start no earlier than 2008-08-05 09:00 | 王家欢 | 8h | 8 |
| 352 | 2.4.3.6.2 | 一卡通开户冲正 | 1d? | 2008-08-06 09:00 | 2008-08-06 18:00 | 351 | 43.12d | 0d |  | 王家欢 | 8h | 8 |
| 353 | 2.4.3.6.3 | 坏卡登记 | 1d? | 2008-08-07 09:00 | 2008-08-07 18:00 | 352 | 43.12d | 0d |  | 王家欢 | 8h | 8 |
| 354 | 2.4.3.6.4 | 一卡通补办 | 1d? | 2008-08-08 09:00 | 2008-08-08 18:00 | 353 | 43.12d | 0d |  | 王家欢 | 8h | 8 |
| 355 | 2.4.3.6.5 | 一卡通补办冲正 | 1d? | 2008-08-11 09:00 | 2008-08-11 18:00 | 354 | 43.12d | 0d |  | 王家欢 | 8h | 8 |
| 356 | 2.4.3.6.6 | 一卡通销户 | 0.5d? | 2008-08-12 09:00 | 2008-08-12 14:00 | 355 | 43.12d | 0d |  | 王家欢 | 4h | 4 |
| 357 | 2.4.3.6.7 | 一卡通回收 | 0.5d? | 2008-08-12 14:00 | 2008-08-12 18:00 | 356 | 43.12d | 0d |  | 王家欢 | 4h | 4 |
| 358 | 2.4.3.6.8 | 一卡通挂失解挂 | 0.5d? | 2008-08-13 09:00 | 2008-08-13 14:00 | 357 | 43.12d | 0d |  | 王家欢 | 4h | 4 |
| 359 | 2.4.3.6.9 | 一卡通冻结解冻 | 0.5d? | 2008-08-13 14:00 | 2008-08-13 18:00 | 358 | 43.12d |  |  | 王家欢 | 4h | 4 |
| 360 | 2.4.3.7 | **商户管理** | 4d? | 2008-08-14 09:00 | 2008-08-19 18:00 | 350 | 43.12d | 0d |  |  | 32h | 32 |
| 361 | 2.4.3.7.1 | 商户开户 | 1d? | 2008-08-14 09:00 | 2008-08-14 18:00 |  | 43.12d | 0d |  | 王家欢 | 8h | 8 |
| 362 | 2.4.3.7.2 | 商户信息修改 | 0.5d? | 2008-08-15 09:00 | 2008-08-15 14:00 | 361 | 43.12d | 0d |  | 王家欢 | 4h | 4 |
| 363 | 2.4.3.7.3 | 商户销户 | 1d? | 2008-08-15 14:00 | 2008-08-18 14:00 | 362 | 43.12d | 0d |  | 王家欢 | 8h | 8 |
| 364 | 2.4.3.7.4 | 商户存款 | 0.5d? | 2008-08-18 14:00 | 2008-08-18 18:00 | 363 | 43.12d | 0d |  | 王家欢 | 4h | 4 |
| 365 | 2.4.3.7.5 | 商户设备管理 | 1d? | 2008-08-19 09:00 | 2008-08-19 18:00 | 364 | 43.12d |  |  | 王家欢 | 8h | 8 |
| 366 | 2.4.3.8 | **交易管理** | 5d? | 2008-08-20 09:00 | 2008-08-26 18:00 | 360 | 43.12d | 0d |  |  | 40h | 40 |
| 367 | 2.4.3.8.1 | 食堂消费 | 1d? | 2008-08-20 09:00 | 2008-08-20 18:00 |  | 43.12d | 0d |  | 王家欢 | 8h | 8 |
| 368 | 2.4.3.8.2 | 食堂消费冲正 | 0.5d? | 2008-08-21 09:00 | 2008-08-21 14:00 | 367 | 43.12d | 0d |  | 王家欢 | 4h | 4 |
| 369 | 2.4.3.8.3 | 圈存转账 | 1d? | 2008-08-21 14:00 | 2008-08-22 14:00 | 368 | 43.12d | 0d |  | 王家欢 | 8h | 8 |
| 370 | 2.4.3.8.4 | 圈存补帐 | 0.5d? | 2008-08-22 14:00 | 2008-08-22 18:00 | 369 | 43.12d | 0d |  | 王家欢 | 4h | 4 |
| 371 | 2.4.3.8.5 | 水控转账 | 1d? | 2008-08-25 09:00 | 2008-08-25 18:00 | 370 | 43.12d | 0d |  | 王家欢 | 8h | 8 |
| 372 | 2.4.3.8.6 | 手机充值 | 0.5d? | 2008-08-26 09:00 | 2008-08-26 14:00 | 371 | 43.12d | 0d |  | 王家欢 | 4h | 4 |
| 373 | 2.4.3.8.7 | 手机充值冲正 | 0.5d? | 2008-08-26 14:00 | 2008-08-26 18:00 | 372 | 43.12d |  |  | 王家欢 | 4h | 4 |

| ID | WBS | Task | Duration | Start | Finish | Predecessors | Total slack | Free slack | Constraint | Resources | Work | Cost |
| --- | --- | --- | --- | --- | --- | --- | --- | --- | --- | --- | --- | --- |
| 374 | 2.4.3.9 | **电子钱包管理** | 2.88d? | 2008-08-27 09:00 | 2008-08-29 17:00 | 366 | 43.12d | 0d |  |  | 23h | 23 |
| 375 | 2.4.3.9.1 | 电子钱包开户 | 0.5d? | 2008-08-27 09:00 | 2008-08-27 14:00 |  | 43.12d | 0d |  | 王家欢 | 4h | 4 |
| 376 | 2.4.3.9.2 | 电子钱包销户 | 0.5d? | 2008-08-27 14:00 | 2008-08-27 18:00 | 375 | 43.12d | 0d |  | 王家欢 | 4h | 4 |
| 377 | 2.4.3.9.3 | 电子钱包信息修改 | 0.25d? | 2008-08-28 09:00 | 2008-08-28 11:00 | 376 | 43.12d | 0d |  | 王家欢 | 2h | 2 |
| 378 | 2.4.3.9.4 | 电子钱包密码修改 | 0.25d? | 2008-08-28 11:00 | 2008-08-28 14:00 | 377 | 43.12d | 0d |  | 王家欢 | 2h | 2 |
| 379 | 2.4.3.9.5 | 电子钱包密码重置 | 0.25d? | 2008-08-28 14:00 | 2008-08-28 16:00 | 378 | 43.12d | 0d |  | 王家欢 | 2h | 2 |
| 380 | 2.4.3.9.6 | 电子钱包充值 | 0.25d? | 2008-08-28 16:00 | 2008-08-28 18:00 | 379 | 43.12d | 0d |  | 王家欢 | 2h | 2 |
| 381 | 2.4.3.9.7 | 电子钱包取款（前台） | 0.25d? | 2008-08-29 09:00 | 2008-08-29 11:00 | 380 | 43.12d | 0d |  | 王家欢 | 2h | 2 |
| 382 | 2.4.3.9.8 | 校园卡到电子钱包转帐（前台、多媒体、圈存） | 0.25d? | 2008-08-29 11:00 | 2008-08-29 14:00 | 381 | 43.12d | 0d |  | 王家欢 | 2h | 2 |
| 383 | 2.4.3.9.9 | 银行卡到电子钱包转账（圈存机） | 0.25d? | 2008-08-29 14:00 | 2008-08-29 16:00 | 382 | 43.12d | 0d |  | 王家欢 | 2h | 2 |
| 384 | 2.4.3.9.10 | 帐户交易明细查询 | 0.12d? | 2008-08-29 16:00 | 2008-08-29 17:00 | 383 | 43.12d |  |  | 王家欢 | 1h | 1 |
| 385 | 2.4.3.10 | **多钱包功能** | 4d? | 2008-08-29 17:00 | 2008-09-04 17:00 | 374 | 43.12d |  |  |  | 32h | 32 |
| 386 | 2.4.3.10.1 | 钱包开通 | 1d? | 2008-08-29 17:00 | 2008-09-01 17:00 |  | 43.12d | 0d |  | 王家欢 | 8h | 8 |
| 387 | 2.4.3.10.2 | 钱包关闭 | 1d? | 2008-09-01 17:00 | 2008-09-02 17:00 | 386 | 43.12d | 0d |  | 王家欢 | 8h | 8 |
| 388 | 2.4.3.10.3 | 钱包转账 | 1d? | 2008-09-02 17:00 | 2008-09-03 17:00 | 387 | 43.12d | 0d |  | 王家欢 | 8h | 8 |
| 389 | 2.4.3.10.4 | 钱包充值 | 1d? | 2008-09-03 17:00 | 2008-09-04 17:00 | 388 | 43.12d |  |  | 王家欢 | 8h | 8 |
| 390 | 2.4.3.11 | **POS流水管理** | 7d? | 2008-09-22 09:00 | 2008-09-28 17:00 |  | 5.5d | 0d |  |  | 56h | 56 |
| 391 | 2.4.3.11.1 | POS流水上传 | 1d? | 2008-09-22 09:00 | 2008-09-22 18:00 |  | 5.5d | 0d | start no earlier than 2008-09-22 09:00 | 王家欢 | 8h | 8 |
| 392 | 2.4.3.11.2 | POS流水查询 | 0.5d? | 2008-09-23 09:00 | 2008-09-23 14:00 | 391 | 5.5d | 0d |  | 王家欢 | 4h | 4 |
| 393 | 2.4.3.11.3 | POS流水冲正 | 0.5d? | 2008-09-23 14:00 | 2008-09-23 18:00 | 392 | 5.5d | 0d |  | 王家欢 | 4h | 4 |
| 394 | 2.4.3.11.4 | POS流水文件导入 | 0.5d? | 2008-09-24 09:00 | 2008-09-24 14:00 | 393 | 5.5d | 0d |  | 王家欢 | 4h | 4 |
| 395 | 2.4.3.11.5 | POS流水手工录入 | 0.5d? | 2008-09-24 14:00 | 2008-09-24 18:00 | 394 | 5.5d | 0d |  | 王家欢 | 4h | 4 |
| 396 | 2.4.3.11.6 | POS流水录入修改 | 0.5d? | 2008-09-25 09:00 | 2008-09-25 14:00 | 395 | 5.5d | 0d |  | 王家欢 | 4h | 4 |
| 397 | 2.4.3.11.7 | POS流水录入删除 | 0.5d? | 2008-09-25 14:00 | 2008-09-25 18:00 | 396 | 5.5d | 0d |  | 王家欢 | 4h | 4 |
| 398 | 2.4.3.11.8 | POS流水录入审核 | 0.5d? | 2008-09-26 09:00 | 2008-09-26 14:00 | 397 | 5.5d | 0d |  | 王家欢 | 4h | 4 |
| 399 | 2.4.3.11.9 | 异常POS流水查询 | 0.5d? | 2008-09-26 14:00 | 2008-09-26 18:00 | 398 | 5.5d | 0d |  | 王家欢 | 4h | 4 |
| 400 | 2.4.3.11.10 | 异常POS流水修改 | 0.5d? | 2008-09-27 08:00 | 2008-09-27 12:00 | 399 | 5.5d | 0d |  | 王家欢 | 4h | 4 |
| 401 | 2.4.3.11.11 | 异常POS流水删除 | 0.5d? | 2008-09-27 13:00 | 2008-09-27 17:00 | 400 | 5.5d | 0d |  | 王家欢 | 4h | 4 |
| 402 | 2.4.3.11.12 | 异常POS流水处理 | 1d? | 2008-09-28 08:00 | 2008-09-28 17:00 | 401 | 5.5d |  |  | 王家欢 | 8h | 8 |

| ID | WBS | Task | Duration | Start | Finish | Predecessors | Total slack | Free slack | Resources | Work | Cost |
| --- | --- | --- | --- | --- | --- | --- | --- | --- | --- | --- | --- |
| 403 | 2.4.3.12 | **补助管理** | 6.5d? | 2008-09-29 09:00 | 2008-10-07 14:00 | 390, 402 | 5.5d |  |  | 44h | 44 |
| 404 | 2.4.3.12.1 | 补助导入 | 0.5d? | 2008-09-29 09:00 | 2008-09-29 14:00 |  | 5.5d | 0d | 王家欢 | 4h | 4 |
| 405 | 2.4.3.12.2 | 补助下发 | 0.5d? | 2008-09-29 14:00 | 2008-09-29 18:00 | 404 | 5.5d | 0d | 王家欢 | 4h | 4 |
| 406 | 2.4.3.12.3 | 补助领取 | 0.5d? | 2008-09-30 09:00 | 2008-09-30 14:00 | 405 | 5.5d | 0d | 王家欢 | 4h | 4 |
| 407 | 2.4.3.12.4 | 门禁管理 | 2d | 2008-09-30 14:00 | 2008-10-02 14:00 | 406 | 5.5d | 0d | 王家欢 | 16h | 16 |
| 408 | 2.4.3.12.5 | 统计报表 | 3d | 2008-10-02 14:00 | 2008-10-07 14:00 | 407 | 5.5d | 0d | 王家欢 [66.7%] | 16h | 16 |
| 409 | 2.4.4 | **综合查询系统迁移** | 5d | 2008-10-07 14:00 | 2008-10-14 14:00 | 408 | 5.5d |  |  | 40h | 40 |
| 410 | 2.4.4.1 | 系统管理 | 0.5d | 2008-10-07 14:00 | 2008-10-07 18:00 | 408 | 5.5d | 0d | 王家欢 | 4h | 4 |
| 411 | 2.4.4.2 | 新闻公告管理 | 0.5d | 2008-10-08 09:00 | 2008-10-08 14:00 | 410 | 5.5d | 0d | 王家欢 | 4h | 4 |
| 412 | 2.4.4.3 | 文档下载类管理 | 0.5d | 2008-10-08 14:00 | 2008-10-08 18:00 | 411 | 5.5d | 0d | 王家欢 | 4h | 4 |
| 413 | 2.4.4.4 | 规章制度管理 | 0.5d | 2008-10-09 09:00 | 2008-10-09 14:00 | 412 | 5.5d | 0d | 王家欢 | 4h | 4 |
| 414 | 2.4.4.5 | 操作指南管理 | 0.5d | 2008-10-09 14:00 | 2008-10-09 18:00 | 413 | 5.5d | 0d | 王家欢 | 4h | 4 |
| 415 | 2.4.4.6 | 自动设备分布图管理 | 0.5d | 2008-10-10 09:00 | 2008-10-10 14:00 | 414 | 5.5d | 0d | 王家欢 | 4h | 4 |
| 416 | 2.4.4.7 | FAQ管理 | 0.5d | 2008-10-10 14:00 | 2008-10-10 18:00 | 415 | 5.5d | 0d | 王家欢 | 4h | 4 |
| 417 | 2.4.4.8 | 领卡和失卡名单管理 | 0.5d | 2008-10-13 09:00 | 2008-10-13 14:00 | 416 | 5.5d | 0d | 王家欢 | 4h | 4 |
| 418 | 2.4.4.9 | 留言簿管理 | 0.5d | 2008-10-13 14:00 | 2008-10-13 18:00 | 417 | 5.5d | 0d | 王家欢 | 4h | 4 |
| 419 | 2.4.4.10 | 校园卡使用管理 | 0.5d | 2008-10-14 09:00 | 2008-10-14 14:00 | 418 | 5.5d | 0d | 王家欢 | 4h | 4 |
| 420 | 2.4.5 | **监控系统** | 3.5d | 2008-10-14 14:00 | 2008-10-17 18:00 | 419 | 5.5d | 0d |  | 28h | 28 |
| 421 | 2.4.5.1 | 设备列表显示 | 0.5d | 2008-10-14 14:00 | 2008-10-14 18:00 | 419 | 5.5d | 0d | 王家欢 | 4h | 4 |
| 422 | 2.4.5.2 | 监控实时事件提醒功能 | 0.5d | 2008-10-15 09:00 | 2008-10-15 14:00 | 421 | 5.5d | 0d | 王家欢 | 4h | 4 |
| 423 | 2.4.5.3 | 数据库 增加一个时间信息表 | 0.5d | 2008-10-15 14:00 | 2008-10-15 18:00 | 422 | 5.5d | 0d | 王家欢 | 4h | 4 |
| 424 | 2.4.5.4 | 单个设备的状态图 | 0.5d | 2008-10-16 09:00 | 2008-10-16 14:00 | 423 | 5.5d | 0d | 王家欢 | 4h | 4 |
| 425 | 2.4.5.5 | 设备状态字典配置 | 0.5d | 2008-10-16 14:00 | 2008-10-16 18:00 | 424 | 5.5d | 0d | 王家欢 | 4h | 4 |
| 426 | 2.4.5.6 | 数据库 增加一个数据字典表 | 0.5d | 2008-10-17 09:00 | 2008-10-17 14:00 | 425 | 5.5d | 0d | 王家欢 | 4h | 4 |
| 427 | 2.4.5.7 | 服务器状态 | 0.5d | 2008-10-17 14:00 | 2008-10-17 18:00 | 426 | 5.5d |  | 王家欢 | 4h | 4 |
| 428 | 2.4.6 | 系统集成测试 | 2.5d? | 2008-10-20 09:00 | 2008-10-22 14:00 | 420 | 5.5d | 0d | 王家欢 | 20h | 20 |

| ID | WBS | Task | Duration | Start | Finish | Predecessors | Baseline start | Baseline finish | Baseline duration | Total slack | Free slack | Resources | Work | Cost |
| --- | --- | --- | --- | --- | --- | --- | --- | --- | --- | --- | --- | --- | --- | --- |
| 429 | 2.4.7 | **文档测试** | 2d | 2008-10-22 14:00 | 2008-10-24 14:00 | 428 |  |  |  | 5.5d |  |  | 16h | 16 |
| 430 | 2.4.7.1 | 用户手册 | 1d | 2008-10-22 14:00 | 2008-10-23 14:00 | 428 | 2005-01-14 09:00 | 2005-01-14 18:00 | 1d? | 5.5d | 0d | 王家欢 | 8h | 8 |
| 431 | 2.4.7.2 | 安装维护手册 | 1d | 2008-10-23 14:00 | 2008-10-24 14:00 | 430 | 2005-01-14 09:00 | 2005-01-14 18:00 | 1d? | 5.5d |  | 王家欢 | 8h | 8 |
