# 代码审计计划

Schedule from MS Project, 2008-08-06 to 2008-08-29, costs in ￥.

## Calendars

- 标准: Mon-Fri 08:00-12:00, 13:00-17:00; Sat-Sun off.

## Resources

| Resource | Rate |
| --- | --- |
| 韩海东 | 1 |
| 培训讲师 | 1 |
| 苏晓容 | 1 |
| 闻剑 | 1 |
| 林钦 | 1 |
| 闻剑 | 1 |
| 罗建峰 |  |

## Schedule

| ID | WBS | Task | Duration | Start | Finish | Predecessors | Total slack | Free slack | Constraint | Resources | Work | Cost |
| --- | --- | --- | --- | --- | --- | --- | --- | --- | --- | --- | --- | --- |
| 1 | 1 | **计划** | 4d | 2008-08-06 | 2008-08-11 |  | 10d |  |  |  | 32h | 32 |
| 2 | 1.1 | 制定代码审计计划，确定此次审查重点 | 2d | 2008-08-06 | 2008-08-07 |  | 10d | 0d | start no earlier than 2008-08-06 | 闻剑 | 16h | 16 |
| 3 | 1.2 | 确定《代码审计计划》 | 2d | 2008-08-08 | 2008-08-11 | 2 | 10d | 0d |  | 闻剑 | 16h | 16 |
| 4 | 2 | **准备** | 4d | 2008-08-12 | 2008-08-15 |  | 10d |  |  |  | 40h | 40 |
| 5 | 2.1 | 确定培训时间、地点、讲师、参加人员 | 1d | 2008-08-12 | 2008-08-12 | 3 | 10d | 0d |  | 闻剑 | 8h | 8 |
| 6 | 2.2 | 确定编码规范和检查表 | 1d | 2008-08-13 | 2008-08-13 | 5 | 10d | 0d |  | 闻剑; 苏晓容 | 16h | 16 |
| 7 | 2.3 | 开展代码审计培训 | 1d | 2008-08-14 | 2008-08-14 | 6 | 10d | 0d |  | 苏晓容 | 8h | 8 |
| 8 | 2.4 | 收集培训记录材料-培训签到表 | 1d | 2008-08-15 | 2008-08-15 | 7 | 10d |  |  | 苏晓容 | 8h | 8 |
| 9 | 3 | **执行** | 5d | 2008-08-18 | 2008-08-22 |  | 0d |  |  |  | 112h | 80 |
| 10 | 3.1 | **一卡通后台账务处理模块C++模块代码审计** | 2d | 2008-08-18 | 2008-08-19 |  | 0d |  |  |  | 32h | 32 |
| 11 | 3.1.1 | 资深人员审查 | 2d | 2008-08-18 | 2008-08-19 |  | 0d |  | start no earlier than 2008-08-18 | 林钦 | 16h | 16 |
| 12 | 3.1.2 | 记录和分析缺陷 | 2d | 2008-08-18 | 2008-08-19 | 11SS | 0d |  |  | 林钦 | 16h | 16 |
| 13 | 3.2 | **一卡通监控系统模块java代码审计** | 2d | 2008-08-20 | 2008-08-21 |  | 6d |  |  |  | 32h |  |
| 14 | 3.2.1 | 资深人员审查 | 2d | 2008-08-20 | 2008-08-21 |  | 6d | 0d | start no earlier than 2008-08-20 | 罗建峰 | 16h |  |
| 15 | 3.2.2 | 记录和分析缺陷 | 2d | 2008-08-20 | 2008-08-21 | 14SS | 6d |  |  | 罗建峰 | 16h |  |
| 16 | 3.3 | 安排修复缺陷 | 4d | 2008-08-18 | 2008-08-21 | 12SS | 0d |  |  | 闻剑 | 32h | 32 |
| 17 | 3.4 | 记录代码审查结果，填写《代码审查分析报告》 | 2d | 2008-08-21 | 2008-08-22 | 16FS-1d | 0d |  |  | 闻剑 | 16h | 16 |
| 18 | 4 | **分析总结** | 3d | 2008-08-25 | 2008-08-27 |  | 0d |  |  |  | 32h | 32 |
| 19 | 4.1 | 完成《代码审查分析报告》 | 2d | 2008-08-25 | 2008-08-26 | 17 | 0d |  |  | 闻剑 | 16h | 16 |
| 20 | 4.2 | 确定今后改进措施 | 1d | 2008-08-27 | 2008-08-27 | 19 | 0d |  |  | 闻剑; 韩海东 | 16h | 16 |
| 21 | 5 | **改进** | 2d | 2008-08-28 | 2008-08-29 |  | 0d |  |  |  | 32h | 32 |
| 22 | 5.1 | 改进编码规范 | 2d | 2008-08-28 | 2008-08-29 | 20 | 0d |  |  | 苏晓容 | 16h | 16 |
| 23 | 5.2 | 改进模板 | 2d | 2008-08-28 | 2008-08-29 | 20 | 0d |  |  | 苏晓容 | 16h | 16 |

Notes:
- 2: 代码审计范围、审计负责人、进度安排、审计方式等
- 6: 不同项目有不同特点，可在公司编码规范的基础上细化或裁剪，建立适用于项目组具体运用的编码规范和检查表
- 7: 对代码审查人员进行培训：规范、检查表、审查方法和过程、记录工具； / 尽可能让所有编码人员都参与； / 充分了解代码走查的目的、过程、规范
- 11: �会议评审：集中，较正式；同时可起到对开发人员的培训作用 / 适用于：代码审查初期；重要的核心代码或公用代码 / �资深人员审查：可发现较深层次的问题；更多从设计的角度来考虑问题 / 适用于：与业务、应用相关的较关键代码；业务逻辑、复杂的代码 / �互查：覆盖面广；普遍增强开发人员水平 / 适用于：代码的格式、语法以及常用的函数、命令、控件、性能等使用要求 / �抽查：节约时间 / 适用于：编码水平普遍较高，缺陷越来越少
- 12: 审查过程中发现的缺陷应进行记录
- 14: �会议评审：集中，较正式；同时可起到对开发人员的培训作用 / 适用于：代码审查初期；重要的核心代码或公用代码 / �资深人员审查：可发现较深层次的问题；更多从设计的角度来考虑问题 / 适用于：与业务、应用相关的较关键代码；业务逻辑、复杂的代码 / �互查：覆盖面广；普遍增强开发人员水平 / 适用于：代码的格式、语法以及常用的函数、命令、控件、性能等使用要求 / �抽查：节约时间 / 适用于：编码水平普遍较高，缺陷越来越少
- 15: 审查过程中发现的缺陷应进行记录
- 16: 开发人员应及时响应缺陷
- 19: 通过缺陷统计和分析，体现编码人员的整体水平和编码过程中的主要问题； / 对于缺陷最多的问题类型，分析产生原因和改进措施； / 通过对代码审查过程的规模、时间和不同审查人员发现的缺陷数等数据的统计分析，评估代码审查效果； / 依据历次代码审查过程中缺陷数的变化情况，分析代码审查对开发的促进作用；
- 22: 根据审查结果，改进编码规范
