Schedule from MS Project, 2010-08-23 to 2010-11-15.

## Calendars

- 标准: Mon-Fri 08:00-12:00, 13:00-17:00; Sat-Sun off. Exceptions (off unless hours are given): 2010-08-23 to 2010-10-31 08:00-12:00, 13:00-17:00 (电机学院).

## Resources

| Resource |
| --- |
| 金仕达商务部 |
| 金仕达开发部 |
| 金仕达实施部 |
| 金仕达领导 |
| 理想公司 |
| 电机学院 |
| 施工队 |
| 金仕达采购部 |
| 设备厂家 |

## Schedule

| ID | WBS | Task | Duration | Start | Finish | Total slack | Resources | Work |
| --- | --- | --- | --- | --- | --- | --- | --- | --- |
| 1 | 1 | **上海电机学院手机一卡通项目-老校区** | 81d | 2010-08-23 | 2010-11-15 | 0d |  | 21992h |
| 2 | 1.1 | **1-项目管理（文档化）** | 68d | 2010-08-23 | 2010-10-29 | 1d | 金仕达开发部; 金仕达领导; 金仕达商务部; 金仕达实施部 | 12768h |
| 3 | 1.1.1 | **1.1-项目启动（文档化）** | 5d | 2010-08-23 | 2010-08-27 | 64d | 金仕达开发部; 金仕达领导; 金仕达商务部; 金仕达实施部 | 1440h |
| 4 | 1.1.1.1 | 项目初始（先启） | 5d | 2010-08-23 | 2010-08-27 | 64d | 金仕达开发部; 金仕达领导; 金仕达商务部; 金仕达实施部 | 160h |
| 5 | 1.1.1.2 | 项目范围确定 | 5d | 2010-08-23 | 2010-08-27 | 64d | 金仕达开发部; 金仕达领导; 金仕达商务部; 金仕达实施部 | 160h |
| 6 | 1.1.1.3 | 用户实施需求 | 5d | 2010-08-23 | 2010-08-27 | 64d | 金仕达开发部; 金仕达领导; 金仕达商务部; 金仕达实施部 | 160h |
| 7 | 1.1.1.4 | 二次开发需求分析与评估 | 5d | 2010-08-23 | 2010-08-27 | 64d | 金仕达开发部; 金仕达领导; 金仕达商务部; 金仕达实施部 | 160h |
| 8 | 1.1.1.5 | 实施工作陈述 | 5d | 2010-08-23 | 2010-08-27 | 64d | 金仕达开发部; 金仕达领导; 金仕达商务部; 金仕达实施部 | 160h |
| 9 | 1.1.1.6 | 项目目标确定 | 5d | 2010-08-23 | 2010-08-27 | 64d | 金仕达开发部; 金仕达领导; 金仕达商务部; 金仕达实施部 | 160h |
| 10 | 1.1.1.7 | 项目团队组建 | 5d | 2010-08-23 | 2010-08-27 | 64d | 金仕达开发部; 金仕达领导; 金仕达商务部; 金仕达实施部 | 160h |
| 11 | 1.1.1.8 | 项目立项 | 5d | 2010-08-23 | 2010-08-27 | 64d | 金仕达开发部; 金仕达领导; 金仕达商务部; 金仕达实施部 | 160h |
| 12 | 1.1.2 | **1.2项目计划（文档化）** | 5d | 2010-08-23 | 2010-08-27 | 64d | 金仕达开发部; 金仕达领导; 金仕达商务部; 金仕达实施部 | 2240h |
| 13 | 1.1.2.1 | 工作分解结构 | 5d | 2010-08-23 | 2010-08-27 | 64d | 金仕达开发部; 金仕达领导; 金仕达商务部; 金仕达实施部 | 160h |
| 14 | 1.1.2.2 | 评估、生命周期选择 | 5d | 2010-08-23 | 2010-08-27 | 64d | 金仕达开发部; 金仕达领导; 金仕达商务部; 金仕达实施部 | 160h |
| 15 | 1.1.2.3 | 项目评估 | 5d | 2010-08-23 | 2010-08-27 | 64d | 金仕达开发部; 金仕达领导; 金仕达商务部; 金仕达实施部 | 160h |
| 16 | 1.1.2.4 | **工作量估算（文档化）** | 5d | 2010-08-23 | 2010-08-27 | 64d | 金仕达开发部; 金仕达领导; 金仕达商务部; 金仕达实施部 | 800h |
| 17 | 1.1.2.4.1 | 规模估算（若存在二次开发） | 5d | 2010-08-23 | 2010-08-27 | 64d | 金仕达开发部; 金仕达领导; 金仕达商务部; 金仕达实施部 | 160h |
| 18 | 1.1.2.4.2 | 进度估算 | 5d | 2010-08-23 | 2010-08-27 | 64d | 金仕达开发部; 金仕达领导; 金仕达商务部; 金仕达实施部 | 160h |
| 19 | 1.1.2.4.3 | 资源估算 | 5d | 2010-08-23 | 2010-08-27 | 64d | 金仕达开发部; 金仕达领导; 金仕达商务部; 金仕达实施部 | 160h |
| 20 | 1.1.2.4.4 | 风险收集与分析 | 5d | 2010-08-23 | 2010-08-27 | 64d | 金仕达开发部; 金仕达领导; 金仕达商务部; 金仕达实施部 | 160h |
| 21 | 1.1.2.5 | **项目计划书(文档化)** | 5d | 2010-08-23 | 2010-08-27 | 64d | 金仕达开发部; 金仕达领导; 金仕达商务部; 金仕达实施部 | 640h |
| 22 | 1.1.2.5.1 | 进度计划 | 5d | 2010-08-23 | 2010-08-27 | 64d | 金仕达开发部; 金仕达领导; 金仕达商务部; 金仕达实施部 | 160h |
| 23 | 1.1.2.5.2 | 人力资源计划 | 5d | 2010-08-23 | 2010-08-27 | 64d | 金仕达开发部; 金仕达领导; 金仕达商务部; 金仕达实施部 | 160h |
| 24 | 1.1.2.5.3 | 沟通计划 | 5d | 2010-08-23 | 2010-08-27 | 64d | 金仕达开发部; 金仕达领导; 金仕达商务部; 金仕达实施部 | 160h |
| 25 | 1.1.2.6 | 项目计划评审 | 5d | 2010-08-23 | 2010-08-27 | 64d | 金仕达开发部; 金仕达领导; 金仕达商务部; 金仕达实施部 | 160h |

| ID | WBS | Task | Duration | Start | Finish | Predecessors | Total slack | Free slack | Constraint | Resources | Work |
| --- | --- | --- | --- | --- | --- | --- | --- | --- | --- | --- | --- |
| 26 | 1.1.3 | **1.3项目日常管理** | 68d | 2010-08-23 | 2010-10-29 |  | 1d |  |  | 金仕达开发部; 金仕达领导; 金仕达商务部; 金仕达实施部 | 6912h |
| 27 | 1.1.3.1 | **项目例会-每周周一上午** | 64d | 2010-08-23 | 2010-10-25 |  | 5d |  |  | 金仕达开发部; 金仕达领导; 金仕达商务部; 金仕达实施部 | 2368h |
| 28 | 1.1.3.1.1 | 项目例会 1 | 1d | 2010-08-23 | 2010-08-23 |  | 68d |  | start no earlier than 2010-08-23 | 金仕达开发部; 金仕达领导; 金仕达商务部; 金仕达实施部 | 32h |
| 29 | 1.1.3.1.2 | 项目例会 2 | 1d | 2010-08-30 | 2010-08-30 |  | 61d |  | start no earlier than 2010-08-30 | 金仕达开发部; 金仕达领导; 金仕达商务部; 金仕达实施部 | 32h |
| 30 | 1.1.3.1.3 | 项目例会 3 | 1d | 2010-09-06 | 2010-09-06 |  | 54d |  | start no earlier than 2010-09-06 | 金仕达开发部; 金仕达领导; 金仕达商务部; 金仕达实施部 | 32h |
| 31 | 1.1.3.1.4 | 项目例会 4 | 1d | 2010-09-13 | 2010-09-13 |  | 47d |  | start no earlier than 2010-09-13 | 金仕达开发部; 金仕达领导; 金仕达商务部; 金仕达实施部 | 32h |
| 32 | 1.1.3.1.5 | 项目例会 5 | 1d | 2010-09-20 | 2010-09-20 |  | 40d |  | start no earlier than 2010-09-20 | 金仕达开发部; 金仕达领导; 金仕达商务部; 金仕达实施部 | 32h |
| 33 | 1.1.3.1.6 | 项目例会 6 | 1d | 2010-09-27 | 2010-09-27 |  | 33d |  | start no earlier than 2010-09-27 | 金仕达开发部; 金仕达领导; 金仕达商务部; 金仕达实施部 | 32h |
| 34 | 1.1.3.1.7 | 项目例会 7 | 1d | 2010-10-04 | 2010-10-04 |  | 26d |  | start no earlier than 2010-10-04 | 金仕达开发部; 金仕达领导; 金仕达商务部; 金仕达实施部 | 32h |
| 35 | 1.1.3.1.8 | 项目例会 8 | 1d | 2010-10-11 | 2010-10-11 |  | 19d |  | start no earlier than 2010-10-11 | 金仕达开发部; 金仕达领导; 金仕达商务部; 金仕达实施部 | 32h |
| 36 | 1.1.3.1.9 | 项目例会 9 | 1d | 2010-10-18 | 2010-10-18 |  | 12d |  | start no earlier than 2010-10-18 | 金仕达开发部; 金仕达领导; 金仕达商务部; 金仕达实施部 | 32h |
| 37 | 1.1.3.1.10 | 项目例会 10 | 1d | 2010-10-25 | 2010-10-25 |  | 5d |  | start no earlier than 2010-10-25 | 金仕达开发部; 金仕达领导; 金仕达商务部; 金仕达实施部 | 32h |
| 38 | 1.1.3.2 | **项目周报-每周周五下午** | 64d | 2010-08-27 | 2010-10-29 |  | 1d |  |  | 金仕达开发部; 金仕达领导; 金仕达商务部; 金仕达实施部 | 2368h |
| 39 | 1.1.3.2.1 | 项目周报 1 | 1d | 2010-08-27 | 2010-08-27 |  | 64d |  | start no earlier than 2010-08-27 | 金仕达开发部; 金仕达领导; 金仕达商务部; 金仕达实施部 | 32h |
| 40 | 1.1.3.2.2 | 项目周报 2 | 1d | 2010-09-03 | 2010-09-03 |  | 57d |  | start no earlier than 2010-09-03 | 金仕达开发部; 金仕达领导; 金仕达商务部; 金仕达实施部 | 32h |
| 41 | 1.1.3.2.3 | 项目周报 3 | 1d | 2010-09-10 | 2010-09-10 |  | 50d |  | start no earlier than 2010-09-10 | 金仕达开发部; 金仕达领导; 金仕达商务部; 金仕达实施部 | 32h |
| 42 | 1.1.3.2.4 | 项目周报 4 | 1d | 2010-09-17 | 2010-09-17 |  | 43d |  | start no earlier than 2010-09-17 | 金仕达开发部; 金仕达领导; 金仕达商务部; 金仕达实施部 | 32h |
| 43 | 1.1.3.2.5 | 项目周报 5 | 1d | 2010-09-24 | 2010-09-24 |  | 36d |  | start no earlier than 2010-09-24 | 金仕达开发部; 金仕达领导; 金仕达商务部; 金仕达实施部 | 32h |
| 44 | 1.1.3.2.6 | 项目周报 6 | 1d | 2010-10-01 | 2010-10-01 |  | 29d |  | start no earlier than 2010-10-01 | 金仕达开发部; 金仕达领导; 金仕达商务部; 金仕达实施部 | 32h |
| 45 | 1.1.3.2.7 | 项目周报 7 | 1d | 2010-10-08 | 2010-10-08 |  | 22d |  | start no earlier than 2010-10-08 | 金仕达开发部; 金仕达领导; 金仕达商务部; 金仕达实施部 | 32h |
| 46 | 1.1.3.2.8 | 项目周报 8 | 1d | 2010-10-15 | 2010-10-15 |  | 15d |  | start no earlier than 2010-10-15 | 金仕达开发部; 金仕达领导; 金仕达商务部; 金仕达实施部 | 32h |
| 47 | 1.1.3.2.9 | 项目周报 9 | 1d | 2010-10-22 | 2010-10-22 |  | 8d |  | start no earlier than 2010-10-22 | 金仕达开发部; 金仕达领导; 金仕达商务部; 金仕达实施部 | 32h |
| 48 | 1.1.3.2.10 | 项目周报 10 | 1d | 2010-10-29 | 2010-10-29 |  | 1d |  | start no earlier than 2010-10-29 | 金仕达开发部; 金仕达领导; 金仕达商务部; 金仕达实施部 | 32h |
| 49 | 1.2 | **2-准备阶段** | 30d | 2010-08-23 | 2010-09-21 |  | 51d |  |  |  | 1832h |
| 50 | 1.2.1 | **手机卡片的选型、测试** | 21.5d | 2010-08-23 | 2010-09-13 |  | 59.5d |  |  |  | 200h |
| 51 | 1.2.1.1 | 手机卡选型 | 3.5d | 2010-08-23 | 2010-08-26 |  | 59.5d | 0d |  | 电机学院; 理想公司 | 56h |
| 52 | 1.2.1.2 | 手机卡、读卡头的测试 | 3d | 2010-08-26 | 2010-08-29 | 51 | 59.5d | 0d |  | 金仕达开发部 | 24h |
| 53 | 1.2.1.3 | 手机卡采购 | 15d | 2010-08-29 | 2010-09-13 | 52 | 59.5d |  |  | 金仕达采购部 | 120h |

| ID | WBS | Task | Duration | Start | Finish | Predecessors | Total slack | Free slack | Constraint | Resources | Work |
| --- | --- | --- | --- | --- | --- | --- | --- | --- | --- | --- | --- |
| 54 | 1.2.2 | **CPU白卡的选型、测试** | 25d | 2010-08-23 | 2010-09-16 |  | 56d |  |  |  | 256h |
| 55 | 1.2.2.1 | cpu卡的选型 | 7d | 2010-08-23 | 2010-08-29 |  | 56d | 0d |  | 电机学院; 理想公司 | 112h |
| 56 | 1.2.2.2 | cpu卡、读卡头的测试 | 3d | 2010-08-30 | 2010-09-01 | 55 | 56d | 0d |  | 金仕达开发部 | 24h |
| 57 | 1.2.2.3 | cpu卡采购 | 15d | 2010-09-02 | 2010-09-16 | 56 | 56d |  |  | 金仕达采购部 | 120h |
| 58 | 1.2.3 | **收费机的选型、装配、到货** | 27d | 2010-08-23 | 2010-09-18 |  | 54d |  |  |  | 272h |
| 59 | 1.2.3.1 | 收费机的选型（文档化） | 7d | 2010-08-23 | 2010-08-29 |  | 54d | 0d |  | 电机学院; 理想公司 | 112h |
| 60 | 1.2.3.2 | 收费机的装配 | 10d | 2010-08-30 | 2010-09-08 | 59 | 54d | 0d |  | 设备厂家 | 80h |
| 61 | 1.2.3.3 | 收费机的到货 | 10d | 2010-09-09 | 2010-09-18 | 60 | 54d |  | start no earlier than 2010-09-01 | 设备厂家 | 80h |
| 62 | 1.2.4 | **考勤机的选型、装配、到货** | 27d | 2010-08-23 | 2010-09-18 |  | 54d |  |  |  | 272h |
| 63 | 1.2.4.1 | 考勤机的选型（文档化） | 7d | 2010-08-23 | 2010-08-29 |  | 54d | 0d |  | 电机学院; 理想公司 | 112h |
| 64 | 1.2.4.2 | 考勤机的装配 | 10d | 2010-08-30 | 2010-09-08 | 63 | 54d | 0d |  | 设备厂家 | 80h |
| 65 | 1.2.4.3 | 考勤机的到货 | 10d | 2010-09-09 | 2010-09-18 | 64 | 54d |  |  | 设备厂家 | 80h |
| 66 | 1.2.5 | **门禁机的选型、装配、到货** | 27d | 2010-08-23 | 2010-09-18 |  | 54d |  |  |  | 272h |
| 67 | 1.2.5.1 | 门禁机的选型（文档化） | 7d | 2010-08-23 | 2010-08-29 |  | 54d | 0d |  | 电机学院; 理想公司 | 112h |
| 68 | 1.2.5.2 | 门禁机的装配 | 10d | 2010-08-30 | 2010-09-08 | 67 | 54d | 0d |  | 设备厂家 | 80h |
| 69 | 1.2.5.3 | 门禁机的到货 | 10d | 2010-09-09 | 2010-09-18 | 68 | 54d |  |  | 设备厂家 | 80h |
| 70 | 1.2.6 | **浴室计时POS机的选型、装配、到货** | 30d | 2010-08-23 | 2010-09-21 |  | 51d |  |  |  | 320h |
| 71 | 1.2.6.1 | 计时POS机的选型（文档化） | 10d | 2010-08-23 | 2010-09-01 |  | 51d | 0d |  | 电机学院; 理想公司 | 160h |
| 72 | 1.2.6.2 | 计时POS机的装配 | 10d | 2010-09-02 | 2010-09-11 | 71 | 51d | 0d |  | 设备厂家 | 80h |
| 73 | 1.2.6.3 | 计时POS机的到货 | 10d | 2010-09-12 | 2010-09-21 | 72 | 51d |  |  | 设备厂家 | 80h |
| 74 | 1.2.7 | 后台软件的设计 | 10d | 2010-08-23 | 2010-09-01 |  | 71d |  |  | 金仕达开发部 | 80h |
| 75 | 1.2.8 | 前台软件的设计 | 10d | 2010-08-23 | 2010-09-01 |  | 71d |  |  | 金仕达开发部 | 80h |
| 76 | 1.2.9 | 其他软件的设计 | 10d | 2010-08-23 | 2010-09-01 |  | 71d |  |  | 金仕达开发部 | 80h |
| 77 | 1.3 | **3-弱电工程** | 31d | 2010-08-23 | 2010-09-22 |  | 50d |  |  |  | 3392h |
| 78 | 1.3.1 | **实施准备（文档化）** | 5d | 2010-08-23 | 2010-08-27 |  | 76d |  |  |  | 120h |
| 79 | 1.3.1.1 | 现场勘查点位表 | 5d | 2010-08-23 | 2010-08-27 |  | 64d |  |  | 施工队 | 40h |
| 80 | 1.3.1.2 | 网络布线图 | 5d | 2010-08-23 | 2010-08-27 |  | 64d |  |  | 施工队 | 40h |
| 81 | 1.3.1.3 | 布线、安装技术要求 | 5d | 2010-08-23 | 2010-08-27 |  | 64d |  |  | 施工队 | 40h |

| ID | WBS | Task | Duration | Start | Finish | Total slack | Resources | Work |
| --- | --- | --- | --- | --- | --- | --- | --- | --- |
| 82 | 1.3.2 | **综合布线工程（工作）** | 14d | 2010-08-23 | 2010-09-05 | 67d |  | 2464h |
| 83 | 1.3.2.1 | **华宁路校区** | 14d | 2010-08-23 | 2010-09-05 | 55d |  | 1008h |
| 84 | 1.3.2.1.1 | 食堂 | 14d | 2010-08-23 | 2010-09-05 | 55d | 施工队 | 112h |
| 85 | 1.3.2.1.2 | 浴室 | 14d | 2010-08-23 | 2010-09-05 | 55d | 施工队 | 112h |
| 86 | 1.3.2.1.3 | 爱心加油站 | 14d | 2010-08-23 | 2010-09-05 | 55d | 施工队 | 112h |
| 87 | 1.3.2.1.4 | 教育超市 | 14d | 2010-08-23 | 2010-09-05 | 55d | 施工队 | 112h |
| 88 | 1.3.2.1.5 | 医务室 | 14d | 2010-08-23 | 2010-09-05 | 55d | 施工队 | 112h |
| 89 | 1.3.2.1.6 | 信息办 | 14d | 2010-08-23 | 2010-09-05 | 55d | 施工队 | 112h |
| 90 | 1.3.2.1.7 | 宿舍区 | 14d | 2010-08-23 | 2010-09-05 | 55d | 施工队 | 112h |
| 91 | 1.3.2.1.8 | 考勤 | 14d | 2010-08-23 | 2010-09-05 | 55d | 施工队 | 112h |
| 92 | 1.3.2.1.9 | 大学生活动中心考勤 | 14d | 2010-08-23 | 2010-09-05 | 55d | 施工队 | 112h |
| 93 | 1.3.2.2 | **文井路校区** | 14d | 2010-08-23 | 2010-09-05 | 55d |  | 1120h |
| 94 | 1.3.2.2.1 | 第三食堂 | 14d | 2010-08-23 | 2010-09-05 | 55d | 施工队 | 112h |
| 95 | 1.3.2.2.2 | 浴室 | 14d | 2010-08-23 | 2010-09-05 | 55d | 施工队 | 112h |
| 96 | 1.3.2.2.3 | 超市 | 14d | 2010-08-23 | 2010-09-05 | 55d | 施工队 | 112h |
| 97 | 1.3.2.2.4 | 13-14#小超市 | 14d | 2010-08-23 | 2010-09-05 | 55d | 施工队 | 112h |
| 98 | 1.3.2.2.5 | 13-14#食堂 | 14d | 2010-08-23 | 2010-09-05 | 55d | 施工队 | 112h |
| 99 | 1.3.2.2.6 | 天天学友餐厅 | 14d | 2010-08-23 | 2010-09-05 | 55d | 施工队 | 112h |
| 100 | 1.3.2.2.7 | 卫生所 | 14d | 2010-08-23 | 2010-09-05 | 55d | 施工队 | 112h |
| 101 | 1.3.2.2.8 | 宿舍区 | 14d | 2010-08-23 | 2010-09-05 | 55d | 施工队 | 112h |
| 102 | 1.3.2.2.9 | TD-9楼 | 14d | 2010-08-23 | 2010-09-05 | 55d | 施工队 | 112h |
| 103 | 1.3.2.2.10 | 考勤 | 14d | 2010-08-23 | 2010-09-05 | 55d | 施工队 | 112h |
| 104 | 1.3.2.3 | **军工路校区** | 14d | 2010-08-23 | 2010-09-05 | 55d |  | 336h |
| 105 | 1.3.2.3.1 | 门禁 | 14d | 2010-08-23 | 2010-09-05 | 55d | 施工队 | 112h |
| 106 | 1.3.2.3.2 | 消费 | 14d | 2010-08-23 | 2010-09-05 | 55d | 施工队 | 112h |
| 107 | 1.3.2.3.3 | 考勤 | 14d | 2010-08-23 | 2010-09-05 | 55d | 施工队 | 112h |

| ID | WBS | Task | Duration | Start | Finish | Total slack | Constraint | Resources | Work |
| --- | --- | --- | --- | --- | --- | --- | --- | --- | --- |
| 108 | 1.3.3 | **终端设备安装（工作）** | 5d | 2010-09-18 | 2010-09-22 | 50d |  |  | 808h |
| 109 | 1.3.3.1 | **华宁路校区** | 5d | 2010-09-18 | 2010-09-22 | 50d |  |  | 360h |
| 110 | 1.3.3.1.1 | 食堂 | 5d | 2010-09-18 | 2010-09-22 | 50d | start no earlier than 2010-09-18 | 施工队 | 40h |
| 111 | 1.3.3.1.2 | 浴室 | 5d | 2010-09-18 | 2010-09-22 | 50d | start no earlier than 2010-09-18 | 施工队 | 40h |
| 112 | 1.3.3.1.3 | 爱心加油站 | 5d | 2010-09-18 | 2010-09-22 | 50d | start no earlier than 2010-09-18 | 施工队 | 40h |
| 113 | 1.3.3.1.4 | 教育超市 | 5d | 2010-09-18 | 2010-09-22 | 50d | start no earlier than 2010-09-18 | 施工队 | 40h |
| 114 | 1.3.3.1.5 | 医务室 | 5d | 2010-09-18 | 2010-09-22 | 50d | start no earlier than 2010-09-18 | 施工队 | 40h |
| 115 | 1.3.3.1.6 | 信息办 | 5d | 2010-09-18 | 2010-09-22 | 50d | start no earlier than 2010-09-18 | 施工队 | 40h |
| 116 | 1.3.3.1.7 | 宿舍区 | 5d | 2010-09-18 | 2010-09-22 | 50d | start no earlier than 2010-09-18 | 施工队 | 40h |
| 117 | 1.3.3.1.8 | 考勤 | 5d | 2010-09-18 | 2010-09-22 | 50d | start no earlier than 2010-09-18 | 施工队 | 40h |
| 118 | 1.3.3.1.9 | 大学生活动中心考勤 | 5d | 2010-09-18 | 2010-09-22 | 50d | start no earlier than 2010-09-18 | 施工队 | 40h |
| 119 | 1.3.3.2 | **文井路校区** | 5d | 2010-09-18 | 2010-09-22 | 50d |  |  | 400h |
| 120 | 1.3.3.2.1 | 第三食堂 | 5d | 2010-09-18 | 2010-09-22 | 50d | start no earlier than 2010-09-18 | 施工队 | 40h |
| 121 | 1.3.3.2.2 | 浴室 | 5d | 2010-09-18 | 2010-09-22 | 50d | start no earlier than 2010-09-18 | 施工队 | 40h |
| 122 | 1.3.3.2.3 | 超市 | 5d | 2010-09-18 | 2010-09-22 | 50d | start no earlier than 2010-09-18 | 施工队 | 40h |
| 123 | 1.3.3.2.4 | 13-14#小超市 | 5d | 2010-09-18 | 2010-09-22 | 50d | start no earlier than 2010-09-18 | 施工队 | 40h |
| 124 | 1.3.3.2.5 | 13-14#食堂 | 5d | 2010-09-18 | 2010-09-22 | 50d | start no earlier than 2010-09-18 | 施工队 | 40h |
| 125 | 1.3.3.2.6 | 天天学友餐厅 | 5d | 2010-09-18 | 2010-09-22 | 50d | start no earlier than 2010-09-18 | 施工队 | 40h |
| 126 | 1.3.3.2.7 | 卫生所 | 5d | 2010-09-18 | 2010-09-22 | 50d | start no earlier than 2010-09-18 | 施工队 | 40h |
| 127 | 1.3.3.2.8 | 宿舍区 | 5d | 2010-09-18 | 2010-09-22 | 50d | start no earlier than 2010-09-18 | 施工队 | 40h |
| 128 | 1.3.3.2.9 | TD-9楼 | 5d | 2010-09-18 | 2010-09-22 | 50d | start no earlier than 2010-09-18 | 施工队 | 40h |
| 129 | 1.3.3.2.10 | 考勤 | 5d | 2010-09-18 | 2010-09-22 | 50d | start no earlier than 2010-09-18 | 施工队 | 40h |
| 130 | 1.3.3.3 | **军工路校区** | 2d | 2010-09-20 | 2010-09-21 | 51d |  |  | 48h |
| 131 | 1.3.3.3.1 | 门禁 | 2d | 2010-09-20 | 2010-09-21 | 51d | start no earlier than 2010-09-20 | 施工队 | 16h |
| 132 | 1.3.3.3.2 | 消费 | 2d | 2010-09-20 | 2010-09-21 | 51d | start no earlier than 2010-09-20 | 施工队 | 16h |
| 133 | 1.3.3.3.3 | 考勤 | 2d | 2010-09-20 | 2010-09-21 | 51d | start no earlier than 2010-09-20 | 施工队 | 16h |

| ID | WBS | Task | Duration | Start | Finish | Total slack | Constraint | Resources | Work |
| --- | --- | --- | --- | --- | --- | --- | --- | --- | --- |
| 134 | 1.4 | **4-定制开发（工作）** | 20d | 2010-08-30 | 2010-09-18 | 54d |  |  | 1400h |
| 135 | 1.4.1 | 一卡通后台软件 | 20d | 2010-08-30 | 2010-09-18 | 54d | start no earlier than 2010-08-30 | 金仕达开发部 | 160h |
| 136 | 1.4.2 | 一卡通前置软件 | 20d | 2010-08-30 | 2010-09-18 | 54d | start no earlier than 2010-08-30 | 金仕达开发部 | 160h |
| 137 | 1.4.3 | 一卡通前台（卡户管理） | 20d | 2010-08-30 | 2010-09-18 | 54d | start no earlier than 2010-08-30 | 金仕达开发部 | 160h |
| 138 | 1.4.4 | 一卡通圈存软件 | 20d | 2010-08-30 | 2010-09-18 | 54d | start no earlier than 2010-08-30 | 金仕达开发部 | 160h |
| 139 | 1.4.5 | 一卡通多媒体软件 | 20d | 2010-08-30 | 2010-09-18 | 54d | start no earlier than 2010-08-30 | 金仕达开发部 | 160h |
| 140 | 1.4.6 | **一卡通终端机具程序** | 15d | 2010-08-30 | 2010-09-13 | 59d |  |  | 600h |
| 141 | 1.4.6.1 | 收费机程序 | 15d | 2010-08-30 | 2010-09-13 | 59d | start no earlier than 2010-08-30 | 设备厂家 | 120h |
| 142 | 1.4.6.2 | 考勤机程序 | 15d | 2010-08-30 | 2010-09-13 | 59d | start no earlier than 2010-08-30 | 设备厂家 | 120h |
| 143 | 1.4.6.3 | 门禁机程序 | 15d | 2010-08-30 | 2010-09-13 | 59d | start no earlier than 2010-08-30 | 设备厂家 | 120h |
| 144 | 1.4.6.4 | 计时收费POS程序 | 15d | 2010-08-30 | 2010-09-13 | 59d | start no earlier than 2010-08-30 | 设备厂家 | 120h |
| 145 | 1.4.6.5 | 计时pos方案的确定 | 15d | 2010-08-30 | 2010-09-13 | 59d | start no earlier than 2010-08-30 | 设备厂家 | 120h |
| 146 | 1.5 | **5-软件实施-（工作）** | 23d | 2010-08-30 | 2010-09-21 | 51d |  |  | 160h |
| 147 | 1.5.1 | **安装数据服务器** | 22d | 2010-08-30 | 2010-09-20 | 52d |  |  | 24h |
| 148 | 1.5.1.1 | 安装数据服务器操作系统 | 1d | 2010-08-30 | 2010-08-30 | 73d | start no earlier than 2010-08-30 | 金仕达实施部 | 8h |
| 149 | 1.5.1.2 | 安装数据服务器数据库 | 1d | 2010-08-30 | 2010-08-30 | 73d | start no earlier than 2010-08-30 | 金仕达实施部 | 8h |
| 150 | 1.5.1.3 | 安装磁盘阵列系统 | 1d | 2010-09-20 | 2010-09-20 | 52d | start no earlier than 2010-09-20 | 金仕达实施部 | 8h |
| 151 | 1.5.2 | **安装应用服务器** | 21d | 2010-08-31 | 2010-09-20 | 52d |  |  | 16h |
| 152 | 1.5.2.1 | 安装应用服务器操作系统 | 1d | 2010-08-31 | 2010-08-31 | 72d | start no earlier than 2010-08-31 | 金仕达实施部 | 8h |
| 153 | 1.5.2.2 | 安装应用服务器后台软件 | 1d | 2010-09-20 | 2010-09-20 | 52d | start no earlier than 2010-09-20 | 金仕达实施部 | 8h |
| 154 | 1.5.3 | **安装前置服务器** | 22d | 2010-08-31 | 2010-09-21 | 51d |  |  | 72h |
| 155 | 1.5.3.1 | 安装前置服务器操作系统 | 1d | 2010-08-31 | 2010-08-31 | 72d | start no earlier than 2010-08-31 | 金仕达实施部 | 8h |
| 156 | 1.5.3.2 | **安装前置服务器前置软件** | 2d | 2010-09-20 | 2010-09-21 | 51d |  |  | 64h |
| 157 | 1.5.3.2.1 | 安装终端前置软件 | 2d | 2010-09-20 | 2010-09-21 | 51d | start no earlier than 2010-09-20 | 金仕达实施部 | 16h |
| 158 | 1.5.3.2.2 | 安装圈存前置软件 | 2d | 2010-09-20 | 2010-09-21 | 51d | start no earlier than 2010-09-20 | 金仕达实施部 | 16h |
| 159 | 1.5.3.2.3 | 安装WEB前置软件 | 2d | 2010-09-20 | 2010-09-21 | 51d | start no earlier than 2010-09-20 | 金仕达实施部 | 16h |
| 160 | 1.5.3.2.4 | 安装电话语音前置软件 | 2d | 2010-09-20 | 2010-09-21 | 51d | start no earlier than 2010-09-20 | 金仕达实施部 | 16h |
| 161 | 1.5.4 | 安装一卡通前台软件 | 2d | 2010-09-20 | 2010-09-21 | 51d | start no earlier than 2010-09-20 | 金仕达实施部 | 16h |
| 162 | 1.5.5 | 安装多媒体机软件 | 2d | 2010-09-20 | 2010-09-21 | 51d | start no earlier than 2010-09-20 | 金仕达实施部 | 16h |
| 163 | 1.5.6 | 安装圈存机软件 | 2d | 2010-09-20 | 2010-09-21 | 51d | start no earlier than 2010-09-20 | 金仕达实施部 | 16h |

| ID | WBS | Task | Duration | Start | Finish | Total slack | Constraint | Resources | Work |
| --- | --- | --- | --- | --- | --- | --- | --- | --- | --- |
| 164 | 1.6 | **6-系统集成（工作）** | 52d | 2010-09-21 | 2010-11-15 | 0d |  |  | 2440h |
| 165 | 1.6.1 | 导入基础信息 | 5d | 2010-09-21 | 2010-09-25 | 47d | start no earlier than 2010-09-21 | 金仕达实施部 | 40h |
| 166 | 1.6.2 | 设置基础信息 | 5d | 2010-09-21 | 2010-09-25 | 47d | start no earlier than 2010-09-21 | 金仕达实施部 | 40h |
| 167 | 1.6.3 | 发行授权卡 | 5d | 2010-09-21 | 2010-09-25 | 47d | start no earlier than 2010-09-21 | 金仕达实施部 | 40h |
| 168 | 1.6.4 | 发行测试卡 | 5d | 2010-09-21 | 2010-09-25 | 47d | start no earlier than 2010-09-21 | 金仕达实施部 | 40h |
| 169 | 1.6.5 | 设备联网调试 | 5d | 2010-09-22 | 2010-09-26 | 46d | start no earlier than 2010-09-22 | 金仕达实施部 | 40h |
| 170 | 1.6.6 | 设备刷卡测试 | 5d | 2010-09-22 | 2010-09-26 | 46d | start no earlier than 2010-09-22 | 金仕达实施部 | 40h |
| 171 | 1.6.7 | 设备采集流水 | 5d | 2010-09-22 | 2010-09-26 | 46d | start no earlier than 2010-09-22 | 金仕达实施部 | 40h |
| 172 | 1.6.8 | 系统结算测试 | 5d | 2010-09-22 | 2010-09-26 | 46d | start no earlier than 2010-09-22 | 金仕达实施部 | 40h |
| 173 | 1.6.9 | 系统报表测试 | 5d | 2010-09-22 | 2010-09-26 | 46d | start no earlier than 2010-09-22 | 金仕达实施部 | 40h |
| 174 | 1.6.10 | **老生卡片签约换卡** | 30d | 2010-09-25 | 2010-10-24 | 18d |  |  | 720h |
| 175 | 1.6.10.1 | 老生签约 | 30d | 2010-09-25 | 2010-10-24 | 18d | start no earlier than 2010-09-25 | 电机学院 | 240h |
| 176 | 1.6.10.2 | 老生换卡 | 30d | 2010-09-25 | 2010-10-24 | 18d | start no earlier than 2010-09-25 | 电机学院 | 240h |
| 177 | 1.6.10.3 | 老生余额转移-发放补助 | 30d | 2010-09-25 | 2010-10-24 | 18d | start no earlier than 2010-09-25 | 电机学院 | 240h |
| 178 | 1.6.11 | **新生签约发放新卡** | 33d | 2010-09-28 | 2010-10-30 | 12d |  |  | 400h |
| 179 | 1.6.11.1 | 新生签约 | 30d | 2010-10-01 | 2010-10-30 | 12d | start no earlier than 2010-10-01 | 电机学院 | 240h |
| 180 | 1.6.11.2 | 新生卡片制作 | 10d | 2010-09-28 | 2010-10-07 | 35d | start no earlier than 2010-09-28 | 电机学院 | 80h |
| 181 | 1.6.11.3 | 新生卡片发放 | 10d | 2010-10-01 | 2010-10-10 | 32d | start no earlier than 2010-10-01 | 电机学院 | 80h |
| 182 | 1.6.12 | 系统投产 | 30d | 2010-10-13 | 2010-11-15 | 0d | start no earlier than 2010-10-13 | 电机学院; 金仕达实施部; 理想公司; 施工队 | 960h |
