# 华锐学院校园通项目实施

Schedule from MS Project, 2012-08-07 to 2012-10-19, status date 2012-09-29, costs in ¥, A marks actual dates.
home

## Calendars

- 标准: Mon-Fri 08:00-12:00, 13:00-17:00; Sat-Sun off.

## Resources

| Resource | Rate |
| --- | --- |
| 彭海宇 | 1 |
| 郑州中凯工程师 |  |
| 傅江利 | 1 |
| 孔秀娟 | 1 |

## Schedule

| ID | WBS | Task | Type | Duration | Start | Finish | Predecessors | Complete | Remaining | Baseline start | Baseline finish | Baseline duration | Total slack | Free slack | Constraint | Resources | Work | Actual work | Cost | Actual cost |
| --- | --- | --- | --- | --- | --- | --- | --- | --- | --- | --- | --- | --- | --- | --- | --- | --- | --- | --- | --- | --- |
| 1 | S011 | **信阳华锐学院校园通系统实施** |  | 54d? | 2012-08-07 A | 2012-10-19 |  | 42% | 31.29d? | 2012-08-06 | 2012-09-04 | 21.5d? | 0d |  |  |  | 702.7h | 295.5h | 568.2 | 265 |
| 2 | S011.1 | **第一阶段实施计划** |  | 45d | 2012-08-07 A | 2012-10-08 |  | 59% | 18.34d | 2012-08-06 | 2012-08-14 | 6.5d? | 0d |  |  |  | 350.7h | 263.5h | 336.2 | 249 |
| 3 | S011.1.1 | **环境准备** |  | 2d | 2012-08-07 A | 2012-08-08 A |  | 100% |  | 2012-08-06 | 2012-08-06 | 1d |  |  |  |  | 1.5h | 1.5h |  |  |
| 4 | S011.1.1.1 | 老系统数据备份 |  | 1h | 2012-08-08 A | 2012-08-08 A |  | 100% |  | 2012-08-06 | 2012-08-06 | 4h |  |  | finish no earlier than 2012-08-08 | 郑州中凯工程师 | 0.17h | 0.17h |  |  |
| 5 | S011.1.1.2 | 校园通系统环境准备 |  | 4h | 2012-08-07 A | 2012-08-07 A | 4 | 100% |  | 2012-08-06 | 2012-08-06 | 4h |  |  | finish no earlier than 2012-08-07 | 郑州中凯工程师 | 1.33h | 1.33h |  |  |
| 6 | S011.1.2 | 校园通平台安装 |  | 1d | 2012-08-07 A | 2012-08-07 A | 3 | 100% |  | 2012-08-07 | 2012-08-07 | 1d |  |  |  | 彭海宇 | 8h | 8h | 8 | 8 |
| 7 | S011.1.3 | 日常消费系统测试 |  | 4h | 2012-08-08 A | 2012-08-08 A | 6 | 100% |  | 2012-08-08 | 2012-08-08 | 4h |  |  |  | 郑州中凯工程师; 彭海宇 | 8h | 8h | 4 | 4 |
| 8 | S011.1.4 | 水控管理对接测试 |  | 1d | 2012-08-08 A | 2012-08-09 A | 7 | 100% |  | 2012-08-08 | 2012-08-09 | 1d? |  |  |  | 彭海宇; 郑州中凯工程师 | 16h | 16h | 8 | 8 |
| 9 | S011.1.5 | 前置服务系统部署 |  | 1d | 2012-08-09 A | 2012-08-10 A | 8 | 100% |  | 2012-08-09 | 2012-08-10 | 1d? |  |  |  | 彭海宇 | 8h | 8h | 8 | 8 |
| 10 | S011.1.6 | 拍照系统部署与培训 |  | 1h | 2012-08-10 A | 2012-08-10 A | 9 | 100% |  | 2012-08-10 | 2012-08-10 | 4h |  |  |  | 彭海宇; 郑州中凯工程师 | 2h | 2h | 1 | 1 |
| 11 | S011.1.7 | 自助服务系统部署 |  | 5d | 2012-08-10 A | 2012-08-23 A | 10 | 100% |  | 2012-08-13 | 2012-08-13 | 1d? |  |  | finish no earlier than 2012-08-23 | 彭海宇; 傅江利 [10%] | 40h | 40h | 40 | 40 |
| 12 | S011.1.8 | 图书馆系统对接 |  | 28h | 2012-09-03 A | 2012-09-06 A |  | 100% |  | 2012-08-08 | 2012-08-09 | 8h |  |  | start no earlier than 2012-08-28 | 傅江利 | 28h | 28h | 28 | 28 |
| 13 | S011.1.9 | 常工电控系统对接 |  | 5d | 2012-08-16 A | 2012-08-22 A |  | 100% |  | 2012-08-09 | 2012-08-13 | 2d |  |  | finish no earlier than 2012-08-22 | 傅江利 | 40h | 40h | 40 | 40 |
| 14 | S011.1.10 | 批量初始化卡工具的部署与测试 |  | 1d | 2012-08-25 A | 2012-08-27 A |  | 100% |  | 2012-08-13 | 2012-08-14 | 1d |  |  | start no earlier than 2012-08-27 | 傅江利 | 8h | 8h | 8 | 8 |
| 15 | S011.1.11 | 校园通系统测试与修改 | manual | 20d | 2012-08-20 A | 2012-09-14 |  | 79% | 4.17d |  |  |  |  |  |  | 彭海宇 [40%]; 傅江利 [20%] | 108h | 88h | 108 | 88 |
| 16 | S011.1.12 | 自助服务系统中的更新卡信息功能开发 | manual | 2d | 2012-09-18 A | 2012-09-19 A |  | 100% |  |  |  |  |  |  |  | 傅江利 | 16h | 16h | 16 | 16 |
| 17 | S011.1.13 | 校园通门户-自助业务办理模块的开发 | manual | 21d | 2012-09-10 | 2012-10-08 |  |  |  |  |  |  |  |  |  | 傅江利 [40%] | 67.2h |  | 67.2 |  |
| 18 | S011.2 | 第一阶段任务结束，系统培训、文档整理，移交文档 | milestone | 2d | 2012-08-20 A | 2012-09-17 A | 2 | 100% |  | 2012-08-14 | 2012-08-16 | 2d |  |  |  | 彭海宇; 郑州中凯工程师 | 32h | 32h | 16 | 16 |
| 19 | S011.3 | 个性化补助管理功能的开发 | manual | 10d | 2012-10-08 | 2012-10-19 |  |  |  |  |  |  |  |  |  | 孔秀娟 | 80h |  | 80 |  |
| 20 | S011.4 | **第二阶段实施计划** |  | 11d? | 2012-09-17 | 2012-10-02 | 18 |  |  | 2012-08-16 | 2012-08-31 | 11d? | 11.5d | 0d |  |  | 208h |  | 120 |  |
| 21 | S011.4.1 | 客户方环境准备结束 |  | 1d? | 2012-09-17 | 2012-09-18 |  |  |  | 2012-08-16 | 2012-08-17 | 1d? | 11.5d | 0d |  | 郑州中凯工程师 | 8h |  |  |  |
| 22 | S011.4.2 | 考勤管理系统部署 |  | 5d | 2012-09-18 | 2012-09-25 | 21 |  |  | 2012-08-17 | 2012-08-24 | 5d | 11.5d | 0d |  | 彭海宇; 郑州中凯工程师 | 80h |  | 40 |  |
| 23 | S011.4.3 | 门禁管理系统部署 |  | 5d | 2012-09-25 | 2012-10-02 | 22 |  |  | 2012-08-24 | 2012-08-31 | 5d | 11.5d |  |  | 彭海宇; 郑州中凯工程师 | 80h |  | 40 |  |
| 24 | S011.4.4 | H3C网络收费系统对接 |  | 5d | 2012-09-18 | 2012-09-25 | 21 |  |  | 2012-08-17 | 2012-08-24 | 5d | 16.5d |  |  | 孔秀娟 | 40h |  | 40 |  |
| 25 | S011.5 | 第二阶段任务结束，系统培训、文档整理，移交文档 | milestone | 2d | 2012-10-02 | 2012-10-04 | 20 |  |  | 2012-08-31 | 2012-09-04 | 2d | 11.5d |  |  | 彭海宇; 郑州中凯工程师 | 32h |  | 16 |  |
